Schedule from MS Project, 2011-09-26 to 2012-04-30, status date 2011-09-26, A marks actual dates.

## Calendars

- Standard: Mon-Sun 08:00-12:00, 13:00-17:00.

## Resources

| Resource |
| --- |
| Nhung |
| Nguyên |
| Tường |
| Tân |
| Quyết |
| Tùng |
| Lộc |
| Đặng |

## Schedule

| ID | WBS | Task | Type | Duration | Start | Finish | Predecessors | Complete | Remaining | Actual start | Actual finish | Baseline start | Baseline finish | Baseline duration | Baseline 1 start | Baseline 1 finish | Total slack | Free slack | Constraint | Resources | Work | Actual work |
| --- | --- | --- | --- | --- | --- | --- | --- | --- | --- | --- | --- | --- | --- | --- | --- | --- | --- | --- | --- | --- | --- | --- |
| 1 | 1 | **Human Resource Management** |  | 218d | 2011-09-26 | 2012-04-30 |  | 26% | 160.57d | 2011-09-27 |  | 2011-09-22 | 2012-04-30 | 222d? | 2011-09-26 | 2012-04-30 |  |  |  |  | 47318.6h | 11844h |
| 2 | 1.1 | Kick off meeting | milestone | 0d | 2011-09-27 A | 2011-09-27 |  | 99% | 0d |  |  |  |  |  | 2011-09-27 | 2011-09-27 | 1d |  | start no earlier than 2011-09-27 | Đặng; Lộc; Nguyên; Nhung; Quyết; Tân; Tùng; Tường |  |  |
| 3 | 1.2 | **Requirement Analysis** |  | 90d | 2011-10-01 | 2011-12-29 |  | 69% | 27.69d | 2011-10-04 |  | 2011-10-01 | 2011-11-20 | 51d? | 2011-10-01 | 2011-12-29 |  |  |  |  | 10317.6h | 6396h |
| 4 | 1.2.1 | Elicitate requirement |  | 86d | 2011-10-04 A | 2011-12-28 |  |  | 86d |  |  | 2011-10-01 | 2011-11-12 | 43d | 2011-10-01 | 2011-12-25 | 124d | 0d | start no earlier than 2011-10-01 | Quyết; Nhung; Nguyên [50%] | 1032h |  |
| 5 | 1.2.2 | Analysis requirement |  | 86d? | 2011-10-04 A | 2011-12-28 | 4SS |  | 86d? |  |  | 2011-11-20 | 2011-11-20 | 0d? | 2011-10-01 | 2011-12-25 | 124d |  | finish no earlier than 2011-12-25 | Tân [50%]; Quyết; Nguyên [50%]; Đặng [30%]; Lộc [30%]; Nhung; Tùng [30%]; Tường [30%] | 2889.6h |  |
| 6 | 1.2.3 | **Develop Concept of Operation** |  | 112d? | 2011-10-11 A | 2012-01-30 |  | 99% | 0d? |  |  | 2011-10-08 | 2011-10-22 | 15d | 2011-10-01 | 2011-11-30 | 0d |  |  |  | 4292.8h | 4292.8h |
| 7 | 1.2.3.1 | **Document ConsOpt( Draft version)** |  | 63d? | 2011-10-11 A | 2011-12-12 A |  | 100% |  |  |  |  |  |  | 2011-10-01 | 2011-10-05 |  |  |  |  | 1440.8h | 1440.8h |
| 8 | 1.2.3.1.1 | Introduction |  | 2d? | 2011-10-11 A | 2011-10-12 A |  | 100% |  |  |  |  |  |  | 2011-10-01 | 2011-10-01 |  |  |  | Lộc | 16h | 16h |
| 9 | 1.2.3.1.2 | Current system |  | 17d? | 2011-10-11 A | 2011-10-27 A |  | 100% |  |  |  |  |  |  | 2011-10-01 | 2011-10-01 |  |  |  | Đặng | 136h | 136h |
| 10 | 1.2.3.1.3 | Reason for improvement |  | 17d? | 2011-10-11 A | 2011-10-27 A |  | 100% |  |  |  |  |  |  | 2011-10-01 | 2011-10-01 |  |  |  | Đặng | 136h | 136h |
| 11 | 1.2.3.1.4 | System future |  | 63d? | 2011-10-11 A | 2011-12-12 A |  | 100% |  |  |  |  |  |  | 2011-10-01 | 2011-10-05 |  |  |  | Đặng [50%]; Nhung [80%]; Tùng [20%]; Tường [20%] | 856.8h | 856.8h |
| 12 | 1.2.3.1.5 | Effect |  | 17d? | 2011-10-11 A | 2011-10-27 A |  | 100% |  |  |  |  |  |  | 2011-10-01 | 2011-10-01 |  |  |  | Lộc | 136h | 136h |
| 13 | 1.2.3.1.6 | Analysis system future |  | 20d? | 2011-10-11 A | 2011-10-30 A |  | 100% |  |  |  |  |  |  | 2011-10-01 | 2011-10-01 |  |  |  | Quyết | 160h | 160h |
| 14 | 1.2.3.2 | Send Concept Operation for customer | milestone | 0d | 2011-11-10 A | 2011-11-10 |  | 99% | 0d |  |  |  |  |  | 2011-11-10 | 2011-11-10 | 50d |  | start no earlier than 2011-11-10 | Nhung |  |  |
| 15 | 1.2.3.3 | Review |  | 77d? | 2011-10-31 A | 2012-01-15 A | 13 | 100% |  |  |  |  |  |  | 2011-11-11 | 2011-11-20 |  |  | start no earlier than 2011-11-11 | Tường [10%]; Tùng [10%]; Tân [10%]; Quyết; Nhung; Nguyên [10%]; Lộc [10%] | 1540h | 1540h |
| 16 | 1.2.3.4 | Update ConsOpt |  | 82d? | 2011-10-31 A | 2012-01-30 A | 15 | 100% |  |  |  |  |  |  | 2011-11-21 | 2011-11-30 |  |  | start no earlier than 2011-11-21 | Quyết; Nhung | 1312h | 1312h |
| 17 | 1.2.4 | **Develop SRS** |  | 73d? | 2011-11-20 A | 2012-01-31 A |  | 100% |  |  |  | 2011-10-23 | 2011-11-20 | 29d | 2011-10-01 | 2011-10-04 |  |  |  |  | 2103.2h | 2103.2h |
| 18 | 1.2.4.1 | **Document Software Requirement Specification (Draft version)** |  | 19d? | 2011-11-20 A | 2011-12-08 A |  | 100% |  |  |  |  |  |  | 2011-10-01 | 2011-10-03 |  |  |  |  | 623.2h | 623.2h |
| 19 | 1.2.4.1.1 | Develop use case specification |  | 19d? | 2011-11-20 A | 2011-12-08 A |  | 100% |  |  |  |  |  |  | 2011-10-01 | 2011-10-03 |  |  |  | Đặng; Lộc; Tùng [40%] | 364.8h | 364.8h |
| 20 | 1.2.4.1.2 | Develop interfaces |  | 19d? | 2011-11-20 A | 2011-12-08 A |  | 100% |  |  |  |  |  |  | 2011-10-01 | 2011-10-02 |  |  |  | Đặng; Nhung [70%] | 258.4h | 258.4h |
| 21 | 1.2.4.2 | Review |  | 8d? | 2011-12-09 A | 2011-12-16 A |  | 100% |  |  |  |  |  |  | 2011-10-01 | 2011-10-01 |  |  |  | Nguyên; Lộc; Quyết | 192h | 192h |
| 22 | 1.2.4.3 | Software Requirement Specification (Final version) |  | 46d? | 2011-12-17 A | 2012-01-31 A |  | 100% |  |  |  |  |  |  | 2011-10-01 | 2011-10-04 |  |  |  | Quyết; Nguyên [50%]; Lộc; Đặng | 1288h | 1288h |
| 23 | 1.3 | **Architect Design Analysis** |  | 76d | 2011-10-15 A | 2011-12-29 |  | 100% |  |  | 2012-01-21 | 2011-10-24 | 2011-12-25 | 63d? | 2011-10-15 | 2011-12-29 |  |  |  |  | 1920h | 1920h |
| 24 | 1.3.1 | **Develop architecture driver document (ADD)** |  | 72d | 2011-10-15 A | 2011-12-25 |  | 100% |  |  | 2012-01-05 | 2011-12-25 | 2011-12-25 | 0d? | 2011-10-15 | 2011-12-25 |  |  |  |  | 688h | 688h |
| 25 | 1.3.1.1 | Discover architecture drivers |  | 21d | 2011-10-15 A | 2011-11-04 A |  | 100% |  |  |  | 2011-10-24 | 2011-11-03 | 11d | 2011-10-15 | 2011-10-17 |  |  | start no earlier than 2011-10-15 | Tường [50%]; Tân [50%] | 168h | 168h |
| 26 | 1.3.1.2 | Document ADD(Draft version) |  | 6d | 2011-11-04 A | 2011-11-09 A |  | 100% |  |  |  | 2011-11-04 | 2011-11-05 | 2d | 2011-10-17 | 2011-10-22 |  |  | start no earlier than 2011-10-17 | Tường [50%]; Tân [50%] | 48h | 48h |
| 27 | 1.3.1.3 | Review |  | 3d | 2011-11-09 A | 2011-11-11 A |  | 100% |  |  |  | 2011-11-06 | 2011-11-06 | 1d | 2011-10-22 | 2011-10-24 |  |  | start no earlier than 2011-10-22 | Tường [50%]; Tân [50%] | 24h | 24h |
| 28 | 1.3.1.4 | Document ADD(Final version) |  | 56d | 2011-11-11 A | 2012-01-05 A |  | 100% |  |  |  | 2011-11-07 | 2011-11-12 | 6d | 2011-12-20 | 2011-12-25 |  |  | finish no earlier than 2011-12-25 | Tường [50%]; Tân [50%] | 448h | 448h |

| ID | WBS | Task | Type | Duration | Start | Finish | Predecessors | Complete | Remaining | Actual start | Actual finish | Baseline start | Baseline finish | Baseline duration | Baseline 1 start | Baseline 1 finish | Total slack | Constraint | Resources | Work | Actual work |
| --- | --- | --- | --- | --- | --- | --- | --- | --- | --- | --- | --- | --- | --- | --- | --- | --- | --- | --- | --- | --- | --- |
| 29 | 1.3.2 | **Develop architecture design** |  | 68d | 2011-10-23 | 2011-12-29 |  | 100% |  | 2011-11-09 | 2012-01-21 | 2011-11-13 | 2011-11-13 | 1d | 2011-10-23 | 2011-12-29 |  |  |  | 1232h | 1232h |
| 30 | 1.3.2.1 | Research about new pattern |  | 10d | 2011-11-09 A | 2011-11-18 A |  | 100% |  |  |  | 2011-11-14 | 2011-12-05 | 22d | 2011-10-23 | 2011-11-01 |  | finish no earlier than 2011-11-01 | Tường; Tân | 160h | 160h |
| 31 | 1.3.2.2 | Document AD (Draft version) |  | 7d | 2011-11-18 A | 2011-11-25 A | 30 | 100% |  |  |  | 2011-12-06 | 2011-12-06 | 1d | 2011-11-02 | 2011-11-16 |  |  | Tường; Tân | 112h | 112h |
| 32 | 1.3.2.3 | Review |  | 15d | 2011-11-25 A | 2011-12-09 A |  | 100% |  |  |  | 2011-12-07 | 2011-12-10 | 4d | 2011-11-16 | 2011-11-18 |  | start no earlier than 2011-11-16 | Tường; Tân | 240h | 240h |
| 33 | 1.3.2.4 | Document AD (Final version) |  | 38d | 2011-12-09 A | 2012-01-15 A |  | 100% |  |  |  | 2011-12-12 | 2011-12-13 | 2d | 2011-12-19 | 2011-12-24 |  | finish no earlier than 2011-12-24 | Tường; Tân | 608h | 608h |
| 34 | 1.3.2.5 | Design Database | manual | 7d | 2012-01-15 A | 2012-01-21 A |  | 100% |  |  |  | 2011-12-14 | 2011-12-24 | 11d | 2011-11-17 | 2011-12-29 |  | start no earlier than 2011-11-17 | Tường; Tân | 112h | 112h |
| 35 | 1.4 | **Detail Design Analysis** |  | 58d | 2011-12-30 | 2012-02-25 |  |  | 58d | 2012-01-03 |  | 2011-10-16 | 2012-03-04 | 141d? | 2011-12-30 | 2012-02-25 |  |  |  | 2664h |  |
| 36 | 1.4.1 | **Analysis** |  | 22d | 2012-01-03 A | 2012-01-24 |  |  | 22d |  |  | 2012-03-04 | 2012-03-04 | 0d? | 2011-12-30 | 2012-01-11 | 32d |  |  | 1152h |  |
| 37 | 1.4.1.1 | Design class diagram |  | 9d | 2012-01-16 A | 2012-01-24 |  |  | 9d |  |  | 2011-12-25 | 2012-01-02 | 9d | 2011-12-30 | 2012-01-07 | 32d | start no earlier than 2011-12-25 | Đặng; Lộc; Nguyên; Nhung; Quyết; Tân; Tùng; Tường | 576h |  |
| 38 | 1.4.1.2 | Design sequence diagram |  | 9d | 2012-01-03 | 2012-01-11 |  |  |  |  |  | 2012-01-03 | 2012-01-11 | 9d | 2012-01-03 | 2012-01-11 | 45d | start no earlier than 2012-01-03 | Đặng; Lộc; Nguyên; Nhung; Quyết; Tân; Tùng; Tường | 576h |  |
| 39 | 1.4.2 | **SDS(Draft version)** |  | 18d | 2012-01-21 | 2012-02-07 |  |  |  |  |  | 2012-01-12 | 2012-01-20 | 9d | 2012-01-21 | 2012-02-07 | 18d |  |  | 1152h |  |
| 40 | 1.4.2.1 | Class diagram |  | 9d | 2012-01-21 | 2012-01-29 |  |  |  |  |  | 2012-01-21 | 2012-01-29 | 9d | 2012-01-21 | 2012-01-29 | 27d | start no earlier than 2012-01-21 | Đặng; Lộc; Nguyên; Nhung; Quyết; Tân; Tùng; Tường | 576h |  |
| 41 | 1.4.2.2 | Sequence diagram |  | 9d | 2012-01-30 | 2012-02-07 |  |  |  |  |  | 2012-01-30 | 2012-02-07 | 9d | 2012-01-30 | 2012-02-07 | 18d | start no earlier than 2012-01-30 | Đặng; Lộc; Nguyên; Nhung; Quyết; Tân; Tùng; Tường | 576h |  |
| 42 | 1.4.3 | Review |  | 9d | 2012-02-08 | 2012-02-16 |  |  |  |  |  | 2012-02-08 | 2012-02-16 | 9d | 2012-02-08 | 2012-02-16 | 0d | start no earlier than 2012-02-08 | Đặng; Lộc; Nhung | 216h |  |
| 43 | 1.4.4 | SDS(Final version) |  | 9d | 2012-02-17 | 2012-02-25 | 42 |  |  |  |  | 2012-02-17 | 2012-02-25 | 9d | 2012-02-17 | 2012-02-25 | 0d |  | Đặng; Lộc | 144h |  |
| 44 | 1.5 | **Programming** |  | 25d | 2012-02-20 | 2012-03-15 |  | 16% | 21.04d | 2011-11-27 |  | 2012-03-04 | 2012-04-04 | 32d? | 2012-02-20 | 2012-03-14 |  |  |  | 8512h | 3456h |
| 45 | 1.5.1 | **Training** |  | 32d? | 2011-11-28 | 2011-12-29 |  | 84% | 5.05d? | 2011-11-27 |  | 2012-03-04 | 2012-03-04 | 0d? | 2011-11-28 | 2011-12-29 |  |  |  | 4464h | 3456h |
| 46 | 1.5.1.1 | ID generate |  | 18d? | 2012-03-28 A | 2012-04-14 |  |  | 18d? |  |  | 2012-04-04 | 2012-04-04 | 0d? | 2011-11-28 | 2011-12-15 | 16d | finish no earlier than 2011-12-15 | Đặng; Lộc; Nguyên; Quyết; Tân; Tùng; Tường | 1008h |  |
| 47 | 1.5.1.2 | Programming: Manage Catalog | manual | 96d | 2011-11-27 A | 2012-03-01 A |  | 100% |  |  |  | 2012-03-04 | 2012-04-04 | 32d | 2011-11-28 | 2011-12-15 |  | start no earlier than 2011-11-28 | Đặng [50%]; Lộc [50%]; Nguyên [50%]; Quyết [50%]; Tân; Tùng [50%]; Tường [50%]; Nhung [50%] | 3456h | 3456h |
| 48 | 1.5.2 | **Programming** |  | 24d | 2012-02-20 | 2012-03-14 |  |  | 24d | 2012-02-12 |  | 2012-03-04 | 2012-03-04 | 1d | 2012-02-20 | 2012-03-14 |  |  |  | 3904h |  |
| 49 | 1.5.2.1 | Programming: Create New Personal Information |  | 24d | 2012-02-20 A | 2012-03-14 |  |  | 24d |  |  | 2012-03-04 | 2012-04-04 | 32d | 2012-02-20 | 2012-03-14 | 47d | finish no earlier than 2012-03-14 | Tân | 192h |  |
| 50 | 1.5.2.2 | Programming: Manage Employee History |  | 24d | 2012-02-20 | 2012-03-14 |  |  |  |  |  | 2012-03-04 | 2012-04-04 | 32d | 2012-02-20 | 2012-03-14 | 47d | finish no earlier than 2012-03-14 | Nguyên | 192h |  |
| 51 | 1.5.2.3 | Programming: Manage Family Relationship |  | 24d | 2012-02-20 | 2012-03-14 |  |  |  |  |  | 2012-03-04 | 2012-04-04 | 32d | 2012-02-20 | 2012-03-14 | 47d | finish no earlier than 2012-03-14 | Nhung | 192h |  |
| 52 | 1.5.2.4 | Programming: Manage Army Rank |  | 32d | 2012-02-12 | 2012-03-14 |  |  |  |  |  | 2012-03-04 | 2012-04-04 | 32d | 2012-02-12 | 2012-03-14 | 47d | finish no earlier than 2012-03-14 | Tường | 256h |  |
| 53 | 1.5.2.5 | Programming: Manage Labor Union |  | 24d | 2012-02-20 | 2012-03-14 |  |  |  |  |  | 2012-03-04 | 2012-04-04 | 32d | 2012-02-20 | 2012-03-14 | 47d | finish no earlier than 2012-03-14 | Tùng | 192h |  |
| 54 | 1.5.2.6 | Programming: Manage Union Task |  | 24d? | 2012-02-20 | 2012-03-14 |  |  |  |  |  |  |  |  | 2012-02-20 | 2012-03-14 | 47d | finish no earlier than 2012-03-14 | Lộc | 192h |  |
| 55 | 1.5.2.7 | Programming: Manage Communist Party Task |  | 24d? | 2012-02-20 | 2012-03-14 |  |  |  |  |  |  |  |  | 2012-02-20 | 2012-03-14 | 47d | finish no earlier than 2012-03-14 | Đặng | 192h |  |
| 56 | 1.5.2.8 | Programming: Manage Cirriculum |  | 24d? | 2012-02-20 | 2012-03-14 |  |  |  |  |  |  |  |  | 2012-02-20 | 2012-03-14 | 47d | finish no earlier than 2012-03-14 | Nguyên | 192h |  |
| 57 | 1.5.2.9 | Programming: Manage Research |  | 24d? | 2012-02-20 | 2012-03-14 |  |  |  |  |  |  |  |  | 2012-02-20 | 2012-03-14 | 47d | finish no earlier than 2012-03-14 | Nguyên | 192h |  |
| 58 | 1.5.2.10 | Programming: Manage Profile |  | 24d? | 2012-02-20 | 2012-03-14 |  |  |  |  |  |  |  |  | 2012-02-20 | 2012-03-14 | 47d | finish no earlier than 2012-03-14 | Tường | 192h |  |
| 59 | 1.5.2.11 | Programming: Manage Reward, Discipline |  | 24d? | 2012-02-20 | 2012-03-14 |  |  |  |  |  |  |  |  | 2012-02-20 | 2012-03-14 | 47d | finish no earlier than 2012-03-14 | Tùng | 192h |  |
| 60 | 1.5.2.12 | Programming: Manage Probation Progress |  | 24d? | 2012-02-20 | 2012-03-14 |  |  |  |  |  |  |  |  | 2012-02-20 | 2012-03-14 | 47d | finish no earlier than 2012-03-14 | Lộc | 192h |  |
| 61 | 1.5.2.13 | Programming: Manage Facilitate |  | 24d? | 2012-02-20 | 2012-03-14 |  |  |  |  |  |  |  |  | 2012-02-20 | 2012-03-14 | 47d | finish no earlier than 2012-03-14 | Đặng | 192h |  |
| 62 | 1.5.2.14 | Programming: Manage Article |  | 24d? | 2012-02-20 | 2012-03-14 |  |  |  |  |  |  |  |  | 2012-02-20 | 2012-03-14 | 47d | finish no earlier than 2012-03-14 | Quyết | 192h |  |
| 63 | 1.5.2.15 | Programming: Manage Thesis Guidance |  | 24d? | 2012-02-20 | 2012-03-14 |  |  |  |  |  |  |  |  | 2012-02-20 | 2012-03-14 | 47d | finish no earlier than 2012-03-14 | Quyết | 192h |  |
| 64 | 1.5.2.16 | Programming: Manage Supported People |  | 24d? | 2012-02-20 | 2012-03-14 |  |  |  |  |  |  |  |  | 2012-02-20 | 2012-03-14 | 47d | finish no earlier than 2012-03-14 | Nguyên | 192h |  |
| 65 | 1.5.2.17 | Programming: Manage Position |  | 24d? | 2012-02-20 | 2012-03-14 |  |  |  |  |  |  |  |  | 2012-02-20 | 2012-03-14 | 47d | finish no earlier than 2012-03-14 | Nhung | 192h |  |
| 66 | 1.5.2.18 | Programming: Manage Wage Changes |  | 24d? | 2012-02-20 | 2012-03-14 |  |  |  |  |  |  |  |  | 2012-02-20 | 2012-03-14 | 47d | finish no earlier than 2012-03-14 | Quyết | 192h |  |
| 67 | 1.5.2.19 | Programming: Manage Trainning |  | 24d? | 2012-02-20 | 2012-03-14 |  |  |  |  |  |  |  |  | 2012-02-20 | 2012-03-14 | 47d | finish no earlier than 2012-03-14 | Lộc | 192h |  |
| 68 | 1.5.2.20 | Programming: Report |  | 24d? | 2012-02-20 | 2012-03-14 |  |  |  |  |  |  |  |  |  |  | 47d | start no earlier than 2012-02-20 | Tân | 192h |  |
| 69 | 1.5.3 | Conduct Unit testing |  | 2d? | 2012-03-14 | 2012-03-15 |  |  |  |  |  |  |  |  | 2012-03-14 | 2012-03-14 | 46d | start no earlier than 2012-03-14 | Đặng; Lộc; Nguyên; Nhung; Quyết; Tân; Tùng; Tường | 128h |  |
| 70 | 1.5.4 | Intergration |  | 2d? | 2012-03-14 | 2012-03-15 |  |  |  |  |  |  |  |  | 2012-03-14 | 2012-03-14 | 46d | finish no earlier than 2012-03-15 | Tân | 16h |  |

| ID | WBS | Task | Type | Duration | Start | Finish | Predecessors | Complete | Remaining | Actual start | Baseline start | Baseline finish | Baseline duration | Baseline 1 start | Baseline 1 finish | Total slack | Constraint | Resources | Work | Actual work |
| --- | --- | --- | --- | --- | --- | --- | --- | --- | --- | --- | --- | --- | --- | --- | --- | --- | --- | --- | --- | --- |
| 71 | 1.6 | **Testing** |  | 96d | 2011-12-30 | 2012-04-03 |  | 9% | 87.45d | 2011-12-20 | 2012-04-04 | 2012-04-14 | 11d? | 2011-12-30 | 2012-04-03 |  |  |  | 2200h | 72h |
| 72 | 1.6.1 | **Design test case** |  | 96d | 2011-12-30 | 2012-04-03 |  | 9% | 87.18d | 2011-12-20 | 2012-04-04 | 2012-04-04 | 0d? | 2011-12-30 | 2012-04-03 |  |  |  | 2032h | 72h |
| 73 | 1.6.1.1 | Acceptance test case |  | 58d? | 2011-12-30 | 2012-02-25 |  |  |  |  | 2012-04-14 | 2012-04-14 | 0d? | 2011-12-30 | 2012-02-25 | 65d | finish no earlier than 2012-02-25 | Tùng | 464h |  |
| 74 | 1.6.1.2 | System test case |  | 9d | 2011-12-20 A | 2011-12-28 A |  | 100% |  |  | 2012-04-04 | 2012-04-08 | 5d | 2011-12-30 | 2012-01-03 |  | start no earlier than 2011-12-30 | Tùng | 72h | 72h |
| 75 | 1.6.1.3 | Integration test case |  | 7d | 2011-12-30 | 2012-01-05 |  |  |  |  | 2012-04-08 | 2012-04-14 | 7d | 2011-12-30 | 2012-01-05 | 116d | start no earlier than 2011-12-30 | Tùng | 56h |  |
| 76 | 1.6.1.4 | Unit test case |  | 24d | 2012-02-20 | 2012-03-14 |  |  |  |  | 2012-04-14 | 2012-04-14 | 1d | 2012-02-20 | 2012-03-14 | 47d | finish no earlier than 2012-03-14 | Tùng; Tân; Đặng; Lộc; Nguyên; Nhung; Quyết; Tường | 1440h |  |
| 77 | 1.6.2 | **Conduct test case** |  | 20d | 2012-03-15 | 2012-04-03 |  |  |  |  |  |  |  | 2012-03-15 | 2012-04-03 |  |  |  | 168h |  |
| 78 | 1.6.2.1 | Integration test case |  | 1d? | 2012-04-03 | 2012-04-03 |  |  |  |  |  |  |  | 2012-04-03 | 2012-04-03 | 27d | finish no earlier than 2012-04-03 | Đặng; Lộc; Quyết; Tân; Tường; Nguyên; Tùng | 56h |  |
| 79 | 1.6.2.2 | System test case |  | 1d? | 2012-04-03 | 2012-04-03 |  |  |  |  |  |  |  | 2012-04-03 | 2012-04-03 | 27d | finish no earlier than 2012-04-03 | Đặng; Lộc; Nguyên; Quyết; Tân; Tùng; Tường | 56h |  |
| 80 | 1.6.2.3 | Acceptance test case |  | 1d? | 2012-04-03 | 2012-04-03 |  |  |  |  |  |  |  | 2012-04-03 | 2012-04-03 | 27d | finish no earlier than 2012-04-03 | Tân; Tường; Đặng; Lộc; Nguyên; Quyết; Tùng | 56h |  |
| 81 | 1.7 | Rework |  | 15d? | 2012-04-04 | 2012-04-18 |  |  |  |  |  |  |  | 2012-04-04 | 2012-04-18 | 0d | finish no earlier than 2012-04-18 | Đặng; Lộc; Nguyên; Quyết; Tân; Tùng; Tường | 840h |  |
| 82 | 1.8 | Deployment | manual | 2d | 2012-04-19 | 2012-04-20 | 81 |  |  |  | 2012-04-15 | 2012-04-17 | 3d | 2012-04-19 | 2012-04-20 |  | finish no earlier than 2012-04-20 | Tân; Đặng; Nhung | 48h |  |
| 83 | 1.9 | Deliver to customer | manual | 10d | 2012-04-21 | 2012-04-30 | 82 |  |  |  | 2012-04-17 | 2012-04-30 | 14d | 2012-04-21 | 2012-04-30 |  | finish no earlier than 2012-04-25 | Đặng; Lộc; Nguyên; Nhung; Quyết; Tân; Tùng; Tường | 640h |  |
| 84 | 1.10 | Maintaining |  | 1d? | 2012-04-30 | 2012-04-30 |  |  |  |  |  |  |  | 2012-04-30 | 2012-04-30 | 0d | start no earlier than 2012-04-30 |  |  |  |
| 85 | 1.11 | **Project Management** |  | 216d | 2011-09-28 A | 2012-04-30 | 2 |  | 216d |  | 2011-10-01 | 2012-04-17 | 200d? | 2011-09-28 | 2012-04-30 |  |  |  | 20177h |  |
| 86 | 1.11.1 | **Start Up** |  | 3d? | 2011-09-28 A | 2011-09-30 |  |  | 3d? |  | 2011-09-22 | 2012-04-17 | 209d? | 2011-09-28 | 2011-09-30 | 213d |  |  | 184h |  |
| 87 | 1.11.1.1 | **Research process** |  | 2d? | 2011-09-28 A | 2011-09-29 |  |  | 2d? |  | 2011-10-01 | 2012-03-22 | 174d | 2011-09-28 | 2011-09-29 | 214d |  |  | 80h |  |
| 88 | 1.11.1.1.1 | Requirement Process |  | 2d? | 2011-09-28 A | 2011-09-29 |  |  | 2d? |  |  |  |  | 2011-09-28 | 2011-09-29 | 214d |  | Nguyên [50%]; Quyết [50%] | 16h |  |
| 89 | 1.11.1.1.2 | Architect process |  | 2d? | 2011-09-28 | 2011-09-29 |  |  |  |  |  |  |  | 2011-09-28 | 2011-09-29 | 214d |  | Tân [50%]; Tường [50%] | 16h |  |
| 90 | 1.11.1.1.3 | Detail design process |  | 2d? | 2011-09-28 | 2011-09-29 |  |  |  |  |  |  |  | 2011-09-28 | 2011-09-29 | 214d |  | Đặng [50%]; Lộc [50%] | 16h |  |
| 91 | 1.11.1.1.4 | Testing process |  | 1d? | 2011-09-28 | 2011-09-28 |  |  |  |  |  |  |  | 2011-09-28 | 2011-09-28 | 215d |  | Tùng | 8h |  |
| 92 | 1.11.1.1.5 | Risk management |  | 1d? | 2011-09-28 | 2011-09-28 |  |  |  |  |  |  |  | 2011-09-28 | 2011-09-28 | 215d |  | Nhung | 8h |  |
| 93 | 1.11.1.1.6 | Measurement management |  | 1d? | 2011-09-28 | 2011-09-28 |  |  |  |  |  |  |  | 2011-09-28 | 2011-09-28 | 215d |  | Nhung | 8h |  |
| 94 | 1.11.1.1.7 | Change management |  | 1d? | 2011-09-28 | 2011-09-28 |  |  |  |  |  |  |  | 2011-09-28 | 2011-09-28 | 215d |  | Nhung | 8h |  |

| ID | WBS | Task | Duration | Start | Finish | Baseline start | Baseline finish | Baseline duration | Baseline 1 start | Baseline 1 finish | Total slack | Constraint | Resources | Work |
| --- | --- | --- | --- | --- | --- | --- | --- | --- | --- | --- | --- | --- | --- | --- |
| 95 | 1.11.1.2 | **Develop Project Plan** | 2d? | 2011-09-28 | 2011-09-29 | 2011-09-22 | 2011-09-26 | 5d | 2011-09-28 | 2011-09-29 | 214d |  |  | 80h |
| 96 | 1.11.1.2.1 | Requirement Process | 2d? | 2011-09-28 | 2011-09-29 |  |  |  | 2011-09-28 | 2011-09-29 | 214d |  | Nguyên [50%]; Quyết [50%] | 16h |
| 97 | 1.11.1.2.2 | Architect process | 2d? | 2011-09-28 | 2011-09-29 |  |  |  | 2011-09-28 | 2011-09-29 | 214d |  | Tân [50%]; Tường [50%] | 16h |
| 98 | 1.11.1.2.3 | Detail design process | 2d? | 2011-09-28 | 2011-09-29 |  |  |  | 2011-09-28 | 2011-09-29 | 214d |  | Đặng [50%]; Lộc [50%] | 16h |
| 99 | 1.11.1.2.4 | Testing process | 1d? | 2011-09-28 | 2011-09-28 |  |  |  | 2011-09-28 | 2011-09-28 | 215d |  | Tùng | 8h |
| 100 | 1.11.1.2.5 | Risk management | 1d? | 2011-09-28 | 2011-09-28 |  |  |  | 2011-09-28 | 2011-09-28 | 215d |  | Nhung | 8h |
| 101 | 1.11.1.2.6 | Measurement management | 1d? | 2011-09-28 | 2011-09-28 |  |  |  | 2011-09-28 | 2011-09-28 | 215d |  | Nhung | 8h |
| 102 | 1.11.1.2.7 | Change management | 1d? | 2011-09-28 | 2011-09-28 |  |  |  | 2011-09-28 | 2011-09-28 | 215d |  | Nhung | 8h |
| 103 | 1.11.1.3 | Develop Detail Plan | 3d | 2011-09-28 | 2011-09-30 | 2011-09-22 | 2011-09-24 | 3d | 2011-09-28 | 2011-09-30 | 213d | start no earlier than 2011-09-22 | Nhung | 24h |
| 104 | 1.11.2 | **Report** | 216d | 2011-09-28 | 2012-04-30 |  |  |  | 2011-09-28 | 2012-04-30 | 0d |  |  | 19993h |
| 105 | 1.11.2.1 | **Time log** | 216d | 2011-09-28 | 2012-04-30 |  |  |  | 2011-09-28 | 2012-04-30 | 0d |  | Đặng; Lộc; Nguyên; Nhung; Quyết; Tân; Tùng; Tường | 13824h |
| 106 | 1.11.2.1.1 | Time log 1 | 1d | 2011-09-28 | 2011-09-28 |  |  |  | 2011-09-28 | 2011-09-28 | 215d | start no earlier than 2009-09-27 |  |  |
| 107 | 1.11.2.1.2 | Time log 2 | 1d | 2011-09-28 | 2011-09-28 |  |  |  | 2011-09-28 | 2011-09-28 | 215d | start no earlier than 2009-09-28 |  |  |
| 108 | 1.11.2.1.3 | Time log 3 | 1d | 2011-09-28 | 2011-09-28 |  |  |  | 2011-09-28 | 2011-09-28 | 215d | start no earlier than 2009-09-29 |  |  |
| 109 | 1.11.2.1.4 | Time log 4 | 1d | 2011-09-28 | 2011-09-28 |  |  |  | 2011-09-28 | 2011-09-28 | 215d | start no earlier than 2009-09-30 |  |  |
| 110 | 1.11.2.1.5 | Time log 5 | 1d | 2011-09-28 | 2011-09-28 |  |  |  | 2011-09-28 | 2011-09-28 | 215d | start no earlier than 2009-10-01 |  |  |
| 111 | 1.11.2.1.6 | Time log 6 | 1d | 2011-09-28 | 2011-09-28 |  |  |  | 2011-09-28 | 2011-09-28 | 215d | start no earlier than 2009-10-02 |  |  |
| 112 | 1.11.2.1.7 | Time log 7 | 1d | 2011-09-28 | 2011-09-28 |  |  |  | 2011-09-28 | 2011-09-28 | 215d | start no earlier than 2009-10-03 |  |  |
| 113 | 1.11.2.1.8 | Time log 8 | 1d | 2011-09-28 | 2011-09-28 |  |  |  | 2011-09-28 | 2011-09-28 | 215d | start no earlier than 2009-10-04 |  |  |
| 114 | 1.11.2.1.9 | Time log 9 | 1d | 2011-09-28 | 2011-09-28 |  |  |  | 2011-09-28 | 2011-09-28 | 215d | start no earlier than 2009-10-05 |  |  |
| 115 | 1.11.2.1.10 | Time log 10 | 1d | 2011-09-28 | 2011-09-28 |  |  |  | 2011-09-28 | 2011-09-28 | 215d | start no earlier than 2009-10-06 |  |  |
| 116 | 1.11.2.1.11 | Time log 11 | 1d | 2011-09-28 | 2011-09-28 |  |  |  | 2011-09-28 | 2011-09-28 | 215d | start no earlier than 2009-10-07 |  |  |
| 117 | 1.11.2.1.12 | Time log 12 | 1d | 2011-09-28 | 2011-09-28 |  |  |  | 2011-09-28 | 2011-09-28 | 215d | start no earlier than 2009-10-08 |  |  |
| 118 | 1.11.2.1.13 | Time log 13 | 1d | 2011-09-28 | 2011-09-28 |  |  |  | 2011-09-28 | 2011-09-28 | 215d | start no earlier than 2009-10-09 |  |  |
| 119 | 1.11.2.1.14 | Time log 14 | 1d | 2011-09-28 | 2011-09-28 |  |  |  | 2011-09-28 | 2011-09-28 | 215d | start no earlier than 2009-10-10 |  |  |
| 120 | 1.11.2.1.15 | Time log 15 | 1d | 2011-09-28 | 2011-09-28 |  |  |  | 2011-09-28 | 2011-09-28 | 215d | start no earlier than 2009-10-11 |  |  |
| 121 | 1.11.2.1.16 | Time log 16 | 1d | 2011-09-28 | 2011-09-28 |  |  |  | 2011-09-28 | 2011-09-28 | 215d | start no earlier than 2009-10-12 |  |  |
| 122 | 1.11.2.1.17 | Time log 17 | 1d | 2011-09-28 | 2011-09-28 |  |  |  | 2011-09-28 | 2011-09-28 | 215d | start no earlier than 2009-10-13 |  |  |
| 123 | 1.11.2.1.18 | Time log 18 | 1d | 2011-09-28 | 2011-09-28 |  |  |  | 2011-09-28 | 2011-09-28 | 215d | start no earlier than 2009-10-14 |  |  |
| 124 | 1.11.2.1.19 | Time log 19 | 1d | 2011-09-28 | 2011-09-28 |  |  |  | 2011-09-28 | 2011-09-28 | 215d | start no earlier than 2009-10-15 |  |  |
| 125 | 1.11.2.1.20 | Time log 20 | 1d | 2011-09-28 | 2011-09-28 |  |  |  | 2011-09-28 | 2011-09-28 | 215d | start no earlier than 2009-10-16 |  |  |
| 126 | 1.11.2.1.21 | Time log 21 | 1d | 2011-09-28 | 2011-09-28 |  |  |  | 2011-09-28 | 2011-09-28 | 215d | start no earlier than 2009-10-17 |  |  |
| 127 | 1.11.2.1.22 | Time log 22 | 1d | 2011-09-28 | 2011-09-28 |  |  |  | 2011-09-28 | 2011-09-28 | 215d | start no earlier than 2009-10-18 |  |  |
| 128 | 1.11.2.1.23 | Time log 23 | 1d | 2011-09-28 | 2011-09-28 |  |  |  | 2011-09-28 | 2011-09-28 | 215d | start no earlier than 2009-10-19 |  |  |
| 129 | 1.11.2.1.24 | Time log 24 | 1d | 2011-09-28 | 2011-09-28 |  |  |  | 2011-09-28 | 2011-09-28 | 215d | start no earlier than 2009-10-20 |  |  |
| 130 | 1.11.2.1.25 | Time log 25 | 1d | 2011-09-28 | 2011-09-28 |  |  |  | 2011-09-28 | 2011-09-28 | 215d | start no earlier than 2009-10-21 |  |  |
| 131 | 1.11.2.1.26 | Time log 26 | 1d | 2011-09-28 | 2011-09-28 |  |  |  | 2011-09-28 | 2011-09-28 | 215d | start no earlier than 2009-10-22 |  |  |
| 132 | 1.11.2.1.27 | Time log 27 | 1d | 2011-09-28 | 2011-09-28 |  |  |  | 2011-09-28 | 2011-09-28 | 215d | start no earlier than 2009-10-23 |  |  |
| 133 | 1.11.2.1.28 | Time log 28 | 1d | 2011-09-28 | 2011-09-28 |  |  |  | 2011-09-28 | 2011-09-28 | 215d | start no earlier than 2009-10-24 |  |  |
| 134 | 1.11.2.1.29 | Time log 29 | 1d | 2011-09-28 | 2011-09-28 |  |  |  | 2011-09-28 | 2011-09-28 | 215d | start no earlier than 2009-10-25 |  |  |
| 135 | 1.11.2.1.30 | Time log 30 | 1d | 2011-09-28 | 2011-09-28 |  |  |  | 2011-09-28 | 2011-09-28 | 215d | start no earlier than 2009-10-26 |  |  |
| 136 | 1.11.2.1.31 | Time log 31 | 1d | 2011-09-28 | 2011-09-28 |  |  |  | 2011-09-28 | 2011-09-28 | 215d | start no earlier than 2009-10-27 |  |  |
| 137 | 1.11.2.1.32 | Time log 32 | 1d | 2011-09-28 | 2011-09-28 |  |  |  | 2011-09-28 | 2011-09-28 | 215d | start no earlier than 2009-10-28 |  |  |
| 138 | 1.11.2.1.33 | Time log 33 | 1d | 2011-09-28 | 2011-09-28 |  |  |  | 2011-09-28 | 2011-09-28 | 215d | start no earlier than 2009-10-29 |  |  |
| 139 | 1.11.2.1.34 | Time log 34 | 1d | 2011-09-28 | 2011-09-28 |  |  |  | 2011-09-28 | 2011-09-28 | 215d | start no earlier than 2009-10-30 |  |  |
| 140 | 1.11.2.1.35 | Time log 35 | 1d | 2011-09-28 | 2011-09-28 |  |  |  | 2011-09-28 | 2011-09-28 | 215d | start no earlier than 2009-10-31 |  |  |
| 141 | 1.11.2.1.36 | Time log 36 | 1d | 2011-09-28 | 2011-09-28 |  |  |  | 2011-09-28 | 2011-09-28 | 215d | start no earlier than 2009-11-01 |  |  |
| 142 | 1.11.2.1.37 | Time log 37 | 1d | 2011-09-28 | 2011-09-28 |  |  |  | 2011-09-28 | 2011-09-28 | 215d | start no earlier than 2009-11-02 |  |  |
| 143 | 1.11.2.1.38 | Time log 38 | 1d | 2011-09-28 | 2011-09-28 |  |  |  | 2011-09-28 | 2011-09-28 | 215d | start no earlier than 2009-11-03 |  |  |
| 144 | 1.11.2.1.39 | Time log 39 | 1d | 2011-09-28 | 2011-09-28 |  |  |  | 2011-09-28 | 2011-09-28 | 215d | start no earlier than 2009-11-04 |  |  |
| 145 | 1.11.2.1.40 | Time log 40 | 1d | 2011-09-28 | 2011-09-28 |  |  |  | 2011-09-28 | 2011-09-28 | 215d | start no earlier than 2009-11-05 |  |  |
| 146 | 1.11.2.1.41 | Time log 41 | 1d | 2011-09-28 | 2011-09-28 |  |  |  | 2011-09-28 | 2011-09-28 | 215d | start no earlier than 2009-11-06 |  |  |
| 147 | 1.11.2.1.42 | Time log 42 | 1d | 2011-09-28 | 2011-09-28 |  |  |  | 2011-09-28 | 2011-09-28 | 215d | start no earlier than 2009-11-07 |  |  |
| 148 | 1.11.2.1.43 | Time log 43 | 1d | 2011-09-28 | 2011-09-28 |  |  |  | 2011-09-28 | 2011-09-28 | 215d | start no earlier than 2009-11-08 |  |  |
| 149 | 1.11.2.1.44 | Time log 44 | 1d | 2011-09-28 | 2011-09-28 |  |  |  | 2011-09-28 | 2011-09-28 | 215d | start no earlier than 2009-11-09 |  |  |
| 150 | 1.11.2.1.45 | Time log 45 | 1d | 2011-09-28 | 2011-09-28 |  |  |  | 2011-09-28 | 2011-09-28 | 215d | start no earlier than 2009-11-10 |  |  |
| 151 | 1.11.2.1.46 | Time log 46 | 1d | 2011-09-28 | 2011-09-28 |  |  |  | 2011-09-28 | 2011-09-28 | 215d | start no earlier than 2009-11-11 |  |  |
| 152 | 1.11.2.1.47 | Time log 47 | 1d | 2011-09-28 | 2011-09-28 |  |  |  | 2011-09-28 | 2011-09-28 | 215d | start no earlier than 2009-11-12 |  |  |
| 153 | 1.11.2.1.48 | Time log 48 | 1d | 2011-09-28 | 2011-09-28 |  |  |  | 2011-09-28 | 2011-09-28 | 215d | start no earlier than 2009-11-13 |  |  |
| 154 | 1.11.2.1.49 | Time log 49 | 1d | 2011-09-28 | 2011-09-28 |  |  |  | 2011-09-28 | 2011-09-28 | 215d | start no earlier than 2009-11-14 |  |  |
| 155 | 1.11.2.1.50 | Time log 50 | 1d | 2011-09-28 | 2011-09-28 |  |  |  | 2011-09-28 | 2011-09-28 | 215d | start no earlier than 2009-11-15 |  |  |
| 156 | 1.11.2.1.51 | Time log 51 | 1d | 2011-09-28 | 2011-09-28 |  |  |  | 2011-09-28 | 2011-09-28 | 215d | start no earlier than 2009-11-16 |  |  |
| 157 | 1.11.2.1.52 | Time log 52 | 1d | 2011-09-28 | 2011-09-28 |  |  |  | 2011-09-28 | 2011-09-28 | 215d | start no earlier than 2009-11-17 |  |  |
| 158 | 1.11.2.1.53 | Time log 53 | 1d | 2011-09-28 | 2011-09-28 |  |  |  | 2011-09-28 | 2011-09-28 | 215d | start no earlier than 2009-11-18 |  |  |
| 159 | 1.11.2.1.54 | Time log 54 | 1d | 2011-09-28 | 2011-09-28 |  |  |  | 2011-09-28 | 2011-09-28 | 215d | start no earlier than 2009-11-19 |  |  |
| 160 | 1.11.2.1.55 | Time log 55 | 1d | 2011-09-28 | 2011-09-28 |  |  |  | 2011-09-28 | 2011-09-28 | 215d | start no earlier than 2009-11-20 |  |  |
| 161 | 1.11.2.1.56 | Time log 56 | 1d | 2011-09-28 | 2011-09-28 |  |  |  | 2011-09-28 | 2011-09-28 | 215d | start no earlier than 2009-11-21 |  |  |
| 162 | 1.11.2.1.57 | Time log 57 | 1d | 2011-09-28 | 2011-09-28 |  |  |  | 2011-09-28 | 2011-09-28 | 215d | start no earlier than 2009-11-22 |  |  |
| 163 | 1.11.2.1.58 | Time log 58 | 1d | 2011-09-28 | 2011-09-28 |  |  |  | 2011-09-28 | 2011-09-28 | 215d | start no earlier than 2009-11-23 |  |  |
| 164 | 1.11.2.1.59 | Time log 59 | 1d | 2011-09-28 | 2011-09-28 |  |  |  | 2011-09-28 | 2011-09-28 | 215d | start no earlier than 2009-11-24 |  |  |

| ID | WBS | Task | Duration | Start | Finish | Baseline 1 start | Baseline 1 finish | Total slack | Constraint |
| --- | --- | --- | --- | --- | --- | --- | --- | --- | --- |
| 165 | 1.11.2.1.60 | Time log 60 | 1d | 2011-09-28 | 2011-09-28 | 2011-09-28 | 2011-09-28 | 215d | start no earlier than 2009-11-25 |
| 166 | 1.11.2.1.61 | Time log 61 | 1d | 2011-09-28 | 2011-09-28 | 2011-09-28 | 2011-09-28 | 215d | start no earlier than 2009-11-26 |
| 167 | 1.11.2.1.62 | Time log 62 | 1d | 2011-09-28 | 2011-09-28 | 2011-09-28 | 2011-09-28 | 215d | start no earlier than 2009-11-27 |
| 168 | 1.11.2.1.63 | Time log 63 | 1d | 2011-09-28 | 2011-09-28 | 2011-09-28 | 2011-09-28 | 215d | start no earlier than 2009-11-28 |
| 169 | 1.11.2.1.64 | Time log 64 | 1d | 2011-09-28 | 2011-09-28 | 2011-09-28 | 2011-09-28 | 215d | start no earlier than 2009-11-29 |
| 170 | 1.11.2.1.65 | Time log 65 | 1d | 2011-09-28 | 2011-09-28 | 2011-09-28 | 2011-09-28 | 215d | start no earlier than 2009-11-30 |
| 171 | 1.11.2.1.66 | Time log 66 | 1d | 2011-09-28 | 2011-09-28 | 2011-09-28 | 2011-09-28 | 215d | start no earlier than 2009-12-01 |
| 172 | 1.11.2.1.67 | Time log 67 | 1d | 2011-09-28 | 2011-09-28 | 2011-09-28 | 2011-09-28 | 215d | start no earlier than 2009-12-02 |
| 173 | 1.11.2.1.68 | Time log 68 | 1d | 2011-09-28 | 2011-09-28 | 2011-09-28 | 2011-09-28 | 215d | start no earlier than 2009-12-03 |
| 174 | 1.11.2.1.69 | Time log 69 | 1d | 2011-09-28 | 2011-09-28 | 2011-09-28 | 2011-09-28 | 215d | start no earlier than 2009-12-04 |
| 175 | 1.11.2.1.70 | Time log 70 | 1d | 2011-09-28 | 2011-09-28 | 2011-09-28 | 2011-09-28 | 215d | start no earlier than 2009-12-05 |
| 176 | 1.11.2.1.71 | Time log 71 | 1d | 2011-09-28 | 2011-09-28 | 2011-09-28 | 2011-09-28 | 215d | start no earlier than 2009-12-06 |
| 177 | 1.11.2.1.72 | Time log 72 | 1d | 2011-09-28 | 2011-09-28 | 2011-09-28 | 2011-09-28 | 215d | start no earlier than 2009-12-07 |
| 178 | 1.11.2.1.73 | Time log 73 | 1d | 2011-09-28 | 2011-09-28 | 2011-09-28 | 2011-09-28 | 215d | start no earlier than 2009-12-08 |
| 179 | 1.11.2.1.74 | Time log 74 | 1d | 2011-09-28 | 2011-09-28 | 2011-09-28 | 2011-09-28 | 215d | start no earlier than 2009-12-09 |
| 180 | 1.11.2.1.75 | Time log 75 | 1d | 2011-09-28 | 2011-09-28 | 2011-09-28 | 2011-09-28 | 215d | start no earlier than 2009-12-10 |
| 181 | 1.11.2.1.76 | Time log 76 | 1d | 2011-09-28 | 2011-09-28 | 2011-09-28 | 2011-09-28 | 215d | start no earlier than 2009-12-11 |
| 182 | 1.11.2.1.77 | Time log 77 | 1d | 2011-09-28 | 2011-09-28 | 2011-09-28 | 2011-09-28 | 215d | start no earlier than 2009-12-12 |
| 183 | 1.11.2.1.78 | Time log 78 | 1d | 2011-09-28 | 2011-09-28 | 2011-09-28 | 2011-09-28 | 215d | start no earlier than 2009-12-13 |
| 184 | 1.11.2.1.79 | Time log 79 | 1d | 2011-09-28 | 2011-09-28 | 2011-09-28 | 2011-09-28 | 215d | start no earlier than 2009-12-14 |
| 185 | 1.11.2.1.80 | Time log 80 | 1d | 2011-09-28 | 2011-09-28 | 2011-09-28 | 2011-09-28 | 215d | start no earlier than 2009-12-15 |
| 186 | 1.11.2.1.81 | Time log 81 | 1d | 2011-09-28 | 2011-09-28 | 2011-09-28 | 2011-09-28 | 215d | start no earlier than 2009-12-16 |
| 187 | 1.11.2.1.82 | Time log 82 | 1d | 2011-09-28 | 2011-09-28 | 2011-09-28 | 2011-09-28 | 215d | start no earlier than 2009-12-17 |
| 188 | 1.11.2.1.83 | Time log 83 | 1d | 2011-09-28 | 2011-09-28 | 2011-09-28 | 2011-09-28 | 215d | start no earlier than 2009-12-18 |
| 189 | 1.11.2.1.84 | Time log 84 | 1d | 2011-09-28 | 2011-09-28 | 2011-09-28 | 2011-09-28 | 215d | start no earlier than 2009-12-19 |
| 190 | 1.11.2.1.85 | Time log 85 | 1d | 2011-09-28 | 2011-09-28 | 2011-09-28 | 2011-09-28 | 215d | start no earlier than 2009-12-20 |
| 191 | 1.11.2.1.86 | Time log 86 | 1d | 2011-09-28 | 2011-09-28 | 2011-09-28 | 2011-09-28 | 215d | start no earlier than 2009-12-21 |
| 192 | 1.11.2.1.87 | Time log 87 | 1d | 2011-09-28 | 2011-09-28 | 2011-09-28 | 2011-09-28 | 215d | start no earlier than 2009-12-22 |
| 193 | 1.11.2.1.88 | Time log 88 | 1d | 2011-09-28 | 2011-09-28 | 2011-09-28 | 2011-09-28 | 215d | start no earlier than 2009-12-23 |
| 194 | 1.11.2.1.89 | Time log 89 | 1d | 2011-09-28 | 2011-09-28 | 2011-09-28 | 2011-09-28 | 215d | start no earlier than 2009-12-24 |
| 195 | 1.11.2.1.90 | Time log 90 | 1d | 2011-09-28 | 2011-09-28 | 2011-09-28 | 2011-09-28 | 215d | start no earlier than 2009-12-25 |
| 196 | 1.11.2.1.91 | Time log 91 | 1d | 2011-09-28 | 2011-09-28 | 2011-09-28 | 2011-09-28 | 215d | start no earlier than 2009-12-26 |
| 197 | 1.11.2.1.92 | Time log 92 | 1d | 2011-09-28 | 2011-09-28 | 2011-09-28 | 2011-09-28 | 215d | start no earlier than 2009-12-27 |
| 198 | 1.11.2.1.93 | Time log 93 | 1d | 2011-09-28 | 2011-09-28 | 2011-09-28 | 2011-09-28 | 215d | start no earlier than 2009-12-28 |
| 199 | 1.11.2.1.94 | Time log 94 | 1d | 2011-09-28 | 2011-09-28 | 2011-09-28 | 2011-09-28 | 215d | start no earlier than 2009-12-29 |
| 200 | 1.11.2.1.95 | Time log 95 | 1d | 2011-09-28 | 2011-09-28 | 2011-09-28 | 2011-09-28 | 215d | start no earlier than 2009-12-30 |
| 201 | 1.11.2.1.96 | Time log 96 | 1d | 2011-09-28 | 2011-09-28 | 2011-09-28 | 2011-09-28 | 215d | start no earlier than 2009-12-31 |
| 202 | 1.11.2.1.97 | Time log 97 | 1d | 2011-09-28 | 2011-09-28 | 2011-09-28 | 2011-09-28 | 215d | start no earlier than 2010-01-01 |
| 203 | 1.11.2.1.98 | Time log 98 | 1d | 2011-09-28 | 2011-09-28 | 2011-09-28 | 2011-09-28 | 215d | start no earlier than 2010-01-02 |
| 204 | 1.11.2.1.99 | Time log 99 | 1d | 2011-09-28 | 2011-09-28 | 2011-09-28 | 2011-09-28 | 215d | start no earlier than 2010-01-03 |
| 205 | 1.11.2.1.100 | Time log 100 | 1d | 2011-09-28 | 2011-09-28 | 2011-09-28 | 2011-09-28 | 215d | start no earlier than 2010-01-04 |
| 206 | 1.11.2.1.101 | Time log 101 | 1d | 2011-09-28 | 2011-09-28 | 2011-09-28 | 2011-09-28 | 215d | start no earlier than 2010-01-05 |
| 207 | 1.11.2.1.102 | Time log 102 | 1d | 2011-09-28 | 2011-09-28 | 2011-09-28 | 2011-09-28 | 215d | start no earlier than 2010-01-06 |
| 208 | 1.11.2.1.103 | Time log 103 | 1d | 2011-09-28 | 2011-09-28 | 2011-09-28 | 2011-09-28 | 215d | start no earlier than 2010-01-07 |
| 209 | 1.11.2.1.104 | Time log 104 | 1d | 2011-09-28 | 2011-09-28 | 2011-09-28 | 2011-09-28 | 215d | start no earlier than 2010-01-08 |
| 210 | 1.11.2.1.105 | Time log 105 | 1d | 2011-09-28 | 2011-09-28 | 2011-09-28 | 2011-09-28 | 215d | start no earlier than 2010-01-09 |
| 211 | 1.11.2.1.106 | Time log 106 | 1d | 2011-09-28 | 2011-09-28 | 2011-09-28 | 2011-09-28 | 215d | start no earlier than 2010-01-10 |
| 212 | 1.11.2.1.107 | Time log 107 | 1d | 2011-09-28 | 2011-09-28 | 2011-09-28 | 2011-09-28 | 215d | start no earlier than 2010-01-11 |
| 213 | 1.11.2.1.108 | Time log 108 | 1d | 2011-09-28 | 2011-09-28 | 2011-09-28 | 2011-09-28 | 215d | start no earlier than 2010-01-12 |
| 214 | 1.11.2.1.109 | Time log 109 | 1d | 2011-09-28 | 2011-09-28 | 2011-09-28 | 2011-09-28 | 215d | start no earlier than 2010-01-13 |
| 215 | 1.11.2.1.110 | Time log 110 | 1d | 2011-09-28 | 2011-09-28 | 2011-09-28 | 2011-09-28 | 215d | start no earlier than 2010-01-14 |
| 216 | 1.11.2.1.111 | Time log 111 | 1d | 2011-09-28 | 2011-09-28 | 2011-09-28 | 2011-09-28 | 215d | start no earlier than 2010-01-15 |
| 217 | 1.11.2.1.112 | Time log 112 | 1d | 2011-09-28 | 2011-09-28 | 2011-09-28 | 2011-09-28 | 215d | start no earlier than 2010-01-16 |
| 218 | 1.11.2.1.113 | Time log 113 | 1d | 2011-09-28 | 2011-09-28 | 2011-09-28 | 2011-09-28 | 215d | start no earlier than 2010-01-17 |
| 219 | 1.11.2.1.114 | Time log 114 | 1d | 2011-09-28 | 2011-09-28 | 2011-09-28 | 2011-09-28 | 215d | start no earlier than 2010-01-18 |
| 220 | 1.11.2.1.115 | Time log 115 | 1d | 2011-09-28 | 2011-09-28 | 2011-09-28 | 2011-09-28 | 215d | start no earlier than 2010-01-19 |
| 221 | 1.11.2.1.116 | Time log 116 | 1d | 2011-09-28 | 2011-09-28 | 2011-09-28 | 2011-09-28 | 215d | start no earlier than 2010-01-20 |
| 222 | 1.11.2.1.117 | Time log 117 | 1d | 2011-09-28 | 2011-09-28 | 2011-09-28 | 2011-09-28 | 215d | start no earlier than 2010-01-21 |
| 223 | 1.11.2.1.118 | Time log 118 | 1d | 2011-09-28 | 2011-09-28 | 2011-09-28 | 2011-09-28 | 215d | start no earlier than 2010-01-22 |
| 224 | 1.11.2.1.119 | Time log 119 | 1d | 2011-09-28 | 2011-09-28 | 2011-09-28 | 2011-09-28 | 215d | start no earlier than 2010-01-23 |
| 225 | 1.11.2.1.120 | Time log 120 | 1d | 2011-09-28 | 2011-09-28 | 2011-09-28 | 2011-09-28 | 215d | start no earlier than 2010-01-24 |
| 226 | 1.11.2.1.121 | Time log 121 | 1d | 2011-09-28 | 2011-09-28 | 2011-09-28 | 2011-09-28 | 215d | start no earlier than 2010-01-25 |
| 227 | 1.11.2.1.122 | Time log 122 | 1d | 2011-09-28 | 2011-09-28 | 2011-09-28 | 2011-09-28 | 215d | start no earlier than 2010-01-26 |
| 228 | 1.11.2.1.123 | Time log 123 | 1d | 2011-09-28 | 2011-09-28 | 2011-09-28 | 2011-09-28 | 215d | start no earlier than 2010-01-27 |
| 229 | 1.11.2.1.124 | Time log 124 | 1d | 2011-09-28 | 2011-09-28 | 2011-09-28 | 2011-09-28 | 215d | start no earlier than 2010-01-28 |
| 230 | 1.11.2.1.125 | Time log 125 | 1d | 2011-09-28 | 2011-09-28 | 2011-09-28 | 2011-09-28 | 215d | start no earlier than 2010-01-29 |
| 231 | 1.11.2.1.126 | Time log 126 | 1d | 2011-09-28 | 2011-09-28 | 2011-09-28 | 2011-09-28 | 215d | start no earlier than 2010-01-30 |
| 232 | 1.11.2.1.127 | Time log 127 | 1d | 2011-09-28 | 2011-09-28 | 2011-09-28 | 2011-09-28 | 215d | start no earlier than 2010-01-31 |
| 233 | 1.11.2.1.128 | Time log 128 | 1d | 2011-09-28 | 2011-09-28 | 2011-09-28 | 2011-09-28 | 215d | start no earlier than 2010-02-01 |
| 234 | 1.11.2.1.129 | Time log 129 | 1d | 2011-09-28 | 2011-09-28 | 2011-09-28 | 2011-09-28 | 215d | start no earlier than 2010-02-02 |

| ID | WBS | Task | Duration | Start | Finish | Baseline 1 start | Baseline 1 finish | Total slack | Constraint |
| --- | --- | --- | --- | --- | --- | --- | --- | --- | --- |
| 235 | 1.11.2.1.130 | Time log 130 | 1d | 2011-09-28 | 2011-09-28 | 2011-09-28 | 2011-09-28 | 215d | start no earlier than 2010-02-03 |
| 236 | 1.11.2.1.131 | Time log 131 | 1d | 2011-09-28 | 2011-09-28 | 2011-09-28 | 2011-09-28 | 215d | start no earlier than 2010-02-04 |
| 237 | 1.11.2.1.132 | Time log 132 | 1d | 2011-09-28 | 2011-09-28 | 2011-09-28 | 2011-09-28 | 215d | start no earlier than 2010-02-05 |
| 238 | 1.11.2.1.133 | Time log 133 | 1d | 2011-09-28 | 2011-09-28 | 2011-09-28 | 2011-09-28 | 215d | start no earlier than 2010-02-06 |
| 239 | 1.11.2.1.134 | Time log 134 | 1d | 2011-09-28 | 2011-09-28 | 2011-09-28 | 2011-09-28 | 215d | start no earlier than 2010-02-07 |
| 240 | 1.11.2.1.135 | Time log 135 | 1d | 2011-09-28 | 2011-09-28 | 2011-09-28 | 2011-09-28 | 215d | start no earlier than 2010-02-08 |
| 241 | 1.11.2.1.136 | Time log 136 | 1d | 2011-09-28 | 2011-09-28 | 2011-09-28 | 2011-09-28 | 215d | start no earlier than 2010-02-09 |
| 242 | 1.11.2.1.137 | Time log 137 | 1d | 2011-09-28 | 2011-09-28 | 2011-09-28 | 2011-09-28 | 215d | start no earlier than 2010-02-10 |
| 243 | 1.11.2.1.138 | Time log 138 | 1d | 2011-09-28 | 2011-09-28 | 2011-09-28 | 2011-09-28 | 215d | start no earlier than 2010-02-11 |
| 244 | 1.11.2.1.139 | Time log 139 | 1d | 2011-09-28 | 2011-09-28 | 2011-09-28 | 2011-09-28 | 215d | start no earlier than 2010-02-12 |
| 245 | 1.11.2.1.140 | Time log 140 | 1d | 2011-09-28 | 2011-09-28 | 2011-09-28 | 2011-09-28 | 215d | start no earlier than 2010-02-13 |
| 246 | 1.11.2.1.141 | Time log 141 | 1d | 2011-09-28 | 2011-09-28 | 2011-09-28 | 2011-09-28 | 215d | start no earlier than 2010-02-14 |
| 247 | 1.11.2.1.142 | Time log 142 | 1d | 2011-09-28 | 2011-09-28 | 2011-09-28 | 2011-09-28 | 215d | start no earlier than 2010-02-15 |
| 248 | 1.11.2.1.143 | Time log 143 | 1d | 2011-09-28 | 2011-09-28 | 2011-09-28 | 2011-09-28 | 215d | start no earlier than 2010-02-16 |
| 249 | 1.11.2.1.144 | Time log 144 | 1d | 2011-09-28 | 2011-09-28 | 2011-09-28 | 2011-09-28 | 215d | start no earlier than 2010-02-17 |
| 250 | 1.11.2.1.145 | Time log 145 | 1d | 2011-09-28 | 2011-09-28 | 2011-09-28 | 2011-09-28 | 215d | start no earlier than 2010-02-18 |
| 251 | 1.11.2.1.146 | Time log 146 | 1d | 2011-09-28 | 2011-09-28 | 2011-09-28 | 2011-09-28 | 215d | start no earlier than 2010-02-19 |
| 252 | 1.11.2.1.147 | Time log 147 | 1d | 2011-09-28 | 2011-09-28 | 2011-09-28 | 2011-09-28 | 215d | start no earlier than 2010-02-20 |
| 253 | 1.11.2.1.148 | Time log 148 | 1d | 2011-09-28 | 2011-09-28 | 2011-09-28 | 2011-09-28 | 215d | start no earlier than 2010-02-21 |
| 254 | 1.11.2.1.149 | Time log 149 | 1d | 2011-09-28 | 2011-09-28 | 2011-09-28 | 2011-09-28 | 215d | start no earlier than 2010-02-22 |
| 255 | 1.11.2.1.150 | Time log 150 | 1d | 2011-09-28 | 2011-09-28 | 2011-09-28 | 2011-09-28 | 215d | start no earlier than 2010-02-23 |
| 256 | 1.11.2.1.151 | Time log 151 | 1d | 2011-09-28 | 2011-09-28 | 2011-09-28 | 2011-09-28 | 215d | start no earlier than 2010-02-24 |
| 257 | 1.11.2.1.152 | Time log 152 | 1d | 2011-09-28 | 2011-09-28 | 2011-09-28 | 2011-09-28 | 215d | start no earlier than 2010-02-25 |
| 258 | 1.11.2.1.153 | Time log 153 | 1d | 2011-09-28 | 2011-09-28 | 2011-09-28 | 2011-09-28 | 215d | start no earlier than 2010-02-26 |
| 259 | 1.11.2.1.154 | Time log 154 | 1d | 2011-09-28 | 2011-09-28 | 2011-09-28 | 2011-09-28 | 215d | start no earlier than 2010-02-27 |
| 260 | 1.11.2.1.155 | Time log 155 | 1d | 2011-09-28 | 2011-09-28 | 2011-09-28 | 2011-09-28 | 215d | start no earlier than 2010-02-28 |
| 261 | 1.11.2.1.156 | Time log 156 | 1d | 2011-09-28 | 2011-09-28 | 2011-09-28 | 2011-09-28 | 215d | start no earlier than 2010-03-01 |
| 262 | 1.11.2.1.157 | Time log 157 | 1d | 2011-09-28 | 2011-09-28 | 2011-09-28 | 2011-09-28 | 215d | start no earlier than 2010-03-02 |
| 263 | 1.11.2.1.158 | Time log 158 | 1d | 2011-09-28 | 2011-09-28 | 2011-09-28 | 2011-09-28 | 215d | start no earlier than 2010-03-03 |
| 264 | 1.11.2.1.159 | Time log 159 | 1d | 2011-09-28 | 2011-09-28 | 2011-09-28 | 2011-09-28 | 215d | start no earlier than 2010-03-04 |
| 265 | 1.11.2.1.160 | Time log 160 | 1d | 2011-09-28 | 2011-09-28 | 2011-09-28 | 2011-09-28 | 215d | start no earlier than 2010-03-05 |
| 266 | 1.11.2.1.161 | Time log 161 | 1d | 2011-09-28 | 2011-09-28 | 2011-09-28 | 2011-09-28 | 215d | start no earlier than 2010-03-06 |
| 267 | 1.11.2.1.162 | Time log 162 | 1d | 2011-09-28 | 2011-09-28 | 2011-09-28 | 2011-09-28 | 215d | start no earlier than 2010-03-07 |
| 268 | 1.11.2.1.163 | Time log 163 | 1d | 2011-09-28 | 2011-09-28 | 2011-09-28 | 2011-09-28 | 215d | start no earlier than 2010-03-08 |
| 269 | 1.11.2.1.164 | Time log 164 | 1d | 2011-09-28 | 2011-09-28 | 2011-09-28 | 2011-09-28 | 215d | start no earlier than 2010-03-09 |
| 270 | 1.11.2.1.165 | Time log 165 | 1d | 2011-09-28 | 2011-09-28 | 2011-09-28 | 2011-09-28 | 215d | start no earlier than 2010-03-10 |
| 271 | 1.11.2.1.166 | Time log 166 | 1d | 2011-09-28 | 2011-09-28 | 2011-09-28 | 2011-09-28 | 215d | start no earlier than 2010-03-11 |
| 272 | 1.11.2.1.167 | Time log 167 | 1d | 2011-09-28 | 2011-09-28 | 2011-09-28 | 2011-09-28 | 215d | start no earlier than 2010-03-12 |
| 273 | 1.11.2.1.168 | Time log 168 | 1d | 2011-09-28 | 2011-09-28 | 2011-09-28 | 2011-09-28 | 215d | start no earlier than 2010-03-13 |
| 274 | 1.11.2.1.169 | Time log 169 | 1d | 2011-09-28 | 2011-09-28 | 2011-09-28 | 2011-09-28 | 215d | start no earlier than 2010-03-14 |
| 275 | 1.11.2.1.170 | Time log 170 | 1d | 2011-09-28 | 2011-09-28 | 2011-09-28 | 2011-09-28 | 215d | start no earlier than 2010-03-15 |
| 276 | 1.11.2.1.171 | Time log 171 | 1d | 2011-09-28 | 2011-09-28 | 2011-09-28 | 2011-09-28 | 215d | start no earlier than 2010-03-16 |
| 277 | 1.11.2.1.172 | Time log 172 | 1d | 2011-09-28 | 2011-09-28 | 2011-09-28 | 2011-09-28 | 215d | start no earlier than 2010-03-17 |
| 278 | 1.11.2.1.173 | Time log 173 | 1d | 2011-09-28 | 2011-09-28 | 2011-09-28 | 2011-09-28 | 215d | start no earlier than 2010-03-18 |
| 279 | 1.11.2.1.174 | Time log 174 | 1d | 2011-09-28 | 2011-09-28 | 2011-09-28 | 2011-09-28 | 215d | start no earlier than 2010-03-19 |
| 280 | 1.11.2.1.175 | Time log 175 | 1d | 2011-09-28 | 2011-09-28 | 2011-09-28 | 2011-09-28 | 215d | start no earlier than 2010-03-20 |
| 281 | 1.11.2.1.176 | Time log 176 | 1d | 2011-09-28 | 2011-09-28 | 2011-09-28 | 2011-09-28 | 215d | start no earlier than 2010-03-21 |
| 282 | 1.11.2.1.177 | Time log 177 | 1d | 2011-09-28 | 2011-09-28 | 2011-09-28 | 2011-09-28 | 215d | start no earlier than 2010-03-22 |
| 283 | 1.11.2.1.178 | Time log 178 | 1d | 2011-09-28 | 2011-09-28 | 2011-09-28 | 2011-09-28 | 215d | start no earlier than 2010-03-23 |
| 284 | 1.11.2.1.179 | Time log 179 | 1d | 2011-09-28 | 2011-09-28 | 2011-09-28 | 2011-09-28 | 215d | start no earlier than 2010-03-24 |
| 285 | 1.11.2.1.180 | Time log 180 | 1d | 2011-09-28 | 2011-09-28 | 2011-09-28 | 2011-09-28 | 215d | start no earlier than 2010-03-25 |
| 286 | 1.11.2.1.181 | Time log 181 | 1d | 2011-09-28 | 2011-09-28 | 2011-09-28 | 2011-09-28 | 215d | start no earlier than 2010-03-26 |
| 287 | 1.11.2.1.182 | Time log 182 | 1d | 2011-09-28 | 2011-09-28 | 2011-09-28 | 2011-09-28 | 215d | start no earlier than 2010-03-27 |
| 288 | 1.11.2.1.183 | Time log 183 | 1d | 2011-09-28 | 2011-09-28 | 2011-09-28 | 2011-09-28 | 215d | start no earlier than 2010-03-28 |
| 289 | 1.11.2.1.184 | Time log 184 | 1d | 2011-09-28 | 2011-09-28 | 2011-09-28 | 2011-09-28 | 215d | start no earlier than 2010-03-29 |
| 290 | 1.11.2.1.185 | Time log 185 | 1d | 2011-09-28 | 2011-09-28 | 2011-09-28 | 2011-09-28 | 215d | start no earlier than 2010-03-30 |
| 291 | 1.11.2.1.186 | Time log 186 | 1d | 2011-09-28 | 2011-09-28 | 2011-09-28 | 2011-09-28 | 215d | start no earlier than 2010-03-31 |
| 292 | 1.11.2.1.187 | Time log 187 | 1d | 2011-09-28 | 2011-09-28 | 2011-09-28 | 2011-09-28 | 215d | start no earlier than 2010-04-01 |
| 293 | 1.11.2.1.188 | Time log 188 | 1d | 2011-09-28 | 2011-09-28 | 2011-09-28 | 2011-09-28 | 215d | start no earlier than 2010-04-02 |
| 294 | 1.11.2.1.189 | Time log 189 | 1d | 2011-09-28 | 2011-09-28 | 2011-09-28 | 2011-09-28 | 215d | start no earlier than 2010-04-03 |
| 295 | 1.11.2.1.190 | Time log 190 | 1d | 2011-09-28 | 2011-09-28 | 2011-09-28 | 2011-09-28 | 215d | start no earlier than 2010-04-04 |
| 296 | 1.11.2.1.191 | Time log 191 | 1d | 2011-09-28 | 2011-09-28 | 2011-09-28 | 2011-09-28 | 215d | start no earlier than 2010-04-05 |
| 297 | 1.11.2.1.192 | Time log 192 | 1d | 2011-09-28 | 2011-09-28 | 2011-09-28 | 2011-09-28 | 215d | start no earlier than 2010-04-06 |
| 298 | 1.11.2.1.193 | Time log 193 | 1d | 2011-09-28 | 2011-09-28 | 2011-09-28 | 2011-09-28 | 215d | start no earlier than 2010-04-07 |
| 299 | 1.11.2.1.194 | Time log 194 | 1d | 2011-09-28 | 2011-09-28 | 2011-09-28 | 2011-09-28 | 215d | start no earlier than 2010-04-08 |
| 300 | 1.11.2.1.195 | Time log 195 | 1d | 2011-09-28 | 2011-09-28 | 2011-09-28 | 2011-09-28 | 215d | start no earlier than 2010-04-09 |
| 301 | 1.11.2.1.196 | Time log 196 | 1d | 2011-09-28 | 2011-09-28 | 2011-09-28 | 2011-09-28 | 215d | start no earlier than 2010-04-10 |
| 302 | 1.11.2.1.197 | Time log 197 | 1d | 2011-09-28 | 2011-09-28 | 2011-09-28 | 2011-09-28 | 215d | start no earlier than 2010-04-11 |
| 303 | 1.11.2.1.198 | Time log 198 | 1d | 2011-09-28 | 2011-09-28 | 2011-09-28 | 2011-09-28 | 215d | start no earlier than 2010-04-12 |
| 304 | 1.11.2.1.199 | Time log 199 | 1d | 2011-09-28 | 2011-09-28 | 2011-09-28 | 2011-09-28 | 215d | start no earlier than 2010-04-13 |

| ID | WBS | Task | Duration | Start | Finish | Baseline 1 start | Baseline 1 finish | Total slack | Constraint |
| --- | --- | --- | --- | --- | --- | --- | --- | --- | --- |
| 305 | 1.11.2.1.200 | Time log 200 | 1d | 2011-09-28 | 2011-09-28 | 2011-09-28 | 2011-09-28 | 215d | start no earlier than 2010-04-14 |
| 306 | 1.11.2.1.201 | Time log 201 | 1d | 2011-09-28 | 2011-09-28 | 2011-09-28 | 2011-09-28 | 215d | start no earlier than 2010-04-15 |
| 307 | 1.11.2.1.202 | Time log 202 | 1d | 2011-09-28 | 2011-09-28 | 2011-09-28 | 2011-09-28 | 215d | start no earlier than 2010-04-16 |
| 308 | 1.11.2.1.203 | Time log 203 | 1d | 2011-09-28 | 2011-09-28 | 2011-09-28 | 2011-09-28 | 215d | start no earlier than 2010-04-17 |
| 309 | 1.11.2.1.204 | Time log 204 | 1d | 2011-09-28 | 2011-09-28 | 2011-09-28 | 2011-09-28 | 215d | start no earlier than 2010-04-18 |
| 310 | 1.11.2.1.205 | Time log 205 | 1d | 2011-09-28 | 2011-09-28 | 2011-09-28 | 2011-09-28 | 215d | start no earlier than 2010-04-19 |
| 311 | 1.11.2.1.206 | Time log 206 | 1d | 2011-09-28 | 2011-09-28 | 2011-09-28 | 2011-09-28 | 215d | start no earlier than 2010-04-20 |
| 312 | 1.11.2.1.207 | Time log 207 | 1d | 2011-09-28 | 2011-09-28 | 2011-09-28 | 2011-09-28 | 215d | start no earlier than 2010-04-21 |
| 313 | 1.11.2.1.208 | Time log 208 | 1d | 2011-09-28 | 2011-09-28 | 2011-09-28 | 2011-09-28 | 215d | start no earlier than 2010-04-22 |
| 314 | 1.11.2.1.209 | Time log 209 | 1d | 2011-09-28 | 2011-09-28 | 2011-09-28 | 2011-09-28 | 215d | start no earlier than 2010-04-23 |
| 315 | 1.11.2.1.210 | Time log 210 | 1d | 2011-09-28 | 2011-09-28 | 2011-09-28 | 2011-09-28 | 215d | start no earlier than 2010-04-24 |
| 316 | 1.11.2.1.211 | Time log 211 | 1d | 2011-09-28 | 2011-09-28 | 2011-09-28 | 2011-09-28 | 215d | start no earlier than 2010-04-25 |
| 317 | 1.11.2.1.212 | Time log 212 | 1d | 2011-09-28 | 2011-09-28 | 2011-09-28 | 2011-09-28 | 215d | start no earlier than 2010-04-26 |
| 318 | 1.11.2.1.213 | Time log 213 | 1d | 2011-09-28 | 2011-09-28 | 2011-09-28 | 2011-09-28 | 215d | start no earlier than 2010-04-27 |
| 319 | 1.11.2.1.214 | Time log 214 | 1d | 2011-09-28 | 2011-09-28 | 2011-09-28 | 2011-09-28 | 215d | start no earlier than 2010-04-28 |
| 320 | 1.11.2.1.215 | Time log 215 | 1d | 2011-09-28 | 2011-09-28 | 2011-09-28 | 2011-09-28 | 215d | start no earlier than 2010-04-29 |
| 321 | 1.11.2.1.216 | Time log 216 | 1d | 2011-09-28 | 2011-09-28 | 2011-09-28 | 2011-09-28 | 215d | start no earlier than 2010-04-30 |
| 322 | 1.11.2.1.217 | Time log 217 | 1d | 2011-09-28 | 2011-09-28 | 2011-09-28 | 2011-09-28 | 215d | start no earlier than 2010-05-01 |
| 323 | 1.11.2.1.218 | Time log 218 | 1d | 2011-09-28 | 2011-09-28 | 2011-09-28 | 2011-09-28 | 215d | start no earlier than 2010-05-02 |
| 324 | 1.11.2.1.219 | Time log 219 | 1d | 2011-09-28 | 2011-09-28 | 2011-09-28 | 2011-09-28 | 215d | start no earlier than 2010-05-03 |
| 325 | 1.11.2.1.220 | Time log 220 | 1d | 2011-09-28 | 2011-09-28 | 2011-09-28 | 2011-09-28 | 215d | start no earlier than 2010-05-04 |
| 326 | 1.11.2.1.221 | Time log 221 | 1d | 2011-09-28 | 2011-09-28 | 2011-09-28 | 2011-09-28 | 215d | start no earlier than 2010-05-05 |
| 327 | 1.11.2.1.222 | Time log 222 | 1d | 2011-09-28 | 2011-09-28 | 2011-09-28 | 2011-09-28 | 215d | start no earlier than 2010-05-06 |
| 328 | 1.11.2.1.223 | Time log 223 | 1d | 2011-09-28 | 2011-09-28 | 2011-09-28 | 2011-09-28 | 215d | start no earlier than 2010-05-07 |
| 329 | 1.11.2.1.224 | Time log 224 | 1d | 2011-09-28 | 2011-09-28 | 2011-09-28 | 2011-09-28 | 215d | start no earlier than 2010-05-08 |
| 330 | 1.11.2.1.225 | Time log 225 | 1d | 2011-09-28 | 2011-09-28 | 2011-09-28 | 2011-09-28 | 215d | start no earlier than 2010-05-09 |
| 331 | 1.11.2.1.226 | Time log 226 | 1d | 2011-09-28 | 2011-09-28 | 2011-09-28 | 2011-09-28 | 215d | start no earlier than 2010-05-10 |
| 332 | 1.11.2.1.227 | Time log 227 | 1d | 2011-09-28 | 2011-09-28 | 2011-09-28 | 2011-09-28 | 215d | start no earlier than 2010-05-11 |
| 333 | 1.11.2.1.228 | Time log 228 | 1d | 2011-09-28 | 2011-09-28 | 2011-09-28 | 2011-09-28 | 215d | start no earlier than 2010-05-12 |
| 334 | 1.11.2.1.229 | Time log 229 | 1d | 2011-09-28 | 2011-09-28 | 2011-09-28 | 2011-09-28 | 215d | start no earlier than 2010-05-13 |
| 335 | 1.11.2.1.230 | Time log 230 | 1d | 2011-09-28 | 2011-09-28 | 2011-09-28 | 2011-09-28 | 215d | start no earlier than 2010-05-14 |
| 336 | 1.11.2.1.231 | Time log 231 | 1d | 2011-09-28 | 2011-09-28 | 2011-09-28 | 2011-09-28 | 215d | start no earlier than 2010-05-15 |
| 337 | 1.11.2.1.232 | Time log 232 | 1d | 2011-09-28 | 2011-09-28 | 2011-09-28 | 2011-09-28 | 215d | start no earlier than 2010-05-16 |
| 338 | 1.11.2.1.233 | Time log 233 | 1d | 2011-09-28 | 2011-09-28 | 2011-09-28 | 2011-09-28 | 215d | start no earlier than 2010-05-17 |
| 339 | 1.11.2.1.234 | Time log 234 | 1d | 2011-09-28 | 2011-09-28 | 2011-09-28 | 2011-09-28 | 215d | start no earlier than 2010-05-18 |
| 340 | 1.11.2.1.235 | Time log 235 | 1d | 2011-09-28 | 2011-09-28 | 2011-09-28 | 2011-09-28 | 215d | start no earlier than 2010-05-19 |
| 341 | 1.11.2.1.236 | Time log 236 | 1d | 2011-09-28 | 2011-09-28 | 2011-09-28 | 2011-09-28 | 215d | start no earlier than 2010-05-20 |
| 342 | 1.11.2.1.237 | Time log 237 | 1d | 2011-09-28 | 2011-09-28 | 2011-09-28 | 2011-09-28 | 215d | start no earlier than 2010-05-21 |
| 343 | 1.11.2.1.238 | Time log 238 | 1d | 2011-09-28 | 2011-09-28 | 2011-09-28 | 2011-09-28 | 215d | start no earlier than 2010-05-22 |
| 344 | 1.11.2.1.239 | Time log 239 | 1d | 2011-09-28 | 2011-09-28 | 2011-09-28 | 2011-09-28 | 215d | start no earlier than 2010-05-23 |
| 345 | 1.11.2.1.240 | Time log 240 | 1d | 2011-09-28 | 2011-09-28 | 2011-09-28 | 2011-09-28 | 215d | start no earlier than 2010-05-24 |
| 346 | 1.11.2.1.241 | Time log 241 | 1d | 2011-09-28 | 2011-09-28 | 2011-09-28 | 2011-09-28 | 215d | start no earlier than 2010-05-25 |
| 347 | 1.11.2.1.242 | Time log 242 | 1d | 2011-09-28 | 2011-09-28 | 2011-09-28 | 2011-09-28 | 215d | start no earlier than 2010-05-26 |
| 348 | 1.11.2.1.243 | Time log 243 | 1d | 2011-09-28 | 2011-09-28 | 2011-09-28 | 2011-09-28 | 215d | start no earlier than 2010-05-27 |
| 349 | 1.11.2.1.244 | Time log 244 | 1d | 2011-09-28 | 2011-09-28 | 2011-09-28 | 2011-09-28 | 215d | start no earlier than 2010-05-28 |
| 350 | 1.11.2.1.245 | Time log 245 | 1d | 2011-09-28 | 2011-09-28 | 2011-09-28 | 2011-09-28 | 215d | start no earlier than 2010-05-29 |
| 351 | 1.11.2.1.246 | Time log 246 | 1d | 2011-09-28 | 2011-09-28 | 2011-09-28 | 2011-09-28 | 215d | start no earlier than 2010-05-30 |
| 352 | 1.11.2.1.247 | Time log 247 | 1d | 2011-09-28 | 2011-09-28 | 2011-09-28 | 2011-09-28 | 215d | start no earlier than 2010-05-31 |
| 353 | 1.11.2.1.248 | Time log 248 | 1d | 2011-09-28 | 2011-09-28 | 2011-09-28 | 2011-09-28 | 215d | start no earlier than 2010-06-01 |
| 354 | 1.11.2.1.249 | Time log 249 | 1d | 2011-09-28 | 2011-09-28 | 2011-09-28 | 2011-09-28 | 215d | start no earlier than 2010-06-02 |
| 355 | 1.11.2.1.250 | Time log 250 | 1d | 2011-09-28 | 2011-09-28 | 2011-09-28 | 2011-09-28 | 215d | start no earlier than 2010-06-03 |
| 356 | 1.11.2.1.251 | Time log 251 | 1d | 2011-09-28 | 2011-09-28 | 2011-09-28 | 2011-09-28 | 215d | start no earlier than 2010-06-04 |
| 357 | 1.11.2.1.252 | Time log 252 | 1d | 2011-09-28 | 2011-09-28 | 2011-09-28 | 2011-09-28 | 215d | start no earlier than 2010-06-05 |
| 358 | 1.11.2.1.253 | Time log 253 | 1d | 2011-09-28 | 2011-09-28 | 2011-09-28 | 2011-09-28 | 215d | start no earlier than 2010-06-06 |
| 359 | 1.11.2.1.254 | Time log 254 | 1d | 2011-09-28 | 2011-09-28 | 2011-09-28 | 2011-09-28 | 215d | start no earlier than 2010-06-07 |
| 360 | 1.11.2.1.255 | Time log 255 | 1d | 2011-09-28 | 2011-09-28 | 2011-09-28 | 2011-09-28 | 215d | start no earlier than 2010-06-08 |
| 361 | 1.11.2.1.256 | Time log 256 | 1d | 2011-09-28 | 2011-09-28 | 2011-09-28 | 2011-09-28 | 215d | start no earlier than 2010-06-09 |
| 362 | 1.11.2.1.257 | Time log 257 | 1d | 2011-09-28 | 2011-09-28 | 2011-09-28 | 2011-09-28 | 215d | start no earlier than 2010-06-10 |
| 363 | 1.11.2.1.258 | Time log 258 | 1d | 2011-09-28 | 2011-09-28 | 2011-09-28 | 2011-09-28 | 215d | start no earlier than 2010-06-11 |
| 364 | 1.11.2.1.259 | Time log 259 | 1d | 2011-09-28 | 2011-09-28 | 2011-09-28 | 2011-09-28 | 215d | start no earlier than 2010-06-12 |
| 365 | 1.11.2.1.260 | Time log 260 | 1d | 2011-09-28 | 2011-09-28 | 2011-09-28 | 2011-09-28 | 215d | start no earlier than 2010-06-13 |
| 366 | 1.11.2.1.261 | Time log 261 | 1d | 2011-09-28 | 2011-09-28 | 2011-09-28 | 2011-09-28 | 215d | start no earlier than 2010-06-14 |
| 367 | 1.11.2.1.262 | Time log 262 | 1d | 2011-09-28 | 2011-09-28 | 2011-09-28 | 2011-09-28 | 215d | start no earlier than 2010-06-15 |
| 368 | 1.11.2.1.263 | Time log 263 | 1d | 2011-09-28 | 2011-09-28 | 2011-09-28 | 2011-09-28 | 215d | start no earlier than 2010-06-16 |
| 369 | 1.11.2.1.264 | Time log 264 | 1d | 2011-09-28 | 2011-09-28 | 2011-09-28 | 2011-09-28 | 215d | start no earlier than 2010-06-17 |
| 370 | 1.11.2.1.265 | Time log 265 | 1d | 2011-09-28 | 2011-09-28 | 2011-09-28 | 2011-09-28 | 215d | start no earlier than 2010-06-18 |
| 371 | 1.11.2.1.266 | Time log 266 | 1d | 2011-09-28 | 2011-09-28 | 2011-09-28 | 2011-09-28 | 215d | start no earlier than 2010-06-19 |
| 372 | 1.11.2.1.267 | Time log 267 | 1d | 2011-09-28 | 2011-09-28 | 2011-09-28 | 2011-09-28 | 215d | start no earlier than 2010-06-20 |
| 373 | 1.11.2.1.268 | Time log 268 | 1d | 2011-09-28 | 2011-09-28 | 2011-09-28 | 2011-09-28 | 215d | start no earlier than 2010-06-21 |
| 374 | 1.11.2.1.269 | Time log 269 | 1d | 2011-09-28 | 2011-09-28 | 2011-09-28 | 2011-09-28 | 215d | start no earlier than 2010-06-22 |

| ID | WBS | Task | Duration | Start | Finish | Baseline 1 start | Baseline 1 finish | Total slack | Constraint |
| --- | --- | --- | --- | --- | --- | --- | --- | --- | --- |
| 375 | 1.11.2.1.270 | Time log 270 | 1d | 2011-09-28 | 2011-09-28 | 2011-09-28 | 2011-09-28 | 215d | start no earlier than 2010-06-23 |
| 376 | 1.11.2.1.271 | Time log 271 | 1d | 2011-09-28 | 2011-09-28 | 2011-09-28 | 2011-09-28 | 215d | start no earlier than 2010-06-24 |
| 377 | 1.11.2.1.272 | Time log 272 | 1d | 2011-09-28 | 2011-09-28 | 2011-09-28 | 2011-09-28 | 215d | start no earlier than 2010-06-25 |
| 378 | 1.11.2.1.273 | Time log 273 | 1d | 2011-09-28 | 2011-09-28 | 2011-09-28 | 2011-09-28 | 215d | start no earlier than 2010-06-26 |
| 379 | 1.11.2.1.274 | Time log 274 | 1d | 2011-09-28 | 2011-09-28 | 2011-09-28 | 2011-09-28 | 215d | start no earlier than 2010-06-27 |
| 380 | 1.11.2.1.275 | Time log 275 | 1d | 2011-09-28 | 2011-09-28 | 2011-09-28 | 2011-09-28 | 215d | start no earlier than 2010-06-28 |
| 381 | 1.11.2.1.276 | Time log 276 | 1d | 2011-09-28 | 2011-09-28 | 2011-09-28 | 2011-09-28 | 215d | start no earlier than 2010-06-29 |
| 382 | 1.11.2.1.277 | Time log 277 | 1d | 2011-09-28 | 2011-09-28 | 2011-09-28 | 2011-09-28 | 215d | start no earlier than 2010-06-30 |
| 383 | 1.11.2.1.278 | Time log 278 | 1d | 2011-09-28 | 2011-09-28 | 2011-09-28 | 2011-09-28 | 215d | start no earlier than 2010-07-01 |
| 384 | 1.11.2.1.279 | Time log 279 | 1d | 2011-09-28 | 2011-09-28 | 2011-09-28 | 2011-09-28 | 215d | start no earlier than 2010-07-02 |
| 385 | 1.11.2.1.280 | Time log 280 | 1d | 2011-09-28 | 2011-09-28 | 2011-09-28 | 2011-09-28 | 215d | start no earlier than 2010-07-03 |
| 386 | 1.11.2.1.281 | Time log 281 | 1d | 2011-09-28 | 2011-09-28 | 2011-09-28 | 2011-09-28 | 215d | start no earlier than 2010-07-04 |
| 387 | 1.11.2.1.282 | Time log 282 | 1d | 2011-09-28 | 2011-09-28 | 2011-09-28 | 2011-09-28 | 215d | start no earlier than 2010-07-05 |
| 388 | 1.11.2.1.283 | Time log 283 | 1d | 2011-09-28 | 2011-09-28 | 2011-09-28 | 2011-09-28 | 215d | start no earlier than 2010-07-06 |
| 389 | 1.11.2.1.284 | Time log 284 | 1d | 2011-09-28 | 2011-09-28 | 2011-09-28 | 2011-09-28 | 215d | start no earlier than 2010-07-07 |
| 390 | 1.11.2.1.285 | Time log 285 | 1d | 2011-09-28 | 2011-09-28 | 2011-09-28 | 2011-09-28 | 215d | start no earlier than 2010-07-08 |
| 391 | 1.11.2.1.286 | Time log 286 | 1d | 2011-09-28 | 2011-09-28 | 2011-09-28 | 2011-09-28 | 215d | start no earlier than 2010-07-09 |
| 392 | 1.11.2.1.287 | Time log 287 | 1d | 2011-09-28 | 2011-09-28 | 2011-09-28 | 2011-09-28 | 215d | start no earlier than 2010-07-10 |
| 393 | 1.11.2.1.288 | Time log 288 | 1d | 2011-09-28 | 2011-09-28 | 2011-09-28 | 2011-09-28 | 215d | start no earlier than 2010-07-11 |
| 394 | 1.11.2.1.289 | Time log 289 | 1d | 2011-09-28 | 2011-09-28 | 2011-09-28 | 2011-09-28 | 215d | start no earlier than 2010-07-12 |
| 395 | 1.11.2.1.290 | Time log 290 | 1d | 2011-09-28 | 2011-09-28 | 2011-09-28 | 2011-09-28 | 215d | start no earlier than 2010-07-13 |
| 396 | 1.11.2.1.291 | Time log 291 | 1d | 2011-09-28 | 2011-09-28 | 2011-09-28 | 2011-09-28 | 215d | start no earlier than 2010-07-14 |
| 397 | 1.11.2.1.292 | Time log 292 | 1d | 2011-09-28 | 2011-09-28 | 2011-09-28 | 2011-09-28 | 215d | start no earlier than 2010-07-15 |
| 398 | 1.11.2.1.293 | Time log 293 | 1d | 2011-09-28 | 2011-09-28 | 2011-09-28 | 2011-09-28 | 215d | start no earlier than 2010-07-16 |
| 399 | 1.11.2.1.294 | Time log 294 | 1d | 2011-09-28 | 2011-09-28 | 2011-09-28 | 2011-09-28 | 215d | start no earlier than 2010-07-17 |
| 400 | 1.11.2.1.295 | Time log 295 | 1d | 2011-09-28 | 2011-09-28 | 2011-09-28 | 2011-09-28 | 215d | start no earlier than 2010-07-18 |
| 401 | 1.11.2.1.296 | Time log 296 | 1d | 2011-09-28 | 2011-09-28 | 2011-09-28 | 2011-09-28 | 215d | start no earlier than 2010-07-19 |
| 402 | 1.11.2.1.297 | Time log 297 | 1d | 2011-09-28 | 2011-09-28 | 2011-09-28 | 2011-09-28 | 215d | start no earlier than 2010-07-20 |
| 403 | 1.11.2.1.298 | Time log 298 | 1d | 2011-09-28 | 2011-09-28 | 2011-09-28 | 2011-09-28 | 215d | start no earlier than 2010-07-21 |
| 404 | 1.11.2.1.299 | Time log 299 | 1d | 2011-09-28 | 2011-09-28 | 2011-09-28 | 2011-09-28 | 215d | start no earlier than 2010-07-22 |
| 405 | 1.11.2.1.300 | Time log 300 | 1d | 2011-09-28 | 2011-09-28 | 2011-09-28 | 2011-09-28 | 215d | start no earlier than 2010-07-23 |
| 406 | 1.11.2.1.301 | Time log 301 | 1d | 2011-09-28 | 2011-09-28 | 2011-09-28 | 2011-09-28 | 215d | start no earlier than 2010-07-24 |
| 407 | 1.11.2.1.302 | Time log 302 | 1d | 2011-09-28 | 2011-09-28 | 2011-09-28 | 2011-09-28 | 215d | start no earlier than 2010-07-25 |
| 408 | 1.11.2.1.303 | Time log 303 | 1d | 2011-09-28 | 2011-09-28 | 2011-09-28 | 2011-09-28 | 215d | start no earlier than 2010-07-26 |
| 409 | 1.11.2.1.304 | Time log 304 | 1d | 2011-09-28 | 2011-09-28 | 2011-09-28 | 2011-09-28 | 215d | start no earlier than 2010-07-27 |
| 410 | 1.11.2.1.305 | Time log 305 | 1d | 2011-09-28 | 2011-09-28 | 2011-09-28 | 2011-09-28 | 215d | start no earlier than 2010-07-28 |
| 411 | 1.11.2.1.306 | Time log 306 | 1d | 2011-09-28 | 2011-09-28 | 2011-09-28 | 2011-09-28 | 215d | start no earlier than 2010-07-29 |
| 412 | 1.11.2.1.307 | Time log 307 | 1d | 2011-09-28 | 2011-09-28 | 2011-09-28 | 2011-09-28 | 215d | start no earlier than 2010-07-30 |
| 413 | 1.11.2.1.308 | Time log 308 | 1d | 2011-09-28 | 2011-09-28 | 2011-09-28 | 2011-09-28 | 215d | start no earlier than 2010-07-31 |
| 414 | 1.11.2.1.309 | Time log 309 | 1d | 2011-09-28 | 2011-09-28 | 2011-09-28 | 2011-09-28 | 215d | start no earlier than 2010-08-01 |
| 415 | 1.11.2.1.310 | Time log 310 | 1d | 2011-09-28 | 2011-09-28 | 2011-09-28 | 2011-09-28 | 215d | start no earlier than 2010-08-02 |
| 416 | 1.11.2.1.311 | Time log 311 | 1d | 2011-09-28 | 2011-09-28 | 2011-09-28 | 2011-09-28 | 215d | start no earlier than 2010-08-03 |
| 417 | 1.11.2.1.312 | Time log 312 | 1d | 2011-09-28 | 2011-09-28 | 2011-09-28 | 2011-09-28 | 215d | start no earlier than 2010-08-04 |
| 418 | 1.11.2.1.313 | Time log 313 | 1d | 2011-09-28 | 2011-09-28 | 2011-09-28 | 2011-09-28 | 215d | start no earlier than 2010-08-05 |
| 419 | 1.11.2.1.314 | Time log 314 | 1d | 2011-09-28 | 2011-09-28 | 2011-09-28 | 2011-09-28 | 215d | start no earlier than 2010-08-06 |
| 420 | 1.11.2.1.315 | Time log 315 | 1d | 2011-09-28 | 2011-09-28 | 2011-09-28 | 2011-09-28 | 215d | start no earlier than 2010-08-07 |
| 421 | 1.11.2.1.316 | Time log 316 | 1d | 2011-09-28 | 2011-09-28 | 2011-09-28 | 2011-09-28 | 215d | start no earlier than 2010-08-08 |
| 422 | 1.11.2.1.317 | Time log 317 | 1d | 2011-09-28 | 2011-09-28 | 2011-09-28 | 2011-09-28 | 215d | start no earlier than 2010-08-09 |
| 423 | 1.11.2.1.318 | Time log 318 | 1d | 2011-09-28 | 2011-09-28 | 2011-09-28 | 2011-09-28 | 215d | start no earlier than 2010-08-10 |
| 424 | 1.11.2.1.319 | Time log 319 | 1d | 2011-09-28 | 2011-09-28 | 2011-09-28 | 2011-09-28 | 215d | start no earlier than 2010-08-11 |
| 425 | 1.11.2.1.320 | Time log 320 | 1d | 2011-09-28 | 2011-09-28 | 2011-09-28 | 2011-09-28 | 215d | start no earlier than 2010-08-12 |
| 426 | 1.11.2.1.321 | Time log 321 | 1d | 2011-09-28 | 2011-09-28 | 2011-09-28 | 2011-09-28 | 215d | start no earlier than 2010-08-13 |
| 427 | 1.11.2.1.322 | Time log 322 | 1d | 2011-09-28 | 2011-09-28 | 2011-09-28 | 2011-09-28 | 215d | start no earlier than 2010-08-14 |
| 428 | 1.11.2.1.323 | Time log 323 | 1d | 2011-09-28 | 2011-09-28 | 2011-09-28 | 2011-09-28 | 215d | start no earlier than 2010-08-15 |
| 429 | 1.11.2.1.324 | Time log 324 | 1d | 2011-09-28 | 2011-09-28 | 2011-09-28 | 2011-09-28 | 215d | start no earlier than 2010-08-16 |
| 430 | 1.11.2.1.325 | Time log 325 | 1d | 2011-09-28 | 2011-09-28 | 2011-09-28 | 2011-09-28 | 215d | start no earlier than 2010-08-17 |
| 431 | 1.11.2.1.326 | Time log 326 | 1d | 2011-09-28 | 2011-09-28 | 2011-09-28 | 2011-09-28 | 215d | start no earlier than 2010-08-18 |
| 432 | 1.11.2.1.327 | Time log 327 | 1d | 2011-09-28 | 2011-09-28 | 2011-09-28 | 2011-09-28 | 215d | start no earlier than 2010-08-19 |
| 433 | 1.11.2.1.328 | Time log 328 | 1d | 2011-09-28 | 2011-09-28 | 2011-09-28 | 2011-09-28 | 215d | start no earlier than 2010-08-20 |
| 434 | 1.11.2.1.329 | Time log 329 | 1d | 2011-09-28 | 2011-09-28 | 2011-09-28 | 2011-09-28 | 215d | start no earlier than 2010-08-21 |
| 435 | 1.11.2.1.330 | Time log 330 | 1d | 2011-09-28 | 2011-09-28 | 2011-09-28 | 2011-09-28 | 215d | start no earlier than 2010-08-22 |
| 436 | 1.11.2.1.331 | Time log 331 | 1d | 2011-09-28 | 2011-09-28 | 2011-09-28 | 2011-09-28 | 215d | start no earlier than 2010-08-23 |
| 437 | 1.11.2.1.332 | Time log 332 | 1d | 2011-09-28 | 2011-09-28 | 2011-09-28 | 2011-09-28 | 215d | start no earlier than 2010-08-24 |
| 438 | 1.11.2.1.333 | Time log 333 | 1d | 2011-09-28 | 2011-09-28 | 2011-09-28 | 2011-09-28 | 215d | start no earlier than 2010-08-25 |
| 439 | 1.11.2.1.334 | Time log 334 | 1d | 2011-09-28 | 2011-09-28 | 2011-09-28 | 2011-09-28 | 215d | start no earlier than 2010-08-26 |
| 440 | 1.11.2.1.335 | Time log 335 | 1d | 2011-09-28 | 2011-09-28 | 2011-09-28 | 2011-09-28 | 215d | start no earlier than 2010-08-27 |
| 441 | 1.11.2.1.336 | Time log 336 | 1d | 2011-09-28 | 2011-09-28 | 2011-09-28 | 2011-09-28 | 215d | start no earlier than 2010-08-28 |
| 442 | 1.11.2.1.337 | Time log 337 | 1d | 2011-09-28 | 2011-09-28 | 2011-09-28 | 2011-09-28 | 215d | start no earlier than 2010-08-29 |
| 443 | 1.11.2.1.338 | Time log 338 | 1d | 2011-09-28 | 2011-09-28 | 2011-09-28 | 2011-09-28 | 215d | start no earlier than 2010-08-30 |
| 444 | 1.11.2.1.339 | Time log 339 | 1d | 2011-09-28 | 2011-09-28 | 2011-09-28 | 2011-09-28 | 215d | start no earlier than 2010-08-31 |

| ID | WBS | Task | Duration | Start | Finish | Baseline 1 start | Baseline 1 finish | Total slack | Constraint |
| --- | --- | --- | --- | --- | --- | --- | --- | --- | --- |
| 445 | 1.11.2.1.340 | Time log 340 | 1d | 2011-09-28 | 2011-09-28 | 2011-09-28 | 2011-09-28 | 215d | start no earlier than 2010-09-01 |
| 446 | 1.11.2.1.341 | Time log 341 | 1d | 2011-09-28 | 2011-09-28 | 2011-09-28 | 2011-09-28 | 215d | start no earlier than 2010-09-02 |
| 447 | 1.11.2.1.342 | Time log 342 | 1d | 2011-09-28 | 2011-09-28 | 2011-09-28 | 2011-09-28 | 215d | start no earlier than 2010-09-03 |
| 448 | 1.11.2.1.343 | Time log 343 | 1d | 2011-09-28 | 2011-09-28 | 2011-09-28 | 2011-09-28 | 215d | start no earlier than 2010-09-04 |
| 449 | 1.11.2.1.344 | Time log 344 | 1d | 2011-09-28 | 2011-09-28 | 2011-09-28 | 2011-09-28 | 215d | start no earlier than 2010-09-05 |
| 450 | 1.11.2.1.345 | Time log 345 | 1d | 2011-09-28 | 2011-09-28 | 2011-09-28 | 2011-09-28 | 215d | start no earlier than 2010-09-06 |
| 451 | 1.11.2.1.346 | Time log 346 | 1d | 2011-09-28 | 2011-09-28 | 2011-09-28 | 2011-09-28 | 215d | start no earlier than 2010-09-07 |
| 452 | 1.11.2.1.347 | Time log 347 | 1d | 2011-09-28 | 2011-09-28 | 2011-09-28 | 2011-09-28 | 215d | start no earlier than 2010-09-08 |
| 453 | 1.11.2.1.348 | Time log 348 | 1d | 2011-09-28 | 2011-09-28 | 2011-09-28 | 2011-09-28 | 215d | start no earlier than 2010-09-09 |
| 454 | 1.11.2.1.349 | Time log 349 | 1d | 2011-09-28 | 2011-09-28 | 2011-09-28 | 2011-09-28 | 215d | start no earlier than 2010-09-10 |
| 455 | 1.11.2.1.350 | Time log 350 | 1d | 2011-09-28 | 2011-09-28 | 2011-09-28 | 2011-09-28 | 215d | start no earlier than 2010-09-11 |
| 456 | 1.11.2.1.351 | Time log 351 | 1d | 2011-09-28 | 2011-09-28 | 2011-09-28 | 2011-09-28 | 215d | start no earlier than 2010-09-12 |
| 457 | 1.11.2.1.352 | Time log 352 | 1d | 2011-09-28 | 2011-09-28 | 2011-09-28 | 2011-09-28 | 215d | start no earlier than 2010-09-13 |
| 458 | 1.11.2.1.353 | Time log 353 | 1d | 2011-09-28 | 2011-09-28 | 2011-09-28 | 2011-09-28 | 215d | start no earlier than 2010-09-14 |
| 459 | 1.11.2.1.354 | Time log 354 | 1d | 2011-09-28 | 2011-09-28 | 2011-09-28 | 2011-09-28 | 215d | start no earlier than 2010-09-15 |
| 460 | 1.11.2.1.355 | Time log 355 | 1d | 2011-09-28 | 2011-09-28 | 2011-09-28 | 2011-09-28 | 215d | start no earlier than 2010-09-16 |
| 461 | 1.11.2.1.356 | Time log 356 | 1d | 2011-09-28 | 2011-09-28 | 2011-09-28 | 2011-09-28 | 215d | start no earlier than 2010-09-17 |
| 462 | 1.11.2.1.357 | Time log 357 | 1d | 2011-09-28 | 2011-09-28 | 2011-09-28 | 2011-09-28 | 215d | start no earlier than 2010-09-18 |
| 463 | 1.11.2.1.358 | Time log 358 | 1d | 2011-09-28 | 2011-09-28 | 2011-09-28 | 2011-09-28 | 215d | start no earlier than 2010-09-19 |
| 464 | 1.11.2.1.359 | Time log 359 | 1d | 2011-09-28 | 2011-09-28 | 2011-09-28 | 2011-09-28 | 215d | start no earlier than 2010-09-20 |
| 465 | 1.11.2.1.360 | Time log 360 | 1d | 2011-09-28 | 2011-09-28 | 2011-09-28 | 2011-09-28 | 215d | start no earlier than 2010-09-21 |
| 466 | 1.11.2.1.361 | Time log 361 | 1d | 2011-09-28 | 2011-09-28 | 2011-09-28 | 2011-09-28 | 215d | start no earlier than 2010-09-22 |
| 467 | 1.11.2.1.362 | Time log 362 | 1d | 2011-09-28 | 2011-09-28 | 2011-09-28 | 2011-09-28 | 215d | start no earlier than 2010-09-23 |
| 468 | 1.11.2.1.363 | Time log 363 | 1d | 2011-09-28 | 2011-09-28 | 2011-09-28 | 2011-09-28 | 215d | start no earlier than 2010-09-24 |
| 469 | 1.11.2.1.364 | Time log 364 | 1d | 2011-09-28 | 2011-09-28 | 2011-09-28 | 2011-09-28 | 215d | start no earlier than 2010-09-25 |
| 470 | 1.11.2.1.365 | Time log 365 | 1d | 2011-09-28 | 2011-09-28 | 2011-09-28 | 2011-09-28 | 215d | start no earlier than 2010-09-26 |
| 471 | 1.11.2.1.366 | Time log 366 | 1d | 2011-09-28 | 2011-09-28 | 2011-09-28 | 2011-09-28 | 215d | start no earlier than 2010-09-27 |
| 472 | 1.11.2.1.367 | Time log 367 | 1d | 2011-09-28 | 2011-09-28 | 2011-09-28 | 2011-09-28 | 215d | start no earlier than 2010-09-28 |
| 473 | 1.11.2.1.368 | Time log 368 | 1d | 2011-09-28 | 2011-09-28 | 2011-09-28 | 2011-09-28 | 215d | start no earlier than 2010-09-29 |
| 474 | 1.11.2.1.369 | Time log 369 | 1d | 2011-09-28 | 2011-09-28 | 2011-09-28 | 2011-09-28 | 215d | start no earlier than 2010-09-30 |
| 475 | 1.11.2.1.370 | Time log 370 | 1d | 2011-09-28 | 2011-09-28 | 2011-09-28 | 2011-09-28 | 215d | start no earlier than 2010-10-01 |
| 476 | 1.11.2.1.371 | Time log 371 | 1d | 2011-09-28 | 2011-09-28 | 2011-09-28 | 2011-09-28 | 215d | start no earlier than 2010-10-02 |
| 477 | 1.11.2.1.372 | Time log 372 | 1d | 2011-09-28 | 2011-09-28 | 2011-09-28 | 2011-09-28 | 215d | start no earlier than 2010-10-03 |
| 478 | 1.11.2.1.373 | Time log 373 | 1d | 2011-09-28 | 2011-09-28 | 2011-09-28 | 2011-09-28 | 215d | start no earlier than 2010-10-04 |
| 479 | 1.11.2.1.374 | Time log 374 | 1d | 2011-09-28 | 2011-09-28 | 2011-09-28 | 2011-09-28 | 215d | start no earlier than 2010-10-05 |
| 480 | 1.11.2.1.375 | Time log 375 | 1d | 2011-09-28 | 2011-09-28 | 2011-09-28 | 2011-09-28 | 215d | start no earlier than 2010-10-06 |
| 481 | 1.11.2.1.376 | Time log 376 | 1d | 2011-09-28 | 2011-09-28 | 2011-09-28 | 2011-09-28 | 215d | start no earlier than 2010-10-07 |
| 482 | 1.11.2.1.377 | Time log 377 | 1d | 2011-09-28 | 2011-09-28 | 2011-09-28 | 2011-09-28 | 215d | start no earlier than 2010-10-08 |
| 483 | 1.11.2.1.378 | Time log 378 | 1d | 2011-09-28 | 2011-09-28 | 2011-09-28 | 2011-09-28 | 215d | start no earlier than 2010-10-09 |
| 484 | 1.11.2.1.379 | Time log 379 | 1d | 2011-09-28 | 2011-09-28 | 2011-09-28 | 2011-09-28 | 215d | start no earlier than 2010-10-10 |
| 485 | 1.11.2.1.380 | Time log 380 | 1d | 2011-09-28 | 2011-09-28 | 2011-09-28 | 2011-09-28 | 215d | start no earlier than 2010-10-11 |
| 486 | 1.11.2.1.381 | Time log 381 | 1d | 2011-09-28 | 2011-09-28 | 2011-09-28 | 2011-09-28 | 215d | start no earlier than 2010-10-12 |
| 487 | 1.11.2.1.382 | Time log 382 | 1d | 2011-09-28 | 2011-09-28 | 2011-09-28 | 2011-09-28 | 215d | start no earlier than 2010-10-13 |
| 488 | 1.11.2.1.383 | Time log 383 | 1d | 2011-09-28 | 2011-09-28 | 2011-09-28 | 2011-09-28 | 215d | start no earlier than 2010-10-14 |
| 489 | 1.11.2.1.384 | Time log 384 | 1d | 2011-09-28 | 2011-09-28 | 2011-09-28 | 2011-09-28 | 215d | start no earlier than 2010-10-15 |
| 490 | 1.11.2.1.385 | Time log 385 | 1d | 2011-09-28 | 2011-09-28 | 2011-09-28 | 2011-09-28 | 215d | start no earlier than 2010-10-16 |
| 491 | 1.11.2.1.386 | Time log 386 | 1d | 2011-09-28 | 2011-09-28 | 2011-09-28 | 2011-09-28 | 215d | start no earlier than 2010-10-17 |
| 492 | 1.11.2.1.387 | Time log 387 | 1d | 2011-09-28 | 2011-09-28 | 2011-09-28 | 2011-09-28 | 215d | start no earlier than 2010-10-18 |
| 493 | 1.11.2.1.388 | Time log 388 | 1d | 2011-09-28 | 2011-09-28 | 2011-09-28 | 2011-09-28 | 215d | start no earlier than 2010-10-19 |
| 494 | 1.11.2.1.389 | Time log 389 | 1d | 2011-09-28 | 2011-09-28 | 2011-09-28 | 2011-09-28 | 215d | start no earlier than 2010-10-20 |
| 495 | 1.11.2.1.390 | Time log 390 | 1d | 2011-09-28 | 2011-09-28 | 2011-09-28 | 2011-09-28 | 215d | start no earlier than 2010-10-21 |
| 496 | 1.11.2.1.391 | Time log 391 | 1d | 2011-09-28 | 2011-09-28 | 2011-09-28 | 2011-09-28 | 215d | start no earlier than 2010-10-22 |
| 497 | 1.11.2.1.392 | Time log 392 | 1d | 2011-09-28 | 2011-09-28 | 2011-09-28 | 2011-09-28 | 215d | start no earlier than 2010-10-23 |
| 498 | 1.11.2.1.393 | Time log 393 | 1d | 2011-09-28 | 2011-09-28 | 2011-09-28 | 2011-09-28 | 215d | start no earlier than 2010-10-24 |
| 499 | 1.11.2.1.394 | Time log 394 | 1d | 2011-09-28 | 2011-09-28 | 2011-09-28 | 2011-09-28 | 215d | start no earlier than 2010-10-25 |
| 500 | 1.11.2.1.395 | Time log 395 | 1d | 2011-09-28 | 2011-09-28 | 2011-09-28 | 2011-09-28 | 215d | start no earlier than 2010-10-26 |
| 501 | 1.11.2.1.396 | Time log 396 | 1d | 2011-09-28 | 2011-09-28 | 2011-09-28 | 2011-09-28 | 215d | start no earlier than 2010-10-27 |
| 502 | 1.11.2.1.397 | Time log 397 | 1d | 2011-09-28 | 2011-09-28 | 2011-09-28 | 2011-09-28 | 215d | start no earlier than 2010-10-28 |
| 503 | 1.11.2.1.398 | Time log 398 | 1d | 2011-09-28 | 2011-09-28 | 2011-09-28 | 2011-09-28 | 215d | start no earlier than 2010-10-29 |
| 504 | 1.11.2.1.399 | Time log 399 | 1d | 2011-09-28 | 2011-09-28 | 2011-09-28 | 2011-09-28 | 215d | start no earlier than 2010-10-30 |
| 505 | 1.11.2.1.400 | Time log 400 | 1d | 2011-09-28 | 2011-09-28 | 2011-09-28 | 2011-09-28 | 215d | start no earlier than 2010-10-31 |
| 506 | 1.11.2.1.401 | Time log 401 | 1d | 2011-09-28 | 2011-09-28 | 2011-09-28 | 2011-09-28 | 215d | start no earlier than 2010-11-01 |
| 507 | 1.11.2.1.402 | Time log 402 | 1d | 2011-09-28 | 2011-09-28 | 2011-09-28 | 2011-09-28 | 215d | start no earlier than 2010-11-02 |
| 508 | 1.11.2.1.403 | Time log 403 | 1d | 2011-09-28 | 2011-09-28 | 2011-09-28 | 2011-09-28 | 215d | start no earlier than 2010-11-03 |
| 509 | 1.11.2.1.404 | Time log 404 | 1d | 2011-09-28 | 2011-09-28 | 2011-09-28 | 2011-09-28 | 215d | start no earlier than 2010-11-04 |
| 510 | 1.11.2.1.405 | Time log 405 | 1d | 2011-09-28 | 2011-09-28 | 2011-09-28 | 2011-09-28 | 215d | start no earlier than 2010-11-05 |
| 511 | 1.11.2.1.406 | Time log 406 | 1d | 2011-09-28 | 2011-09-28 | 2011-09-28 | 2011-09-28 | 215d | start no earlier than 2010-11-06 |
| 512 | 1.11.2.1.407 | Time log 407 | 1d | 2011-09-28 | 2011-09-28 | 2011-09-28 | 2011-09-28 | 215d | start no earlier than 2010-11-07 |
| 513 | 1.11.2.1.408 | Time log 408 | 1d | 2011-09-28 | 2011-09-28 | 2011-09-28 | 2011-09-28 | 215d | start no earlier than 2010-11-08 |
| 514 | 1.11.2.1.409 | Time log 409 | 1d | 2011-09-28 | 2011-09-28 | 2011-09-28 | 2011-09-28 | 215d | start no earlier than 2010-11-09 |

| ID | WBS | Task | Duration | Start | Finish | Baseline 1 start | Baseline 1 finish | Total slack | Constraint |
| --- | --- | --- | --- | --- | --- | --- | --- | --- | --- |
| 515 | 1.11.2.1.410 | Time log 410 | 1d | 2011-09-28 | 2011-09-28 | 2011-09-28 | 2011-09-28 | 215d | start no earlier than 2010-11-10 |
| 516 | 1.11.2.1.411 | Time log 411 | 1d | 2011-09-28 | 2011-09-28 | 2011-09-28 | 2011-09-28 | 215d | start no earlier than 2010-11-11 |
| 517 | 1.11.2.1.412 | Time log 412 | 1d | 2011-09-28 | 2011-09-28 | 2011-09-28 | 2011-09-28 | 215d | start no earlier than 2010-11-12 |
| 518 | 1.11.2.1.413 | Time log 413 | 1d | 2011-09-28 | 2011-09-28 | 2011-09-28 | 2011-09-28 | 215d | start no earlier than 2010-11-13 |
| 519 | 1.11.2.1.414 | Time log 414 | 1d | 2011-09-28 | 2011-09-28 | 2011-09-28 | 2011-09-28 | 215d | start no earlier than 2010-11-14 |
| 520 | 1.11.2.1.415 | Time log 415 | 1d | 2011-09-28 | 2011-09-28 | 2011-09-28 | 2011-09-28 | 215d | start no earlier than 2010-11-15 |
| 521 | 1.11.2.1.416 | Time log 416 | 1d | 2011-09-28 | 2011-09-28 | 2011-09-28 | 2011-09-28 | 215d | start no earlier than 2010-11-16 |
| 522 | 1.11.2.1.417 | Time log 417 | 1d | 2011-09-28 | 2011-09-28 | 2011-09-28 | 2011-09-28 | 215d | start no earlier than 2010-11-17 |
| 523 | 1.11.2.1.418 | Time log 418 | 1d | 2011-09-28 | 2011-09-28 | 2011-09-28 | 2011-09-28 | 215d | start no earlier than 2010-11-18 |
| 524 | 1.11.2.1.419 | Time log 419 | 1d | 2011-09-28 | 2011-09-28 | 2011-09-28 | 2011-09-28 | 215d | start no earlier than 2010-11-19 |
| 525 | 1.11.2.1.420 | Time log 420 | 1d | 2011-09-28 | 2011-09-28 | 2011-09-28 | 2011-09-28 | 215d | start no earlier than 2010-11-20 |
| 526 | 1.11.2.1.421 | Time log 421 | 1d | 2011-09-28 | 2011-09-28 | 2011-09-28 | 2011-09-28 | 215d | start no earlier than 2010-11-21 |
| 527 | 1.11.2.1.422 | Time log 422 | 1d | 2011-09-28 | 2011-09-28 | 2011-09-28 | 2011-09-28 | 215d | start no earlier than 2010-11-22 |
| 528 | 1.11.2.1.423 | Time log 423 | 1d | 2011-09-28 | 2011-09-28 | 2011-09-28 | 2011-09-28 | 215d | start no earlier than 2010-11-23 |
| 529 | 1.11.2.1.424 | Time log 424 | 1d | 2011-09-28 | 2011-09-28 | 2011-09-28 | 2011-09-28 | 215d | start no earlier than 2010-11-24 |
| 530 | 1.11.2.1.425 | Time log 425 | 1d | 2011-09-28 | 2011-09-28 | 2011-09-28 | 2011-09-28 | 215d | start no earlier than 2010-11-25 |
| 531 | 1.11.2.1.426 | Time log 426 | 1d | 2011-09-28 | 2011-09-28 | 2011-09-28 | 2011-09-28 | 215d | start no earlier than 2010-11-26 |
| 532 | 1.11.2.1.427 | Time log 427 | 1d | 2011-09-28 | 2011-09-28 | 2011-09-28 | 2011-09-28 | 215d | start no earlier than 2010-11-27 |
| 533 | 1.11.2.1.428 | Time log 428 | 1d | 2011-09-28 | 2011-09-28 | 2011-09-28 | 2011-09-28 | 215d | start no earlier than 2010-11-28 |
| 534 | 1.11.2.1.429 | Time log 429 | 1d | 2011-09-28 | 2011-09-28 | 2011-09-28 | 2011-09-28 | 215d | start no earlier than 2010-11-29 |
| 535 | 1.11.2.1.430 | Time log 430 | 1d | 2011-09-28 | 2011-09-28 | 2011-09-28 | 2011-09-28 | 215d | start no earlier than 2010-11-30 |
| 536 | 1.11.2.1.431 | Time log 431 | 1d | 2011-09-28 | 2011-09-28 | 2011-09-28 | 2011-09-28 | 215d | start no earlier than 2010-12-01 |
| 537 | 1.11.2.1.432 | Time log 432 | 1d | 2011-09-28 | 2011-09-28 | 2011-09-28 | 2011-09-28 | 215d | start no earlier than 2010-12-02 |
| 538 | 1.11.2.1.433 | Time log 433 | 1d | 2011-09-28 | 2011-09-28 | 2011-09-28 | 2011-09-28 | 215d | start no earlier than 2010-12-03 |
| 539 | 1.11.2.1.434 | Time log 434 | 1d | 2011-09-28 | 2011-09-28 | 2011-09-28 | 2011-09-28 | 215d | start no earlier than 2010-12-04 |
| 540 | 1.11.2.1.435 | Time log 435 | 1d | 2011-09-28 | 2011-09-28 | 2011-09-28 | 2011-09-28 | 215d | start no earlier than 2010-12-05 |
| 541 | 1.11.2.1.436 | Time log 436 | 1d | 2011-09-28 | 2011-09-28 | 2011-09-28 | 2011-09-28 | 215d | start no earlier than 2010-12-06 |
| 542 | 1.11.2.1.437 | Time log 437 | 1d | 2011-09-28 | 2011-09-28 | 2011-09-28 | 2011-09-28 | 215d | start no earlier than 2010-12-07 |
| 543 | 1.11.2.1.438 | Time log 438 | 1d | 2011-09-28 | 2011-09-28 | 2011-09-28 | 2011-09-28 | 215d | start no earlier than 2010-12-08 |
| 544 | 1.11.2.1.439 | Time log 439 | 1d | 2011-09-28 | 2011-09-28 | 2011-09-28 | 2011-09-28 | 215d | start no earlier than 2010-12-09 |
| 545 | 1.11.2.1.440 | Time log 440 | 1d | 2011-09-28 | 2011-09-28 | 2011-09-28 | 2011-09-28 | 215d | start no earlier than 2010-12-10 |
| 546 | 1.11.2.1.441 | Time log 441 | 1d | 2011-09-28 | 2011-09-28 | 2011-09-28 | 2011-09-28 | 215d | start no earlier than 2010-12-11 |
| 547 | 1.11.2.1.442 | Time log 442 | 1d | 2011-09-28 | 2011-09-28 | 2011-09-28 | 2011-09-28 | 215d | start no earlier than 2010-12-12 |
| 548 | 1.11.2.1.443 | Time log 443 | 1d | 2011-09-28 | 2011-09-28 | 2011-09-28 | 2011-09-28 | 215d | start no earlier than 2010-12-13 |
| 549 | 1.11.2.1.444 | Time log 444 | 1d | 2011-09-28 | 2011-09-28 | 2011-09-28 | 2011-09-28 | 215d | start no earlier than 2010-12-14 |
| 550 | 1.11.2.1.445 | Time log 445 | 1d | 2011-09-28 | 2011-09-28 | 2011-09-28 | 2011-09-28 | 215d | start no earlier than 2010-12-15 |
| 551 | 1.11.2.1.446 | Time log 446 | 1d | 2011-09-28 | 2011-09-28 | 2011-09-28 | 2011-09-28 | 215d | start no earlier than 2010-12-16 |
| 552 | 1.11.2.1.447 | Time log 447 | 1d | 2011-09-28 | 2011-09-28 | 2011-09-28 | 2011-09-28 | 215d | start no earlier than 2010-12-17 |
| 553 | 1.11.2.1.448 | Time log 448 | 1d | 2011-09-28 | 2011-09-28 | 2011-09-28 | 2011-09-28 | 215d | start no earlier than 2010-12-18 |
| 554 | 1.11.2.1.449 | Time log 449 | 1d | 2011-09-28 | 2011-09-28 | 2011-09-28 | 2011-09-28 | 215d | start no earlier than 2010-12-19 |
| 555 | 1.11.2.1.450 | Time log 450 | 1d | 2011-09-28 | 2011-09-28 | 2011-09-28 | 2011-09-28 | 215d | start no earlier than 2010-12-20 |
| 556 | 1.11.2.1.451 | Time log 451 | 1d | 2011-09-28 | 2011-09-28 | 2011-09-28 | 2011-09-28 | 215d | start no earlier than 2010-12-21 |
| 557 | 1.11.2.1.452 | Time log 452 | 1d | 2011-09-28 | 2011-09-28 | 2011-09-28 | 2011-09-28 | 215d | start no earlier than 2010-12-22 |
| 558 | 1.11.2.1.453 | Time log 453 | 1d | 2011-09-28 | 2011-09-28 | 2011-09-28 | 2011-09-28 | 215d | start no earlier than 2010-12-23 |
| 559 | 1.11.2.1.454 | Time log 454 | 1d | 2011-09-28 | 2011-09-28 | 2011-09-28 | 2011-09-28 | 215d | start no earlier than 2010-12-24 |
| 560 | 1.11.2.1.455 | Time log 455 | 1d | 2011-09-28 | 2011-09-28 | 2011-09-28 | 2011-09-28 | 215d | start no earlier than 2010-12-25 |
| 561 | 1.11.2.1.456 | Time log 456 | 1d | 2011-09-28 | 2011-09-28 | 2011-09-28 | 2011-09-28 | 215d | start no earlier than 2010-12-26 |
| 562 | 1.11.2.1.457 | Time log 457 | 1d | 2011-09-28 | 2011-09-28 | 2011-09-28 | 2011-09-28 | 215d | start no earlier than 2010-12-27 |
| 563 | 1.11.2.1.458 | Time log 458 | 1d | 2011-09-28 | 2011-09-28 | 2011-09-28 | 2011-09-28 | 215d | start no earlier than 2010-12-28 |
| 564 | 1.11.2.1.459 | Time log 459 | 1d | 2011-09-28 | 2011-09-28 | 2011-09-28 | 2011-09-28 | 215d | start no earlier than 2010-12-29 |
| 565 | 1.11.2.1.460 | Time log 460 | 1d | 2011-09-28 | 2011-09-28 | 2011-09-28 | 2011-09-28 | 215d | start no earlier than 2010-12-30 |
| 566 | 1.11.2.1.461 | Time log 461 | 1d | 2011-09-28 | 2011-09-28 | 2011-09-28 | 2011-09-28 | 215d | start no earlier than 2010-12-31 |
| 567 | 1.11.2.1.462 | Time log 462 | 1d | 2011-09-28 | 2011-09-28 | 2011-09-28 | 2011-09-28 | 215d | start no earlier than 2011-01-01 |
| 568 | 1.11.2.1.463 | Time log 463 | 1d | 2011-09-28 | 2011-09-28 | 2011-09-28 | 2011-09-28 | 215d | start no earlier than 2011-01-02 |
| 569 | 1.11.2.1.464 | Time log 464 | 1d | 2011-09-28 | 2011-09-28 | 2011-09-28 | 2011-09-28 | 215d | start no earlier than 2011-01-03 |
| 570 | 1.11.2.1.465 | Time log 465 | 1d | 2011-09-28 | 2011-09-28 | 2011-09-28 | 2011-09-28 | 215d | start no earlier than 2011-01-04 |
| 571 | 1.11.2.1.466 | Time log 466 | 1d | 2011-09-28 | 2011-09-28 | 2011-09-28 | 2011-09-28 | 215d | start no earlier than 2011-01-05 |
| 572 | 1.11.2.1.467 | Time log 467 | 1d | 2011-09-28 | 2011-09-28 | 2011-09-28 | 2011-09-28 | 215d | start no earlier than 2011-01-06 |
| 573 | 1.11.2.1.468 | Time log 468 | 1d | 2011-09-28 | 2011-09-28 | 2011-09-28 | 2011-09-28 | 215d | start no earlier than 2011-01-07 |
| 574 | 1.11.2.1.469 | Time log 469 | 1d | 2011-09-28 | 2011-09-28 | 2011-09-28 | 2011-09-28 | 215d | start no earlier than 2011-01-08 |
| 575 | 1.11.2.1.470 | Time log 470 | 1d | 2011-09-28 | 2011-09-28 | 2011-09-28 | 2011-09-28 | 215d | start no earlier than 2011-01-09 |
| 576 | 1.11.2.1.471 | Time log 471 | 1d | 2011-09-28 | 2011-09-28 | 2011-09-28 | 2011-09-28 | 215d | start no earlier than 2011-01-10 |
| 577 | 1.11.2.1.472 | Time log 472 | 1d | 2011-09-28 | 2011-09-28 | 2011-09-28 | 2011-09-28 | 215d | start no earlier than 2011-01-11 |
| 578 | 1.11.2.1.473 | Time log 473 | 1d | 2011-09-28 | 2011-09-28 | 2011-09-28 | 2011-09-28 | 215d | start no earlier than 2011-01-12 |
| 579 | 1.11.2.1.474 | Time log 474 | 1d | 2011-09-28 | 2011-09-28 | 2011-09-28 | 2011-09-28 | 215d | start no earlier than 2011-01-13 |
| 580 | 1.11.2.1.475 | Time log 475 | 1d | 2011-09-28 | 2011-09-28 | 2011-09-28 | 2011-09-28 | 215d | start no earlier than 2011-01-14 |
| 581 | 1.11.2.1.476 | Time log 476 | 1d | 2011-09-28 | 2011-09-28 | 2011-09-28 | 2011-09-28 | 215d | start no earlier than 2011-01-15 |
| 582 | 1.11.2.1.477 | Time log 477 | 1d | 2011-09-28 | 2011-09-28 | 2011-09-28 | 2011-09-28 | 215d | start no earlier than 2011-01-16 |
| 583 | 1.11.2.1.478 | Time log 478 | 1d | 2011-09-28 | 2011-09-28 | 2011-09-28 | 2011-09-28 | 215d | start no earlier than 2011-01-17 |
| 584 | 1.11.2.1.479 | Time log 479 | 1d | 2011-09-28 | 2011-09-28 | 2011-09-28 | 2011-09-28 | 215d | start no earlier than 2011-01-18 |

| ID | WBS | Task | Duration | Start | Finish | Baseline 1 start | Baseline 1 finish | Total slack | Constraint |
| --- | --- | --- | --- | --- | --- | --- | --- | --- | --- |
| 585 | 1.11.2.1.480 | Time log 480 | 1d | 2011-09-28 | 2011-09-28 | 2011-09-28 | 2011-09-28 | 215d | start no earlier than 2011-01-19 |
| 586 | 1.11.2.1.481 | Time log 481 | 1d | 2011-09-28 | 2011-09-28 | 2011-09-28 | 2011-09-28 | 215d | start no earlier than 2011-01-20 |
| 587 | 1.11.2.1.482 | Time log 482 | 1d | 2011-09-28 | 2011-09-28 | 2011-09-28 | 2011-09-28 | 215d | start no earlier than 2011-01-21 |
| 588 | 1.11.2.1.483 | Time log 483 | 1d | 2011-09-28 | 2011-09-28 | 2011-09-28 | 2011-09-28 | 215d | start no earlier than 2011-01-22 |
| 589 | 1.11.2.1.484 | Time log 484 | 1d | 2011-09-28 | 2011-09-28 | 2011-09-28 | 2011-09-28 | 215d | start no earlier than 2011-01-23 |
| 590 | 1.11.2.1.485 | Time log 485 | 1d | 2011-09-28 | 2011-09-28 | 2011-09-28 | 2011-09-28 | 215d | start no earlier than 2011-01-24 |
| 591 | 1.11.2.1.486 | Time log 486 | 1d | 2011-09-28 | 2011-09-28 | 2011-09-28 | 2011-09-28 | 215d | start no earlier than 2011-01-25 |
| 592 | 1.11.2.1.487 | Time log 487 | 1d | 2011-09-28 | 2011-09-28 | 2011-09-28 | 2011-09-28 | 215d | start no earlier than 2011-01-26 |
| 593 | 1.11.2.1.488 | Time log 488 | 1d | 2011-09-28 | 2011-09-28 | 2011-09-28 | 2011-09-28 | 215d | start no earlier than 2011-01-27 |
| 594 | 1.11.2.1.489 | Time log 489 | 1d | 2011-09-28 | 2011-09-28 | 2011-09-28 | 2011-09-28 | 215d | start no earlier than 2011-01-28 |
| 595 | 1.11.2.1.490 | Time log 490 | 1d | 2011-09-28 | 2011-09-28 | 2011-09-28 | 2011-09-28 | 215d | start no earlier than 2011-01-29 |
| 596 | 1.11.2.1.491 | Time log 491 | 1d | 2011-09-28 | 2011-09-28 | 2011-09-28 | 2011-09-28 | 215d | start no earlier than 2011-01-30 |
| 597 | 1.11.2.1.492 | Time log 492 | 1d | 2011-09-28 | 2011-09-28 | 2011-09-28 | 2011-09-28 | 215d | start no earlier than 2011-01-31 |
| 598 | 1.11.2.1.493 | Time log 493 | 1d | 2011-09-28 | 2011-09-28 | 2011-09-28 | 2011-09-28 | 215d | start no earlier than 2011-02-01 |
| 599 | 1.11.2.1.494 | Time log 494 | 1d | 2011-09-28 | 2011-09-28 | 2011-09-28 | 2011-09-28 | 215d | start no earlier than 2011-02-02 |
| 600 | 1.11.2.1.495 | Time log 495 | 1d | 2011-09-28 | 2011-09-28 | 2011-09-28 | 2011-09-28 | 215d | start no earlier than 2011-02-03 |
| 601 | 1.11.2.1.496 | Time log 496 | 1d | 2011-09-28 | 2011-09-28 | 2011-09-28 | 2011-09-28 | 215d | start no earlier than 2011-02-04 |
| 602 | 1.11.2.1.497 | Time log 497 | 1d | 2011-09-28 | 2011-09-28 | 2011-09-28 | 2011-09-28 | 215d | start no earlier than 2011-02-05 |
| 603 | 1.11.2.1.498 | Time log 498 | 1d | 2011-09-28 | 2011-09-28 | 2011-09-28 | 2011-09-28 | 215d | start no earlier than 2011-02-06 |
| 604 | 1.11.2.1.499 | Time log 499 | 1d | 2011-09-28 | 2011-09-28 | 2011-09-28 | 2011-09-28 | 215d | start no earlier than 2011-02-07 |
| 605 | 1.11.2.1.500 | Time log 500 | 1d | 2011-09-28 | 2011-09-28 | 2011-09-28 | 2011-09-28 | 215d | start no earlier than 2011-02-08 |
| 606 | 1.11.2.1.501 | Time log 501 | 1d | 2011-09-28 | 2011-09-28 | 2011-09-28 | 2011-09-28 | 215d | start no earlier than 2011-02-09 |
| 607 | 1.11.2.1.502 | Time log 502 | 1d | 2011-09-28 | 2011-09-28 | 2011-09-28 | 2011-09-28 | 215d | start no earlier than 2011-02-10 |
| 608 | 1.11.2.1.503 | Time log 503 | 1d | 2011-09-28 | 2011-09-28 | 2011-09-28 | 2011-09-28 | 215d | start no earlier than 2011-02-11 |
| 609 | 1.11.2.1.504 | Time log 504 | 1d | 2011-09-28 | 2011-09-28 | 2011-09-28 | 2011-09-28 | 215d | start no earlier than 2011-02-12 |
| 610 | 1.11.2.1.505 | Time log 505 | 1d | 2011-09-28 | 2011-09-28 | 2011-09-28 | 2011-09-28 | 215d | start no earlier than 2011-02-13 |
| 611 | 1.11.2.1.506 | Time log 506 | 1d | 2011-09-28 | 2011-09-28 | 2011-09-28 | 2011-09-28 | 215d | start no earlier than 2011-02-14 |
| 612 | 1.11.2.1.507 | Time log 507 | 1d | 2011-09-28 | 2011-09-28 | 2011-09-28 | 2011-09-28 | 215d | start no earlier than 2011-02-15 |
| 613 | 1.11.2.1.508 | Time log 508 | 1d | 2011-09-28 | 2011-09-28 | 2011-09-28 | 2011-09-28 | 215d | start no earlier than 2011-02-16 |
| 614 | 1.11.2.1.509 | Time log 509 | 1d | 2011-09-28 | 2011-09-28 | 2011-09-28 | 2011-09-28 | 215d | start no earlier than 2011-02-17 |
| 615 | 1.11.2.1.510 | Time log 510 | 1d | 2011-09-28 | 2011-09-28 | 2011-09-28 | 2011-09-28 | 215d | start no earlier than 2011-02-18 |
| 616 | 1.11.2.1.511 | Time log 511 | 1d | 2011-09-28 | 2011-09-28 | 2011-09-28 | 2011-09-28 | 215d | start no earlier than 2011-02-19 |
| 617 | 1.11.2.1.512 | Time log 512 | 1d | 2011-09-28 | 2011-09-28 | 2011-09-28 | 2011-09-28 | 215d | start no earlier than 2011-02-20 |
| 618 | 1.11.2.1.513 | Time log 513 | 1d | 2011-09-28 | 2011-09-28 | 2011-09-28 | 2011-09-28 | 215d | start no earlier than 2011-02-21 |
| 619 | 1.11.2.1.514 | Time log 514 | 1d | 2011-09-28 | 2011-09-28 | 2011-09-28 | 2011-09-28 | 215d | start no earlier than 2011-02-22 |
| 620 | 1.11.2.1.515 | Time log 515 | 1d | 2011-09-28 | 2011-09-28 | 2011-09-28 | 2011-09-28 | 215d | start no earlier than 2011-02-23 |
| 621 | 1.11.2.1.516 | Time log 516 | 1d | 2011-09-28 | 2011-09-28 | 2011-09-28 | 2011-09-28 | 215d | start no earlier than 2011-02-24 |
| 622 | 1.11.2.1.517 | Time log 517 | 1d | 2011-09-28 | 2011-09-28 | 2011-09-28 | 2011-09-28 | 215d | start no earlier than 2011-02-25 |
| 623 | 1.11.2.1.518 | Time log 518 | 1d | 2011-09-28 | 2011-09-28 | 2011-09-28 | 2011-09-28 | 215d | start no earlier than 2011-02-26 |
| 624 | 1.11.2.1.519 | Time log 519 | 1d | 2011-09-28 | 2011-09-28 | 2011-09-28 | 2011-09-28 | 215d | start no earlier than 2011-02-27 |
| 625 | 1.11.2.1.520 | Time log 520 | 1d | 2011-09-28 | 2011-09-28 | 2011-09-28 | 2011-09-28 | 215d | start no earlier than 2011-02-28 |
| 626 | 1.11.2.1.521 | Time log 521 | 1d | 2011-09-28 | 2011-09-28 | 2011-09-28 | 2011-09-28 | 215d | start no earlier than 2011-03-01 |
| 627 | 1.11.2.1.522 | Time log 522 | 1d | 2011-09-28 | 2011-09-28 | 2011-09-28 | 2011-09-28 | 215d | start no earlier than 2011-03-02 |
| 628 | 1.11.2.1.523 | Time log 523 | 1d | 2011-09-28 | 2011-09-28 | 2011-09-28 | 2011-09-28 | 215d | start no earlier than 2011-03-03 |
| 629 | 1.11.2.1.524 | Time log 524 | 1d | 2011-09-28 | 2011-09-28 | 2011-09-28 | 2011-09-28 | 215d | start no earlier than 2011-03-04 |
| 630 | 1.11.2.1.525 | Time log 525 | 1d | 2011-09-28 | 2011-09-28 | 2011-09-28 | 2011-09-28 | 215d | start no earlier than 2011-03-05 |
| 631 | 1.11.2.1.526 | Time log 526 | 1d | 2011-09-28 | 2011-09-28 | 2011-09-28 | 2011-09-28 | 215d | start no earlier than 2011-03-06 |
| 632 | 1.11.2.1.527 | Time log 527 | 1d | 2011-09-28 | 2011-09-28 | 2011-09-28 | 2011-09-28 | 215d | start no earlier than 2011-03-07 |
| 633 | 1.11.2.1.528 | Time log 528 | 1d | 2011-09-28 | 2011-09-28 | 2011-09-28 | 2011-09-28 | 215d | start no earlier than 2011-03-08 |
| 634 | 1.11.2.1.529 | Time log 529 | 1d | 2011-09-28 | 2011-09-28 | 2011-09-28 | 2011-09-28 | 215d | start no earlier than 2011-03-09 |
| 635 | 1.11.2.1.530 | Time log 530 | 1d | 2011-09-28 | 2011-09-28 | 2011-09-28 | 2011-09-28 | 215d | start no earlier than 2011-03-10 |
| 636 | 1.11.2.1.531 | Time log 531 | 1d | 2011-09-28 | 2011-09-28 | 2011-09-28 | 2011-09-28 | 215d | start no earlier than 2011-03-11 |
| 637 | 1.11.2.1.532 | Time log 532 | 1d | 2011-09-28 | 2011-09-28 | 2011-09-28 | 2011-09-28 | 215d | start no earlier than 2011-03-12 |
| 638 | 1.11.2.1.533 | Time log 533 | 1d | 2011-09-28 | 2011-09-28 | 2011-09-28 | 2011-09-28 | 215d | start no earlier than 2011-03-13 |
| 639 | 1.11.2.1.534 | Time log 534 | 1d | 2011-09-28 | 2011-09-28 | 2011-09-28 | 2011-09-28 | 215d | start no earlier than 2011-03-14 |
| 640 | 1.11.2.1.535 | Time log 535 | 1d | 2011-09-28 | 2011-09-28 | 2011-09-28 | 2011-09-28 | 215d | start no earlier than 2011-03-15 |
| 641 | 1.11.2.1.536 | Time log 536 | 1d | 2011-09-28 | 2011-09-28 | 2011-09-28 | 2011-09-28 | 215d | start no earlier than 2011-03-16 |
| 642 | 1.11.2.1.537 | Time log 537 | 1d | 2011-09-28 | 2011-09-28 | 2011-09-28 | 2011-09-28 | 215d | start no earlier than 2011-03-17 |
| 643 | 1.11.2.1.538 | Time log 538 | 1d | 2011-09-28 | 2011-09-28 | 2011-09-28 | 2011-09-28 | 215d | start no earlier than 2011-03-18 |
| 644 | 1.11.2.1.539 | Time log 539 | 1d | 2011-09-28 | 2011-09-28 | 2011-09-28 | 2011-09-28 | 215d | start no earlier than 2011-03-19 |
| 645 | 1.11.2.1.540 | Time log 540 | 1d | 2011-09-28 | 2011-09-28 | 2011-09-28 | 2011-09-28 | 215d | start no earlier than 2011-03-20 |
| 646 | 1.11.2.1.541 | Time log 541 | 1d | 2011-09-28 | 2011-09-28 | 2011-09-28 | 2011-09-28 | 215d | start no earlier than 2011-03-21 |
| 647 | 1.11.2.1.542 | Time log 542 | 1d | 2011-09-28 | 2011-09-28 | 2011-09-28 | 2011-09-28 | 215d | start no earlier than 2011-03-22 |
| 648 | 1.11.2.1.543 | Time log 543 | 1d | 2011-09-28 | 2011-09-28 | 2011-09-28 | 2011-09-28 | 215d | start no earlier than 2011-03-23 |
| 649 | 1.11.2.1.544 | Time log 544 | 1d | 2011-09-28 | 2011-09-28 | 2011-09-28 | 2011-09-28 | 215d | start no earlier than 2011-03-24 |
| 650 | 1.11.2.1.545 | Time log 545 | 1d | 2011-09-28 | 2011-09-28 | 2011-09-28 | 2011-09-28 | 215d | start no earlier than 2011-03-25 |
| 651 | 1.11.2.1.546 | Time log 546 | 1d | 2011-09-28 | 2011-09-28 | 2011-09-28 | 2011-09-28 | 215d | start no earlier than 2011-03-26 |
| 652 | 1.11.2.1.547 | Time log 547 | 1d | 2011-09-28 | 2011-09-28 | 2011-09-28 | 2011-09-28 | 215d | start no earlier than 2011-03-27 |
| 653 | 1.11.2.1.548 | Time log 548 | 1d | 2011-09-28 | 2011-09-28 | 2011-09-28 | 2011-09-28 | 215d | start no earlier than 2011-03-28 |
| 654 | 1.11.2.1.549 | Time log 549 | 1d | 2011-09-28 | 2011-09-28 | 2011-09-28 | 2011-09-28 | 215d | start no earlier than 2011-03-29 |

| ID | WBS | Task | Duration | Start | Finish | Baseline 1 start | Baseline 1 finish | Total slack | Constraint |
| --- | --- | --- | --- | --- | --- | --- | --- | --- | --- |
| 655 | 1.11.2.1.550 | Time log 550 | 1d | 2011-09-28 | 2011-09-28 | 2011-09-28 | 2011-09-28 | 215d | start no earlier than 2011-03-30 |
| 656 | 1.11.2.1.551 | Time log 551 | 1d | 2011-09-28 | 2011-09-28 | 2011-09-28 | 2011-09-28 | 215d | start no earlier than 2011-03-31 |
| 657 | 1.11.2.1.552 | Time log 552 | 1d | 2011-09-28 | 2011-09-28 | 2011-09-28 | 2011-09-28 | 215d | start no earlier than 2011-04-01 |
| 658 | 1.11.2.1.553 | Time log 553 | 1d | 2011-09-28 | 2011-09-28 | 2011-09-28 | 2011-09-28 | 215d | start no earlier than 2011-04-02 |
| 659 | 1.11.2.1.554 | Time log 554 | 1d | 2011-09-28 | 2011-09-28 | 2011-09-28 | 2011-09-28 | 215d | start no earlier than 2011-04-03 |
| 660 | 1.11.2.1.555 | Time log 555 | 1d | 2011-09-28 | 2011-09-28 | 2011-09-28 | 2011-09-28 | 215d | start no earlier than 2011-04-04 |
| 661 | 1.11.2.1.556 | Time log 556 | 1d | 2011-09-28 | 2011-09-28 | 2011-09-28 | 2011-09-28 | 215d | start no earlier than 2011-04-05 |
| 662 | 1.11.2.1.557 | Time log 557 | 1d | 2011-09-28 | 2011-09-28 | 2011-09-28 | 2011-09-28 | 215d | start no earlier than 2011-04-06 |
| 663 | 1.11.2.1.558 | Time log 558 | 1d | 2011-09-28 | 2011-09-28 | 2011-09-28 | 2011-09-28 | 215d | start no earlier than 2011-04-07 |
| 664 | 1.11.2.1.559 | Time log 559 | 1d | 2011-09-28 | 2011-09-28 | 2011-09-28 | 2011-09-28 | 215d | start no earlier than 2011-04-08 |
| 665 | 1.11.2.1.560 | Time log 560 | 1d | 2011-09-28 | 2011-09-28 | 2011-09-28 | 2011-09-28 | 215d | start no earlier than 2011-04-09 |
| 666 | 1.11.2.1.561 | Time log 561 | 1d | 2011-09-28 | 2011-09-28 | 2011-09-28 | 2011-09-28 | 215d | start no earlier than 2011-04-10 |
| 667 | 1.11.2.1.562 | Time log 562 | 1d | 2011-09-28 | 2011-09-28 | 2011-09-28 | 2011-09-28 | 215d | start no earlier than 2011-04-11 |
| 668 | 1.11.2.1.563 | Time log 563 | 1d | 2011-09-28 | 2011-09-28 | 2011-09-28 | 2011-09-28 | 215d | start no earlier than 2011-04-12 |
| 669 | 1.11.2.1.564 | Time log 564 | 1d | 2011-09-28 | 2011-09-28 | 2011-09-28 | 2011-09-28 | 215d | start no earlier than 2011-04-13 |
| 670 | 1.11.2.1.565 | Time log 565 | 1d | 2011-09-28 | 2011-09-28 | 2011-09-28 | 2011-09-28 | 215d | start no earlier than 2011-04-14 |
| 671 | 1.11.2.1.566 | Time log 566 | 1d | 2011-09-28 | 2011-09-28 | 2011-09-28 | 2011-09-28 | 215d | start no earlier than 2011-04-15 |
| 672 | 1.11.2.1.567 | Time log 567 | 1d | 2011-09-28 | 2011-09-28 | 2011-09-28 | 2011-09-28 | 215d | start no earlier than 2011-04-16 |
| 673 | 1.11.2.1.568 | Time log 568 | 1d | 2011-09-28 | 2011-09-28 | 2011-09-28 | 2011-09-28 | 215d | start no earlier than 2011-04-17 |
| 674 | 1.11.2.1.569 | Time log 569 | 1d | 2011-09-28 | 2011-09-28 | 2011-09-28 | 2011-09-28 | 215d | start no earlier than 2011-04-18 |
| 675 | 1.11.2.1.570 | Time log 570 | 1d | 2011-09-28 | 2011-09-28 | 2011-09-28 | 2011-09-28 | 215d | start no earlier than 2011-04-19 |
| 676 | 1.11.2.1.571 | Time log 571 | 1d | 2011-09-28 | 2011-09-28 | 2011-09-28 | 2011-09-28 | 215d | start no earlier than 2011-04-20 |
| 677 | 1.11.2.1.572 | Time log 572 | 1d | 2011-09-28 | 2011-09-28 | 2011-09-28 | 2011-09-28 | 215d | start no earlier than 2011-04-21 |
| 678 | 1.11.2.1.573 | Time log 573 | 1d | 2011-09-28 | 2011-09-28 | 2011-09-28 | 2011-09-28 | 215d | start no earlier than 2011-04-22 |
| 679 | 1.11.2.1.574 | Time log 574 | 1d | 2011-09-28 | 2011-09-28 | 2011-09-28 | 2011-09-28 | 215d | start no earlier than 2011-04-23 |
| 680 | 1.11.2.1.575 | Time log 575 | 1d | 2011-09-28 | 2011-09-28 | 2011-09-28 | 2011-09-28 | 215d | start no earlier than 2011-04-24 |
| 681 | 1.11.2.1.576 | Time log 576 | 1d | 2011-09-28 | 2011-09-28 | 2011-09-28 | 2011-09-28 | 215d | start no earlier than 2011-04-25 |
| 682 | 1.11.2.1.577 | Time log 577 | 1d | 2011-09-28 | 2011-09-28 | 2011-09-28 | 2011-09-28 | 215d | start no earlier than 2011-04-26 |
| 683 | 1.11.2.1.578 | Time log 578 | 1d | 2011-09-28 | 2011-09-28 | 2011-09-28 | 2011-09-28 | 215d | start no earlier than 2011-04-27 |
| 684 | 1.11.2.1.579 | Time log 579 | 1d | 2011-09-28 | 2011-09-28 | 2011-09-28 | 2011-09-28 | 215d | start no earlier than 2011-04-28 |
| 685 | 1.11.2.1.580 | Time log 580 | 1d | 2011-09-28 | 2011-09-28 | 2011-09-28 | 2011-09-28 | 215d | start no earlier than 2011-04-29 |
| 686 | 1.11.2.1.581 | Time log 581 | 1d | 2011-09-28 | 2011-09-28 | 2011-09-28 | 2011-09-28 | 215d | start no earlier than 2011-04-30 |
| 687 | 1.11.2.1.582 | Time log 582 | 1d | 2011-09-28 | 2011-09-28 | 2011-09-28 | 2011-09-28 | 215d | start no earlier than 2011-05-01 |
| 688 | 1.11.2.1.583 | Time log 583 | 1d | 2011-09-28 | 2011-09-28 | 2011-09-28 | 2011-09-28 | 215d | start no earlier than 2011-05-02 |
| 689 | 1.11.2.1.584 | Time log 584 | 1d | 2011-09-28 | 2011-09-28 | 2011-09-28 | 2011-09-28 | 215d | start no earlier than 2011-05-03 |
| 690 | 1.11.2.1.585 | Time log 585 | 1d | 2011-09-28 | 2011-09-28 | 2011-09-28 | 2011-09-28 | 215d | start no earlier than 2011-05-04 |
| 691 | 1.11.2.1.586 | Time log 586 | 1d | 2011-09-28 | 2011-09-28 | 2011-09-28 | 2011-09-28 | 215d | start no earlier than 2011-05-05 |
| 692 | 1.11.2.1.587 | Time log 587 | 1d | 2011-09-28 | 2011-09-28 | 2011-09-28 | 2011-09-28 | 215d | start no earlier than 2011-05-06 |
| 693 | 1.11.2.1.588 | Time log 588 | 1d | 2011-09-28 | 2011-09-28 | 2011-09-28 | 2011-09-28 | 215d | start no earlier than 2011-05-07 |
| 694 | 1.11.2.1.589 | Time log 589 | 1d | 2011-09-28 | 2011-09-28 | 2011-09-28 | 2011-09-28 | 215d | start no earlier than 2011-05-08 |
| 695 | 1.11.2.1.590 | Time log 590 | 1d | 2011-09-28 | 2011-09-28 | 2011-09-28 | 2011-09-28 | 215d | start no earlier than 2011-05-09 |
| 696 | 1.11.2.1.591 | Time log 591 | 1d | 2011-09-28 | 2011-09-28 | 2011-09-28 | 2011-09-28 | 215d | start no earlier than 2011-05-10 |
| 697 | 1.11.2.1.592 | Time log 592 | 1d | 2011-09-28 | 2011-09-28 | 2011-09-28 | 2011-09-28 | 215d | start no earlier than 2011-05-11 |
| 698 | 1.11.2.1.593 | Time log 593 | 1d | 2011-09-28 | 2011-09-28 | 2011-09-28 | 2011-09-28 | 215d | start no earlier than 2011-05-12 |
| 699 | 1.11.2.1.594 | Time log 594 | 1d | 2011-09-28 | 2011-09-28 | 2011-09-28 | 2011-09-28 | 215d | start no earlier than 2011-05-13 |
| 700 | 1.11.2.1.595 | Time log 595 | 1d | 2011-09-28 | 2011-09-28 | 2011-09-28 | 2011-09-28 | 215d | start no earlier than 2011-05-14 |
| 701 | 1.11.2.1.596 | Time log 596 | 1d | 2011-09-28 | 2011-09-28 | 2011-09-28 | 2011-09-28 | 215d | start no earlier than 2011-05-15 |
| 702 | 1.11.2.1.597 | Time log 597 | 1d | 2011-09-28 | 2011-09-28 | 2011-09-28 | 2011-09-28 | 215d | start no earlier than 2011-05-16 |
| 703 | 1.11.2.1.598 | Time log 598 | 1d | 2011-09-28 | 2011-09-28 | 2011-09-28 | 2011-09-28 | 215d | start no earlier than 2011-05-17 |
| 704 | 1.11.2.1.599 | Time log 599 | 1d | 2011-09-28 | 2011-09-28 | 2011-09-28 | 2011-09-28 | 215d | start no earlier than 2011-05-18 |
| 705 | 1.11.2.1.600 | Time log 600 | 1d | 2011-09-28 | 2011-09-28 | 2011-09-28 | 2011-09-28 | 215d | start no earlier than 2011-05-19 |
| 706 | 1.11.2.1.601 | Time log 601 | 1d | 2011-09-28 | 2011-09-28 | 2011-09-28 | 2011-09-28 | 215d | start no earlier than 2011-05-20 |
| 707 | 1.11.2.1.602 | Time log 602 | 1d | 2011-09-28 | 2011-09-28 | 2011-09-28 | 2011-09-28 | 215d | start no earlier than 2011-05-21 |
| 708 | 1.11.2.1.603 | Time log 603 | 1d | 2011-09-28 | 2011-09-28 | 2011-09-28 | 2011-09-28 | 215d | start no earlier than 2011-05-22 |
| 709 | 1.11.2.1.604 | Time log 604 | 1d | 2011-09-28 | 2011-09-28 | 2011-09-28 | 2011-09-28 | 215d | start no earlier than 2011-05-23 |
| 710 | 1.11.2.1.605 | Time log 605 | 1d | 2011-09-28 | 2011-09-28 | 2011-09-28 | 2011-09-28 | 215d | start no earlier than 2011-05-24 |
| 711 | 1.11.2.1.606 | Time log 606 | 1d | 2011-09-28 | 2011-09-28 | 2011-09-28 | 2011-09-28 | 215d | start no earlier than 2011-05-25 |
| 712 | 1.11.2.1.607 | Time log 607 | 1d | 2011-09-28 | 2011-09-28 | 2011-09-28 | 2011-09-28 | 215d | start no earlier than 2011-05-26 |
| 713 | 1.11.2.1.608 | Time log 608 | 1d | 2011-09-28 | 2011-09-28 | 2011-09-28 | 2011-09-28 | 215d | start no earlier than 2011-05-27 |
| 714 | 1.11.2.1.609 | Time log 609 | 1d | 2011-09-28 | 2011-09-28 | 2011-09-28 | 2011-09-28 | 215d | start no earlier than 2011-05-28 |
| 715 | 1.11.2.1.610 | Time log 610 | 1d | 2011-09-28 | 2011-09-28 | 2011-09-28 | 2011-09-28 | 215d | start no earlier than 2011-05-29 |
| 716 | 1.11.2.1.611 | Time log 611 | 1d | 2011-09-28 | 2011-09-28 | 2011-09-28 | 2011-09-28 | 215d | start no earlier than 2011-05-30 |
| 717 | 1.11.2.1.612 | Time log 612 | 1d | 2011-09-28 | 2011-09-28 | 2011-09-28 | 2011-09-28 | 215d | start no earlier than 2011-05-31 |
| 718 | 1.11.2.1.613 | Time log 613 | 1d | 2011-09-28 | 2011-09-28 | 2011-09-28 | 2011-09-28 | 215d | start no earlier than 2011-06-01 |
| 719 | 1.11.2.1.614 | Time log 614 | 1d | 2011-09-28 | 2011-09-28 | 2011-09-28 | 2011-09-28 | 215d | start no earlier than 2011-06-02 |
| 720 | 1.11.2.1.615 | Time log 615 | 1d | 2011-09-28 | 2011-09-28 | 2011-09-28 | 2011-09-28 | 215d | start no earlier than 2011-06-03 |
| 721 | 1.11.2.1.616 | Time log 616 | 1d | 2011-09-28 | 2011-09-28 | 2011-09-28 | 2011-09-28 | 215d | start no earlier than 2011-06-04 |
| 722 | 1.11.2.1.617 | Time log 617 | 1d | 2011-09-28 | 2011-09-28 | 2011-09-28 | 2011-09-28 | 215d | start no earlier than 2011-06-05 |
| 723 | 1.11.2.1.618 | Time log 618 | 1d | 2011-09-28 | 2011-09-28 | 2011-09-28 | 2011-09-28 | 215d | start no earlier than 2011-06-06 |
| 724 | 1.11.2.1.619 | Time log 619 | 1d | 2011-09-28 | 2011-09-28 | 2011-09-28 | 2011-09-28 | 215d | start no earlier than 2011-06-07 |

| ID | WBS | Task | Duration | Start | Finish | Baseline 1 start | Baseline 1 finish | Total slack | Constraint |
| --- | --- | --- | --- | --- | --- | --- | --- | --- | --- |
| 725 | 1.11.2.1.620 | Time log 620 | 1d | 2011-09-28 | 2011-09-28 | 2011-09-28 | 2011-09-28 | 215d | start no earlier than 2011-06-08 |
| 726 | 1.11.2.1.621 | Time log 621 | 1d | 2011-09-28 | 2011-09-28 | 2011-09-28 | 2011-09-28 | 215d | start no earlier than 2011-06-09 |
| 727 | 1.11.2.1.622 | Time log 622 | 1d | 2011-09-28 | 2011-09-28 | 2011-09-28 | 2011-09-28 | 215d | start no earlier than 2011-06-10 |
| 728 | 1.11.2.1.623 | Time log 623 | 1d | 2011-09-28 | 2011-09-28 | 2011-09-28 | 2011-09-28 | 215d | start no earlier than 2011-06-11 |
| 729 | 1.11.2.1.624 | Time log 624 | 1d | 2011-09-28 | 2011-09-28 | 2011-09-28 | 2011-09-28 | 215d | start no earlier than 2011-06-12 |
| 730 | 1.11.2.1.625 | Time log 625 | 1d | 2011-09-28 | 2011-09-28 | 2011-09-28 | 2011-09-28 | 215d | start no earlier than 2011-06-13 |
| 731 | 1.11.2.1.626 | Time log 626 | 1d | 2011-09-28 | 2011-09-28 | 2011-09-28 | 2011-09-28 | 215d | start no earlier than 2011-06-14 |
| 732 | 1.11.2.1.627 | Time log 627 | 1d | 2011-09-28 | 2011-09-28 | 2011-09-28 | 2011-09-28 | 215d | start no earlier than 2011-06-15 |
| 733 | 1.11.2.1.628 | Time log 628 | 1d | 2011-09-28 | 2011-09-28 | 2011-09-28 | 2011-09-28 | 215d | start no earlier than 2011-06-16 |
| 734 | 1.11.2.1.629 | Time log 629 | 1d | 2011-09-28 | 2011-09-28 | 2011-09-28 | 2011-09-28 | 215d | start no earlier than 2011-06-17 |
| 735 | 1.11.2.1.630 | Time log 630 | 1d | 2011-09-28 | 2011-09-28 | 2011-09-28 | 2011-09-28 | 215d | start no earlier than 2011-06-18 |
| 736 | 1.11.2.1.631 | Time log 631 | 1d | 2011-09-28 | 2011-09-28 | 2011-09-28 | 2011-09-28 | 215d | start no earlier than 2011-06-19 |
| 737 | 1.11.2.1.632 | Time log 632 | 1d | 2011-09-28 | 2011-09-28 | 2011-09-28 | 2011-09-28 | 215d | start no earlier than 2011-06-20 |
| 738 | 1.11.2.1.633 | Time log 633 | 1d | 2011-09-28 | 2011-09-28 | 2011-09-28 | 2011-09-28 | 215d | start no earlier than 2011-06-21 |
| 739 | 1.11.2.1.634 | Time log 634 | 1d | 2011-09-28 | 2011-09-28 | 2011-09-28 | 2011-09-28 | 215d | start no earlier than 2011-06-22 |
| 740 | 1.11.2.1.635 | Time log 635 | 1d | 2011-09-28 | 2011-09-28 | 2011-09-28 | 2011-09-28 | 215d | start no earlier than 2011-06-23 |
| 741 | 1.11.2.1.636 | Time log 636 | 1d | 2011-09-28 | 2011-09-28 | 2011-09-28 | 2011-09-28 | 215d | start no earlier than 2011-06-24 |
| 742 | 1.11.2.1.637 | Time log 637 | 1d | 2011-09-28 | 2011-09-28 | 2011-09-28 | 2011-09-28 | 215d | start no earlier than 2011-06-25 |
| 743 | 1.11.2.1.638 | Time log 638 | 1d | 2011-09-28 | 2011-09-28 | 2011-09-28 | 2011-09-28 | 215d | start no earlier than 2011-06-26 |
| 744 | 1.11.2.1.639 | Time log 639 | 1d | 2011-09-28 | 2011-09-28 | 2011-09-28 | 2011-09-28 | 215d | start no earlier than 2011-06-27 |
| 745 | 1.11.2.1.640 | Time log 640 | 1d | 2011-09-28 | 2011-09-28 | 2011-09-28 | 2011-09-28 | 215d | start no earlier than 2011-06-28 |
| 746 | 1.11.2.1.641 | Time log 641 | 1d | 2011-09-28 | 2011-09-28 | 2011-09-28 | 2011-09-28 | 215d | start no earlier than 2011-06-29 |
| 747 | 1.11.2.1.642 | Time log 642 | 1d | 2011-09-28 | 2011-09-28 | 2011-09-28 | 2011-09-28 | 215d | start no earlier than 2011-06-30 |
| 748 | 1.11.2.1.643 | Time log 643 | 1d | 2011-09-28 | 2011-09-28 | 2011-09-28 | 2011-09-28 | 215d | start no earlier than 2011-07-01 |
| 749 | 1.11.2.1.644 | Time log 644 | 1d | 2011-09-28 | 2011-09-28 | 2011-09-28 | 2011-09-28 | 215d | start no earlier than 2011-07-02 |
| 750 | 1.11.2.1.645 | Time log 645 | 1d | 2011-09-28 | 2011-09-28 | 2011-09-28 | 2011-09-28 | 215d | start no earlier than 2011-07-03 |
| 751 | 1.11.2.1.646 | Time log 646 | 1d | 2011-09-28 | 2011-09-28 | 2011-09-28 | 2011-09-28 | 215d | start no earlier than 2011-07-04 |
| 752 | 1.11.2.1.647 | Time log 647 | 1d | 2011-09-28 | 2011-09-28 | 2011-09-28 | 2011-09-28 | 215d | start no earlier than 2011-07-05 |
| 753 | 1.11.2.1.648 | Time log 648 | 1d | 2011-09-28 | 2011-09-28 | 2011-09-28 | 2011-09-28 | 215d | start no earlier than 2011-07-06 |
| 754 | 1.11.2.1.649 | Time log 649 | 1d | 2011-09-28 | 2011-09-28 | 2011-09-28 | 2011-09-28 | 215d | start no earlier than 2011-07-07 |
| 755 | 1.11.2.1.650 | Time log 650 | 1d | 2011-09-28 | 2011-09-28 | 2011-09-28 | 2011-09-28 | 215d | start no earlier than 2011-07-08 |
| 756 | 1.11.2.1.651 | Time log 651 | 1d | 2011-09-28 | 2011-09-28 | 2011-09-28 | 2011-09-28 | 215d | start no earlier than 2011-07-09 |
| 757 | 1.11.2.1.652 | Time log 652 | 1d | 2011-09-28 | 2011-09-28 | 2011-09-28 | 2011-09-28 | 215d | start no earlier than 2011-07-10 |
| 758 | 1.11.2.1.653 | Time log 653 | 1d | 2011-09-28 | 2011-09-28 | 2011-09-28 | 2011-09-28 | 215d | start no earlier than 2011-07-11 |
| 759 | 1.11.2.1.654 | Time log 654 | 1d | 2011-09-28 | 2011-09-28 | 2011-09-28 | 2011-09-28 | 215d | start no earlier than 2011-07-12 |
| 760 | 1.11.2.1.655 | Time log 655 | 1d | 2011-09-28 | 2011-09-28 | 2011-09-28 | 2011-09-28 | 215d | start no earlier than 2011-07-13 |
| 761 | 1.11.2.1.656 | Time log 656 | 1d | 2011-09-28 | 2011-09-28 | 2011-09-28 | 2011-09-28 | 215d | start no earlier than 2011-07-14 |
| 762 | 1.11.2.1.657 | Time log 657 | 1d | 2011-09-28 | 2011-09-28 | 2011-09-28 | 2011-09-28 | 215d | start no earlier than 2011-07-15 |
| 763 | 1.11.2.1.658 | Time log 658 | 1d | 2011-09-28 | 2011-09-28 | 2011-09-28 | 2011-09-28 | 215d | start no earlier than 2011-07-16 |
| 764 | 1.11.2.1.659 | Time log 659 | 1d | 2011-09-28 | 2011-09-28 | 2011-09-28 | 2011-09-28 | 215d | start no earlier than 2011-07-17 |
| 765 | 1.11.2.1.660 | Time log 660 | 1d | 2011-09-28 | 2011-09-28 | 2011-09-28 | 2011-09-28 | 215d | start no earlier than 2011-07-18 |
| 766 | 1.11.2.1.661 | Time log 661 | 1d | 2011-09-28 | 2011-09-28 | 2011-09-28 | 2011-09-28 | 215d | start no earlier than 2011-07-19 |
| 767 | 1.11.2.1.662 | Time log 662 | 1d | 2011-09-28 | 2011-09-28 | 2011-09-28 | 2011-09-28 | 215d | start no earlier than 2011-07-20 |
| 768 | 1.11.2.1.663 | Time log 663 | 1d | 2011-09-28 | 2011-09-28 | 2011-09-28 | 2011-09-28 | 215d | start no earlier than 2011-07-21 |
| 769 | 1.11.2.1.664 | Time log 664 | 1d | 2011-09-28 | 2011-09-28 | 2011-09-28 | 2011-09-28 | 215d | start no earlier than 2011-07-22 |
| 770 | 1.11.2.1.665 | Time log 665 | 1d | 2011-09-28 | 2011-09-28 | 2011-09-28 | 2011-09-28 | 215d | start no earlier than 2011-07-23 |
| 771 | 1.11.2.1.666 | Time log 666 | 1d | 2011-09-28 | 2011-09-28 | 2011-09-28 | 2011-09-28 | 215d | start no earlier than 2011-07-24 |
| 772 | 1.11.2.1.667 | Time log 667 | 1d | 2011-09-28 | 2011-09-28 | 2011-09-28 | 2011-09-28 | 215d | start no earlier than 2011-07-25 |
| 773 | 1.11.2.1.668 | Time log 668 | 1d | 2011-09-28 | 2011-09-28 | 2011-09-28 | 2011-09-28 | 215d | start no earlier than 2011-07-26 |
| 774 | 1.11.2.1.669 | Time log 669 | 1d | 2011-09-28 | 2011-09-28 | 2011-09-28 | 2011-09-28 | 215d | start no earlier than 2011-07-27 |
| 775 | 1.11.2.1.670 | Time log 670 | 1d | 2011-09-28 | 2011-09-28 | 2011-09-28 | 2011-09-28 | 215d | start no earlier than 2011-07-28 |
| 776 | 1.11.2.1.671 | Time log 671 | 1d | 2011-09-28 | 2011-09-28 | 2011-09-28 | 2011-09-28 | 215d | start no earlier than 2011-07-29 |
| 777 | 1.11.2.1.672 | Time log 672 | 1d | 2011-09-28 | 2011-09-28 | 2011-09-28 | 2011-09-28 | 215d | start no earlier than 2011-07-30 |
| 778 | 1.11.2.1.673 | Time log 673 | 1d | 2011-09-28 | 2011-09-28 | 2011-09-28 | 2011-09-28 | 215d | start no earlier than 2011-07-31 |
| 779 | 1.11.2.1.674 | Time log 674 | 1d | 2011-09-28 | 2011-09-28 | 2011-09-28 | 2011-09-28 | 215d | start no earlier than 2011-08-01 |
| 780 | 1.11.2.1.675 | Time log 675 | 1d | 2011-09-28 | 2011-09-28 | 2011-09-28 | 2011-09-28 | 215d | start no earlier than 2011-08-02 |
| 781 | 1.11.2.1.676 | Time log 676 | 1d | 2011-09-28 | 2011-09-28 | 2011-09-28 | 2011-09-28 | 215d | start no earlier than 2011-08-03 |
| 782 | 1.11.2.1.677 | Time log 677 | 1d | 2011-09-28 | 2011-09-28 | 2011-09-28 | 2011-09-28 | 215d | start no earlier than 2011-08-04 |
| 783 | 1.11.2.1.678 | Time log 678 | 1d | 2011-09-28 | 2011-09-28 | 2011-09-28 | 2011-09-28 | 215d | start no earlier than 2011-08-05 |
| 784 | 1.11.2.1.679 | Time log 679 | 1d | 2011-09-28 | 2011-09-28 | 2011-09-28 | 2011-09-28 | 215d | start no earlier than 2011-08-06 |
| 785 | 1.11.2.1.680 | Time log 680 | 1d | 2011-09-28 | 2011-09-28 | 2011-09-28 | 2011-09-28 | 215d | start no earlier than 2011-08-07 |
| 786 | 1.11.2.1.681 | Time log 681 | 1d | 2011-09-28 | 2011-09-28 | 2011-09-28 | 2011-09-28 | 215d | start no earlier than 2011-08-08 |
| 787 | 1.11.2.1.682 | Time log 682 | 1d | 2011-09-28 | 2011-09-28 | 2011-09-28 | 2011-09-28 | 215d | start no earlier than 2011-08-09 |
| 788 | 1.11.2.1.683 | Time log 683 | 1d | 2011-09-28 | 2011-09-28 | 2011-09-28 | 2011-09-28 | 215d | start no earlier than 2011-08-10 |
| 789 | 1.11.2.1.684 | Time log 684 | 1d | 2011-09-28 | 2011-09-28 | 2011-09-28 | 2011-09-28 | 215d | start no earlier than 2011-08-11 |
| 790 | 1.11.2.1.685 | Time log 685 | 1d | 2011-09-28 | 2011-09-28 | 2011-09-28 | 2011-09-28 | 215d | start no earlier than 2011-08-12 |
| 791 | 1.11.2.1.686 | Time log 686 | 1d | 2011-09-28 | 2011-09-28 | 2011-09-28 | 2011-09-28 | 215d | start no earlier than 2011-08-13 |
| 792 | 1.11.2.1.687 | Time log 687 | 1d | 2011-09-28 | 2011-09-28 | 2011-09-28 | 2011-09-28 | 215d | start no earlier than 2011-08-14 |
| 793 | 1.11.2.1.688 | Time log 688 | 1d | 2011-09-28 | 2011-09-28 | 2011-09-28 | 2011-09-28 | 215d | start no earlier than 2011-08-15 |
| 794 | 1.11.2.1.689 | Time log 689 | 1d | 2011-09-28 | 2011-09-28 | 2011-09-28 | 2011-09-28 | 215d | start no earlier than 2011-08-16 |

| ID | WBS | Task | Duration | Start | Finish | Baseline 1 start | Baseline 1 finish | Total slack | Constraint |
| --- | --- | --- | --- | --- | --- | --- | --- | --- | --- |
| 795 | 1.11.2.1.690 | Time log 690 | 1d | 2011-09-28 | 2011-09-28 | 2011-09-28 | 2011-09-28 | 215d | start no earlier than 2011-08-17 |
| 796 | 1.11.2.1.691 | Time log 691 | 1d | 2011-09-28 | 2011-09-28 | 2011-09-28 | 2011-09-28 | 215d | start no earlier than 2011-08-18 |
| 797 | 1.11.2.1.692 | Time log 692 | 1d | 2011-09-28 | 2011-09-28 | 2011-09-28 | 2011-09-28 | 215d | start no earlier than 2011-08-19 |
| 798 | 1.11.2.1.693 | Time log 693 | 1d | 2011-09-28 | 2011-09-28 | 2011-09-28 | 2011-09-28 | 215d | start no earlier than 2011-08-20 |
| 799 | 1.11.2.1.694 | Time log 694 | 1d | 2011-09-28 | 2011-09-28 | 2011-09-28 | 2011-09-28 | 215d | start no earlier than 2011-08-21 |
| 800 | 1.11.2.1.695 | Time log 695 | 1d | 2011-09-28 | 2011-09-28 | 2011-09-28 | 2011-09-28 | 215d | start no earlier than 2011-08-22 |
| 801 | 1.11.2.1.696 | Time log 696 | 1d | 2011-09-28 | 2011-09-28 | 2011-09-28 | 2011-09-28 | 215d | start no earlier than 2011-08-23 |
| 802 | 1.11.2.1.697 | Time log 697 | 1d | 2011-09-28 | 2011-09-28 | 2011-09-28 | 2011-09-28 | 215d | start no earlier than 2011-08-24 |
| 803 | 1.11.2.1.698 | Time log 698 | 1d | 2011-09-28 | 2011-09-28 | 2011-09-28 | 2011-09-28 | 215d | start no earlier than 2011-08-25 |
| 804 | 1.11.2.1.699 | Time log 699 | 1d | 2011-09-28 | 2011-09-28 | 2011-09-28 | 2011-09-28 | 215d | start no earlier than 2011-08-26 |
| 805 | 1.11.2.1.700 | Time log 700 | 1d | 2011-09-28 | 2011-09-28 | 2011-09-28 | 2011-09-28 | 215d | start no earlier than 2011-08-27 |
| 806 | 1.11.2.1.701 | Time log 701 | 1d | 2011-09-28 | 2011-09-28 | 2011-09-28 | 2011-09-28 | 215d | start no earlier than 2011-08-28 |
| 807 | 1.11.2.1.702 | Time log 702 | 1d | 2011-09-28 | 2011-09-28 | 2011-09-28 | 2011-09-28 | 215d | start no earlier than 2011-08-29 |
| 808 | 1.11.2.1.703 | Time log 703 | 1d | 2011-09-28 | 2011-09-28 | 2011-09-28 | 2011-09-28 | 215d | start no earlier than 2011-08-30 |
| 809 | 1.11.2.1.704 | Time log 704 | 1d | 2011-09-28 | 2011-09-28 | 2011-09-28 | 2011-09-28 | 215d | start no earlier than 2011-08-31 |
| 810 | 1.11.2.1.705 | Time log 705 | 1d | 2011-09-28 | 2011-09-28 | 2011-09-28 | 2011-09-28 | 215d | start no earlier than 2011-09-01 |
| 811 | 1.11.2.1.706 | Time log 706 | 1d | 2011-09-28 | 2011-09-28 | 2011-09-28 | 2011-09-28 | 215d | start no earlier than 2011-09-02 |
| 812 | 1.11.2.1.707 | Time log 707 | 1d | 2011-09-28 | 2011-09-28 | 2011-09-28 | 2011-09-28 | 215d | start no earlier than 2011-09-03 |
| 813 | 1.11.2.1.708 | Time log 708 | 1d | 2011-09-28 | 2011-09-28 | 2011-09-28 | 2011-09-28 | 215d | start no earlier than 2011-09-04 |
| 814 | 1.11.2.1.709 | Time log 709 | 1d | 2011-09-28 | 2011-09-28 | 2011-09-28 | 2011-09-28 | 215d | start no earlier than 2011-09-05 |
| 815 | 1.11.2.1.710 | Time log 710 | 1d | 2011-09-28 | 2011-09-28 | 2011-09-28 | 2011-09-28 | 215d | start no earlier than 2011-09-06 |
| 816 | 1.11.2.1.711 | Time log 711 | 1d | 2011-09-28 | 2011-09-28 | 2011-09-28 | 2011-09-28 | 215d | start no earlier than 2011-09-07 |
| 817 | 1.11.2.1.712 | Time log 712 | 1d | 2011-09-28 | 2011-09-28 | 2011-09-28 | 2011-09-28 | 215d | start no earlier than 2011-09-08 |
| 818 | 1.11.2.1.713 | Time log 713 | 1d | 2011-09-28 | 2011-09-28 | 2011-09-28 | 2011-09-28 | 215d | start no earlier than 2011-09-09 |
| 819 | 1.11.2.1.714 | Time log 714 | 1d | 2011-09-28 | 2011-09-28 | 2011-09-28 | 2011-09-28 | 215d | start no earlier than 2011-09-10 |
| 820 | 1.11.2.1.715 | Time log 715 | 1d | 2011-09-28 | 2011-09-28 | 2011-09-28 | 2011-09-28 | 215d | start no earlier than 2011-09-11 |
| 821 | 1.11.2.1.716 | Time log 716 | 1d | 2011-09-28 | 2011-09-28 | 2011-09-28 | 2011-09-28 | 215d | start no earlier than 2011-09-12 |
| 822 | 1.11.2.1.717 | Time log 717 | 1d | 2011-09-28 | 2011-09-28 | 2011-09-28 | 2011-09-28 | 215d | start no earlier than 2011-09-13 |
| 823 | 1.11.2.1.718 | Time log 718 | 1d | 2011-09-28 | 2011-09-28 | 2011-09-28 | 2011-09-28 | 215d | start no earlier than 2011-09-14 |
| 824 | 1.11.2.1.719 | Time log 719 | 1d | 2011-09-28 | 2011-09-28 | 2011-09-28 | 2011-09-28 | 215d | start no earlier than 2011-09-15 |
| 825 | 1.11.2.1.720 | Time log 720 | 1d | 2011-09-28 | 2011-09-28 | 2011-09-28 | 2011-09-28 | 215d | start no earlier than 2011-09-16 |
| 826 | 1.11.2.1.721 | Time log 721 | 1d | 2011-09-28 | 2011-09-28 | 2011-09-28 | 2011-09-28 | 215d | start no earlier than 2011-09-17 |
| 827 | 1.11.2.1.722 | Time log 722 | 1d | 2011-09-28 | 2011-09-28 | 2011-09-28 | 2011-09-28 | 215d | start no earlier than 2011-09-18 |
| 828 | 1.11.2.1.723 | Time log 723 | 1d | 2011-09-28 | 2011-09-28 | 2011-09-28 | 2011-09-28 | 215d | start no earlier than 2011-09-19 |
| 829 | 1.11.2.1.724 | Time log 724 | 1d | 2011-09-28 | 2011-09-28 | 2011-09-28 | 2011-09-28 | 215d | start no earlier than 2011-09-20 |
| 830 | 1.11.2.1.725 | Time log 725 | 1d | 2011-09-28 | 2011-09-28 | 2011-09-28 | 2011-09-28 | 215d | start no earlier than 2011-09-21 |
| 831 | 1.11.2.1.726 | Time log 726 | 1d | 2011-09-28 | 2011-09-28 | 2011-09-28 | 2011-09-28 | 215d | start no earlier than 2011-09-22 |
| 832 | 1.11.2.1.727 | Time log 727 | 1d | 2011-09-28 | 2011-09-28 | 2011-09-28 | 2011-09-28 | 215d | start no earlier than 2011-09-23 |
| 833 | 1.11.2.1.728 | Time log 728 | 1d | 2011-09-28 | 2011-09-28 | 2011-09-28 | 2011-09-28 | 215d | start no earlier than 2011-09-24 |
| 834 | 1.11.2.1.729 | Time log 729 | 1d | 2011-09-28 | 2011-09-28 | 2011-09-28 | 2011-09-28 | 215d | start no earlier than 2011-09-25 |
| 835 | 1.11.2.1.730 | Time log 730 | 1d | 2011-09-28 | 2011-09-28 | 2011-09-28 | 2011-09-28 | 215d | start no earlier than 2011-09-26 |
| 836 | 1.11.2.1.731 | Time log 731 | 1d | 2011-09-28 | 2011-09-28 | 2011-09-28 | 2011-09-28 | 215d | start no earlier than 2011-09-27 |
| 837 | 1.11.2.1.732 | Time log 732 | 1d | 2011-09-28 | 2011-09-28 | 2011-09-28 | 2011-09-28 | 215d | start no earlier than 2011-09-28 |
| 838 | 1.11.2.1.733 | Time log 733 | 1d | 2011-09-29 | 2011-09-29 | 2011-09-29 | 2011-09-29 | 214d | start no earlier than 2011-09-29 |
| 839 | 1.11.2.1.734 | Time log 734 | 1d | 2011-09-30 | 2011-09-30 | 2011-09-30 | 2011-09-30 | 213d | start no earlier than 2011-09-30 |
| 840 | 1.11.2.1.735 | Time log 735 | 1d | 2011-10-01 | 2011-10-01 | 2011-10-01 | 2011-10-01 | 212d | start no earlier than 2011-10-01 |
| 841 | 1.11.2.1.736 | Time log 736 | 1d | 2011-10-02 | 2011-10-02 | 2011-10-02 | 2011-10-02 | 211d | start no earlier than 2011-10-02 |
| 842 | 1.11.2.1.737 | Time log 737 | 1d | 2011-10-03 | 2011-10-03 | 2011-10-03 | 2011-10-03 | 210d | start no earlier than 2011-10-03 |
| 843 | 1.11.2.1.738 | Time log 738 | 1d | 2011-10-04 | 2011-10-04 | 2011-10-04 | 2011-10-04 | 209d | start no earlier than 2011-10-04 |
| 844 | 1.11.2.1.739 | Time log 739 | 1d | 2011-10-05 | 2011-10-05 | 2011-10-05 | 2011-10-05 | 208d | start no earlier than 2011-10-05 |
| 845 | 1.11.2.1.740 | Time log 740 | 1d | 2011-10-06 | 2011-10-06 | 2011-10-06 | 2011-10-06 | 207d | start no earlier than 2011-10-06 |
| 846 | 1.11.2.1.741 | Time log 741 | 1d | 2011-10-07 | 2011-10-07 | 2011-10-07 | 2011-10-07 | 206d | start no earlier than 2011-10-07 |
| 847 | 1.11.2.1.742 | Time log 742 | 1d | 2011-10-08 | 2011-10-08 | 2011-10-08 | 2011-10-08 | 205d | start no earlier than 2011-10-08 |
| 848 | 1.11.2.1.743 | Time log 743 | 1d | 2011-10-09 | 2011-10-09 | 2011-10-09 | 2011-10-09 | 204d | start no earlier than 2011-10-09 |
| 849 | 1.11.2.1.744 | Time log 744 | 1d | 2011-10-10 | 2011-10-10 | 2011-10-10 | 2011-10-10 | 203d | start no earlier than 2011-10-10 |
| 850 | 1.11.2.1.745 | Time log 745 | 1d | 2011-10-11 | 2011-10-11 | 2011-10-11 | 2011-10-11 | 202d | start no earlier than 2011-10-11 |
| 851 | 1.11.2.1.746 | Time log 746 | 1d | 2011-10-12 | 2011-10-12 | 2011-10-12 | 2011-10-12 | 201d | start no earlier than 2011-10-12 |
| 852 | 1.11.2.1.747 | Time log 747 | 1d | 2011-10-13 | 2011-10-13 | 2011-10-13 | 2011-10-13 | 200d | start no earlier than 2011-10-13 |
| 853 | 1.11.2.1.748 | Time log 748 | 1d | 2011-10-14 | 2011-10-14 | 2011-10-14 | 2011-10-14 | 199d | start no earlier than 2011-10-14 |
| 854 | 1.11.2.1.749 | Time log 749 | 1d | 2011-10-15 | 2011-10-15 | 2011-10-15 | 2011-10-15 | 198d | start no earlier than 2011-10-15 |
| 855 | 1.11.2.1.750 | Time log 750 | 1d | 2011-10-16 | 2011-10-16 | 2011-10-16 | 2011-10-16 | 197d | start no earlier than 2011-10-16 |
| 856 | 1.11.2.1.751 | Time log 751 | 1d | 2011-10-17 | 2011-10-17 | 2011-10-17 | 2011-10-17 | 196d | start no earlier than 2011-10-17 |
| 857 | 1.11.2.1.752 | Time log 752 | 1d | 2011-10-18 | 2011-10-18 | 2011-10-18 | 2011-10-18 | 195d | start no earlier than 2011-10-18 |
| 858 | 1.11.2.1.753 | Time log 753 | 1d | 2011-10-19 | 2011-10-19 | 2011-10-19 | 2011-10-19 | 194d | start no earlier than 2011-10-19 |
| 859 | 1.11.2.1.754 | Time log 754 | 1d | 2011-10-20 | 2011-10-20 | 2011-10-20 | 2011-10-20 | 193d | start no earlier than 2011-10-20 |
| 860 | 1.11.2.1.755 | Time log 755 | 1d | 2011-10-21 | 2011-10-21 | 2011-10-21 | 2011-10-21 | 192d | start no earlier than 2011-10-21 |
| 861 | 1.11.2.1.756 | Time log 756 | 1d | 2011-10-22 | 2011-10-22 | 2011-10-22 | 2011-10-22 | 191d | start no earlier than 2011-10-22 |
| 862 | 1.11.2.1.757 | Time log 757 | 1d | 2011-10-23 | 2011-10-23 | 2011-10-23 | 2011-10-23 | 190d | start no earlier than 2011-10-23 |
| 863 | 1.11.2.1.758 | Time log 758 | 1d | 2011-10-24 | 2011-10-24 | 2011-10-24 | 2011-10-24 | 189d | start no earlier than 2011-10-24 |
| 864 | 1.11.2.1.759 | Time log 759 | 1d | 2011-10-25 | 2011-10-25 | 2011-10-25 | 2011-10-25 | 188d | start no earlier than 2011-10-25 |

| ID | WBS | Task | Duration | Start | Finish | Baseline 1 start | Baseline 1 finish | Total slack | Constraint |
| --- | --- | --- | --- | --- | --- | --- | --- | --- | --- |
| 865 | 1.11.2.1.760 | Time log 760 | 1d | 2011-10-26 | 2011-10-26 | 2011-10-26 | 2011-10-26 | 187d | start no earlier than 2011-10-26 |
| 866 | 1.11.2.1.761 | Time log 761 | 1d | 2011-10-27 | 2011-10-27 | 2011-10-27 | 2011-10-27 | 186d | start no earlier than 2011-10-27 |
| 867 | 1.11.2.1.762 | Time log 762 | 1d | 2011-10-28 | 2011-10-28 | 2011-10-28 | 2011-10-28 | 185d | start no earlier than 2011-10-28 |
| 868 | 1.11.2.1.763 | Time log 763 | 1d | 2011-10-29 | 2011-10-29 | 2011-10-29 | 2011-10-29 | 184d | start no earlier than 2011-10-29 |
| 869 | 1.11.2.1.764 | Time log 764 | 1d | 2011-10-30 | 2011-10-30 | 2011-10-30 | 2011-10-30 | 183d | start no earlier than 2011-10-30 |
| 870 | 1.11.2.1.765 | Time log 765 | 1d | 2011-10-31 | 2011-10-31 | 2011-10-31 | 2011-10-31 | 182d | start no earlier than 2011-10-31 |
| 871 | 1.11.2.1.766 | Time log 766 | 1d | 2011-11-01 | 2011-11-01 | 2011-11-01 | 2011-11-01 | 181d | start no earlier than 2011-11-01 |
| 872 | 1.11.2.1.767 | Time log 767 | 1d | 2011-11-02 | 2011-11-02 | 2011-11-02 | 2011-11-02 | 180d | start no earlier than 2011-11-02 |
| 873 | 1.11.2.1.768 | Time log 768 | 1d | 2011-11-03 | 2011-11-03 | 2011-11-03 | 2011-11-03 | 179d | start no earlier than 2011-11-03 |
| 874 | 1.11.2.1.769 | Time log 769 | 1d | 2011-11-04 | 2011-11-04 | 2011-11-04 | 2011-11-04 | 178d | start no earlier than 2011-11-04 |
| 875 | 1.11.2.1.770 | Time log 770 | 1d | 2011-11-05 | 2011-11-05 | 2011-11-05 | 2011-11-05 | 177d | start no earlier than 2011-11-05 |
| 876 | 1.11.2.1.771 | Time log 771 | 1d | 2011-11-06 | 2011-11-06 | 2011-11-06 | 2011-11-06 | 176d | start no earlier than 2011-11-06 |
| 877 | 1.11.2.1.772 | Time log 772 | 1d | 2011-11-07 | 2011-11-07 | 2011-11-07 | 2011-11-07 | 175d | start no earlier than 2011-11-07 |
| 878 | 1.11.2.1.773 | Time log 773 | 1d | 2011-11-08 | 2011-11-08 | 2011-11-08 | 2011-11-08 | 174d | start no earlier than 2011-11-08 |
| 879 | 1.11.2.1.774 | Time log 774 | 1d | 2011-11-09 | 2011-11-09 | 2011-11-09 | 2011-11-09 | 173d | start no earlier than 2011-11-09 |
| 880 | 1.11.2.1.775 | Time log 775 | 1d | 2011-11-10 | 2011-11-10 | 2011-11-10 | 2011-11-10 | 172d | start no earlier than 2011-11-10 |
| 881 | 1.11.2.1.776 | Time log 776 | 1d | 2011-11-11 | 2011-11-11 | 2011-11-11 | 2011-11-11 | 171d | start no earlier than 2011-11-11 |
| 882 | 1.11.2.1.777 | Time log 777 | 1d | 2011-11-12 | 2011-11-12 | 2011-11-12 | 2011-11-12 | 170d | start no earlier than 2011-11-12 |
| 883 | 1.11.2.1.778 | Time log 778 | 1d | 2011-11-13 | 2011-11-13 | 2011-11-13 | 2011-11-13 | 169d | start no earlier than 2011-11-13 |
| 884 | 1.11.2.1.779 | Time log 779 | 1d | 2011-11-14 | 2011-11-14 | 2011-11-14 | 2011-11-14 | 168d | start no earlier than 2011-11-14 |
| 885 | 1.11.2.1.780 | Time log 780 | 1d | 2011-11-15 | 2011-11-15 | 2011-11-15 | 2011-11-15 | 167d | start no earlier than 2011-11-15 |
| 886 | 1.11.2.1.781 | Time log 781 | 1d | 2011-11-16 | 2011-11-16 | 2011-11-16 | 2011-11-16 | 166d | start no earlier than 2011-11-16 |
| 887 | 1.11.2.1.782 | Time log 782 | 1d | 2011-11-17 | 2011-11-17 | 2011-11-17 | 2011-11-17 | 165d | start no earlier than 2011-11-17 |
| 888 | 1.11.2.1.783 | Time log 783 | 1d | 2011-11-18 | 2011-11-18 | 2011-11-18 | 2011-11-18 | 164d | start no earlier than 2011-11-18 |
| 889 | 1.11.2.1.784 | Time log 784 | 1d | 2011-11-19 | 2011-11-19 | 2011-11-19 | 2011-11-19 | 163d | start no earlier than 2011-11-19 |
| 890 | 1.11.2.1.785 | Time log 785 | 1d | 2011-11-20 | 2011-11-20 | 2011-11-20 | 2011-11-20 | 162d | start no earlier than 2011-11-20 |
| 891 | 1.11.2.1.786 | Time log 786 | 1d | 2011-11-21 | 2011-11-21 | 2011-11-21 | 2011-11-21 | 161d | start no earlier than 2011-11-21 |
| 892 | 1.11.2.1.787 | Time log 787 | 1d | 2011-11-22 | 2011-11-22 | 2011-11-22 | 2011-11-22 | 160d | start no earlier than 2011-11-22 |
| 893 | 1.11.2.1.788 | Time log 788 | 1d | 2011-11-23 | 2011-11-23 | 2011-11-23 | 2011-11-23 | 159d | start no earlier than 2011-11-23 |
| 894 | 1.11.2.1.789 | Time log 789 | 1d | 2011-11-24 | 2011-11-24 | 2011-11-24 | 2011-11-24 | 158d | start no earlier than 2011-11-24 |
| 895 | 1.11.2.1.790 | Time log 790 | 1d | 2011-11-25 | 2011-11-25 | 2011-11-25 | 2011-11-25 | 157d | start no earlier than 2011-11-25 |
| 896 | 1.11.2.1.791 | Time log 791 | 1d | 2011-11-26 | 2011-11-26 | 2011-11-26 | 2011-11-26 | 156d | start no earlier than 2011-11-26 |
| 897 | 1.11.2.1.792 | Time log 792 | 1d | 2011-11-27 | 2011-11-27 | 2011-11-27 | 2011-11-27 | 155d | start no earlier than 2011-11-27 |
| 898 | 1.11.2.1.793 | Time log 793 | 1d | 2011-11-28 | 2011-11-28 | 2011-11-28 | 2011-11-28 | 154d | start no earlier than 2011-11-28 |
| 899 | 1.11.2.1.794 | Time log 794 | 1d | 2011-11-29 | 2011-11-29 | 2011-11-29 | 2011-11-29 | 153d | start no earlier than 2011-11-29 |
| 900 | 1.11.2.1.795 | Time log 795 | 1d | 2011-11-30 | 2011-11-30 | 2011-11-30 | 2011-11-30 | 152d | start no earlier than 2011-11-30 |
| 901 | 1.11.2.1.796 | Time log 796 | 1d | 2011-12-01 | 2011-12-01 | 2011-12-01 | 2011-12-01 | 151d | start no earlier than 2011-12-01 |
| 902 | 1.11.2.1.797 | Time log 797 | 1d | 2011-12-02 | 2011-12-02 | 2011-12-02 | 2011-12-02 | 150d | start no earlier than 2011-12-02 |
| 903 | 1.11.2.1.798 | Time log 798 | 1d | 2011-12-03 | 2011-12-03 | 2011-12-03 | 2011-12-03 | 149d | start no earlier than 2011-12-03 |
| 904 | 1.11.2.1.799 | Time log 799 | 1d | 2011-12-04 | 2011-12-04 | 2011-12-04 | 2011-12-04 | 148d | start no earlier than 2011-12-04 |
| 905 | 1.11.2.1.800 | Time log 800 | 1d | 2011-12-05 | 2011-12-05 | 2011-12-05 | 2011-12-05 | 147d | start no earlier than 2011-12-05 |
| 906 | 1.11.2.1.801 | Time log 801 | 1d | 2011-12-06 | 2011-12-06 | 2011-12-06 | 2011-12-06 | 146d | start no earlier than 2011-12-06 |
| 907 | 1.11.2.1.802 | Time log 802 | 1d | 2011-12-07 | 2011-12-07 | 2011-12-07 | 2011-12-07 | 145d | start no earlier than 2011-12-07 |
| 908 | 1.11.2.1.803 | Time log 803 | 1d | 2011-12-08 | 2011-12-08 | 2011-12-08 | 2011-12-08 | 144d | start no earlier than 2011-12-08 |
| 909 | 1.11.2.1.804 | Time log 804 | 1d | 2011-12-09 | 2011-12-09 | 2011-12-09 | 2011-12-09 | 143d | start no earlier than 2011-12-09 |
| 910 | 1.11.2.1.805 | Time log 805 | 1d | 2011-12-10 | 2011-12-10 | 2011-12-10 | 2011-12-10 | 142d | start no earlier than 2011-12-10 |
| 911 | 1.11.2.1.806 | Time log 806 | 1d | 2011-12-11 | 2011-12-11 | 2011-12-11 | 2011-12-11 | 141d | start no earlier than 2011-12-11 |
| 912 | 1.11.2.1.807 | Time log 807 | 1d | 2011-12-12 | 2011-12-12 | 2011-12-12 | 2011-12-12 | 140d | start no earlier than 2011-12-12 |
| 913 | 1.11.2.1.808 | Time log 808 | 1d | 2011-12-13 | 2011-12-13 | 2011-12-13 | 2011-12-13 | 139d | start no earlier than 2011-12-13 |
| 914 | 1.11.2.1.809 | Time log 809 | 1d | 2011-12-14 | 2011-12-14 | 2011-12-14 | 2011-12-14 | 138d | start no earlier than 2011-12-14 |
| 915 | 1.11.2.1.810 | Time log 810 | 1d | 2011-12-15 | 2011-12-15 | 2011-12-15 | 2011-12-15 | 137d | start no earlier than 2011-12-15 |
| 916 | 1.11.2.1.811 | Time log 811 | 1d | 2011-12-16 | 2011-12-16 | 2011-12-16 | 2011-12-16 | 136d | start no earlier than 2011-12-16 |
| 917 | 1.11.2.1.812 | Time log 812 | 1d | 2011-12-17 | 2011-12-17 | 2011-12-17 | 2011-12-17 | 135d | start no earlier than 2011-12-17 |
| 918 | 1.11.2.1.813 | Time log 813 | 1d | 2011-12-18 | 2011-12-18 | 2011-12-18 | 2011-12-18 | 134d | start no earlier than 2011-12-18 |
| 919 | 1.11.2.1.814 | Time log 814 | 1d | 2011-12-19 | 2011-12-19 | 2011-12-19 | 2011-12-19 | 133d | start no earlier than 2011-12-19 |
| 920 | 1.11.2.1.815 | Time log 815 | 1d | 2011-12-20 | 2011-12-20 | 2011-12-20 | 2011-12-20 | 132d | start no earlier than 2011-12-20 |
| 921 | 1.11.2.1.816 | Time log 816 | 1d | 2011-12-21 | 2011-12-21 | 2011-12-21 | 2011-12-21 | 131d | start no earlier than 2011-12-21 |
| 922 | 1.11.2.1.817 | Time log 817 | 1d | 2011-12-22 | 2011-12-22 | 2011-12-22 | 2011-12-22 | 130d | start no earlier than 2011-12-22 |
| 923 | 1.11.2.1.818 | Time log 818 | 1d | 2011-12-23 | 2011-12-23 | 2011-12-23 | 2011-12-23 | 129d | start no earlier than 2011-12-23 |
| 924 | 1.11.2.1.819 | Time log 819 | 1d | 2011-12-24 | 2011-12-24 | 2011-12-24 | 2011-12-24 | 128d | start no earlier than 2011-12-24 |
| 925 | 1.11.2.1.820 | Time log 820 | 1d | 2011-12-25 | 2011-12-25 | 2011-12-25 | 2011-12-25 | 127d | start no earlier than 2011-12-25 |
| 926 | 1.11.2.1.821 | Time log 821 | 1d | 2011-12-26 | 2011-12-26 | 2011-12-26 | 2011-12-26 | 126d | start no earlier than 2011-12-26 |
| 927 | 1.11.2.1.822 | Time log 822 | 1d | 2011-12-27 | 2011-12-27 | 2011-12-27 | 2011-12-27 | 125d | start no earlier than 2011-12-27 |
| 928 | 1.11.2.1.823 | Time log 823 | 1d | 2011-12-28 | 2011-12-28 | 2011-12-28 | 2011-12-28 | 124d | start no earlier than 2011-12-28 |
| 929 | 1.11.2.1.824 | Time log 824 | 1d | 2011-12-29 | 2011-12-29 | 2011-12-29 | 2011-12-29 | 123d | start no earlier than 2011-12-29 |
| 930 | 1.11.2.1.825 | Time log 825 | 1d | 2011-12-30 | 2011-12-30 | 2011-12-30 | 2011-12-30 | 122d | start no earlier than 2011-12-30 |
| 931 | 1.11.2.1.826 | Time log 826 | 1d | 2011-12-31 | 2011-12-31 | 2011-12-31 | 2011-12-31 | 121d | start no earlier than 2011-12-31 |
| 932 | 1.11.2.1.827 | Time log 827 | 1d | 2012-01-01 | 2012-01-01 | 2012-01-01 | 2012-01-01 | 120d | start no earlier than 2012-01-01 |
| 933 | 1.11.2.1.828 | Time log 828 | 1d | 2012-01-02 | 2012-01-02 | 2012-01-02 | 2012-01-02 | 119d | start no earlier than 2012-01-02 |
| 934 | 1.11.2.1.829 | Time log 829 | 1d | 2012-01-03 | 2012-01-03 | 2012-01-03 | 2012-01-03 | 118d | start no earlier than 2012-01-03 |

| ID | WBS | Task | Duration | Start | Finish | Baseline 1 start | Baseline 1 finish | Total slack | Constraint |
| --- | --- | --- | --- | --- | --- | --- | --- | --- | --- |
| 935 | 1.11.2.1.830 | Time log 830 | 1d | 2012-01-04 | 2012-01-04 | 2012-01-04 | 2012-01-04 | 117d | start no earlier than 2012-01-04 |
| 936 | 1.11.2.1.831 | Time log 831 | 1d | 2012-01-05 | 2012-01-05 | 2012-01-05 | 2012-01-05 | 116d | start no earlier than 2012-01-05 |
| 937 | 1.11.2.1.832 | Time log 832 | 1d | 2012-01-06 | 2012-01-06 | 2012-01-06 | 2012-01-06 | 115d | start no earlier than 2012-01-06 |
| 938 | 1.11.2.1.833 | Time log 833 | 1d | 2012-01-07 | 2012-01-07 | 2012-01-07 | 2012-01-07 | 114d | start no earlier than 2012-01-07 |
| 939 | 1.11.2.1.834 | Time log 834 | 1d | 2012-01-08 | 2012-01-08 | 2012-01-08 | 2012-01-08 | 113d | start no earlier than 2012-01-08 |
| 940 | 1.11.2.1.835 | Time log 835 | 1d | 2012-01-09 | 2012-01-09 | 2012-01-09 | 2012-01-09 | 112d | start no earlier than 2012-01-09 |
| 941 | 1.11.2.1.836 | Time log 836 | 1d | 2012-01-10 | 2012-01-10 | 2012-01-10 | 2012-01-10 | 111d | start no earlier than 2012-01-10 |
| 942 | 1.11.2.1.837 | Time log 837 | 1d | 2012-01-11 | 2012-01-11 | 2012-01-11 | 2012-01-11 | 110d | start no earlier than 2012-01-11 |
| 943 | 1.11.2.1.838 | Time log 838 | 1d | 2012-01-12 | 2012-01-12 | 2012-01-12 | 2012-01-12 | 109d | start no earlier than 2012-01-12 |
| 944 | 1.11.2.1.839 | Time log 839 | 1d | 2012-01-13 | 2012-01-13 | 2012-01-13 | 2012-01-13 | 108d | start no earlier than 2012-01-13 |
| 945 | 1.11.2.1.840 | Time log 840 | 1d | 2012-01-14 | 2012-01-14 | 2012-01-14 | 2012-01-14 | 107d | start no earlier than 2012-01-14 |
| 946 | 1.11.2.1.841 | Time log 841 | 1d | 2012-01-15 | 2012-01-15 | 2012-01-15 | 2012-01-15 | 106d | start no earlier than 2012-01-15 |
| 947 | 1.11.2.1.842 | Time log 842 | 1d | 2012-01-16 | 2012-01-16 | 2012-01-16 | 2012-01-16 | 105d | start no earlier than 2012-01-16 |
| 948 | 1.11.2.1.843 | Time log 843 | 1d | 2012-01-17 | 2012-01-17 | 2012-01-17 | 2012-01-17 | 104d | start no earlier than 2012-01-17 |
| 949 | 1.11.2.1.844 | Time log 844 | 1d | 2012-01-18 | 2012-01-18 | 2012-01-18 | 2012-01-18 | 103d | start no earlier than 2012-01-18 |
| 950 | 1.11.2.1.845 | Time log 845 | 1d | 2012-01-19 | 2012-01-19 | 2012-01-19 | 2012-01-19 | 102d | start no earlier than 2012-01-19 |
| 951 | 1.11.2.1.846 | Time log 846 | 1d | 2012-01-20 | 2012-01-20 | 2012-01-20 | 2012-01-20 | 101d | start no earlier than 2012-01-20 |
| 952 | 1.11.2.1.847 | Time log 847 | 1d | 2012-01-21 | 2012-01-21 | 2012-01-21 | 2012-01-21 | 100d | start no earlier than 2012-01-21 |
| 953 | 1.11.2.1.848 | Time log 848 | 1d | 2012-01-22 | 2012-01-22 | 2012-01-22 | 2012-01-22 | 99d | start no earlier than 2012-01-22 |
| 954 | 1.11.2.1.849 | Time log 849 | 1d | 2012-01-23 | 2012-01-23 | 2012-01-23 | 2012-01-23 | 98d | start no earlier than 2012-01-23 |
| 955 | 1.11.2.1.850 | Time log 850 | 1d | 2012-01-24 | 2012-01-24 | 2012-01-24 | 2012-01-24 | 97d | start no earlier than 2012-01-24 |
| 956 | 1.11.2.1.851 | Time log 851 | 1d | 2012-01-25 | 2012-01-25 | 2012-01-25 | 2012-01-25 | 96d | start no earlier than 2012-01-25 |
| 957 | 1.11.2.1.852 | Time log 852 | 1d | 2012-01-26 | 2012-01-26 | 2012-01-26 | 2012-01-26 | 95d | start no earlier than 2012-01-26 |
| 958 | 1.11.2.1.853 | Time log 853 | 1d | 2012-01-27 | 2012-01-27 | 2012-01-27 | 2012-01-27 | 94d | start no earlier than 2012-01-27 |
| 959 | 1.11.2.1.854 | Time log 854 | 1d | 2012-01-28 | 2012-01-28 | 2012-01-28 | 2012-01-28 | 93d | start no earlier than 2012-01-28 |
| 960 | 1.11.2.1.855 | Time log 855 | 1d | 2012-01-29 | 2012-01-29 | 2012-01-29 | 2012-01-29 | 92d | start no earlier than 2012-01-29 |
| 961 | 1.11.2.1.856 | Time log 856 | 1d | 2012-01-30 | 2012-01-30 | 2012-01-30 | 2012-01-30 | 91d | start no earlier than 2012-01-30 |
| 962 | 1.11.2.1.857 | Time log 857 | 1d | 2012-01-31 | 2012-01-31 | 2012-01-31 | 2012-01-31 | 90d | start no earlier than 2012-01-31 |
| 963 | 1.11.2.1.858 | Time log 858 | 1d | 2012-02-01 | 2012-02-01 | 2012-02-01 | 2012-02-01 | 89d | start no earlier than 2012-02-01 |
| 964 | 1.11.2.1.859 | Time log 859 | 1d | 2012-02-02 | 2012-02-02 | 2012-02-02 | 2012-02-02 | 88d | start no earlier than 2012-02-02 |
| 965 | 1.11.2.1.860 | Time log 860 | 1d | 2012-02-03 | 2012-02-03 | 2012-02-03 | 2012-02-03 | 87d | start no earlier than 2012-02-03 |
| 966 | 1.11.2.1.861 | Time log 861 | 1d | 2012-02-04 | 2012-02-04 | 2012-02-04 | 2012-02-04 | 86d | start no earlier than 2012-02-04 |
| 967 | 1.11.2.1.862 | Time log 862 | 1d | 2012-02-05 | 2012-02-05 | 2012-02-05 | 2012-02-05 | 85d | start no earlier than 2012-02-05 |
| 968 | 1.11.2.1.863 | Time log 863 | 1d | 2012-02-06 | 2012-02-06 | 2012-02-06 | 2012-02-06 | 84d | start no earlier than 2012-02-06 |
| 969 | 1.11.2.1.864 | Time log 864 | 1d | 2012-02-07 | 2012-02-07 | 2012-02-07 | 2012-02-07 | 83d | start no earlier than 2012-02-07 |
| 970 | 1.11.2.1.865 | Time log 865 | 1d | 2012-02-08 | 2012-02-08 | 2012-02-08 | 2012-02-08 | 82d | start no earlier than 2012-02-08 |
| 971 | 1.11.2.1.866 | Time log 866 | 1d | 2012-02-09 | 2012-02-09 | 2012-02-09 | 2012-02-09 | 81d | start no earlier than 2012-02-09 |
| 972 | 1.11.2.1.867 | Time log 867 | 1d | 2012-02-10 | 2012-02-10 | 2012-02-10 | 2012-02-10 | 80d | start no earlier than 2012-02-10 |
| 973 | 1.11.2.1.868 | Time log 868 | 1d | 2012-02-11 | 2012-02-11 | 2012-02-11 | 2012-02-11 | 79d | start no earlier than 2012-02-11 |
| 974 | 1.11.2.1.869 | Time log 869 | 1d | 2012-02-12 | 2012-02-12 | 2012-02-12 | 2012-02-12 | 78d | start no earlier than 2012-02-12 |
| 975 | 1.11.2.1.870 | Time log 870 | 1d | 2012-02-13 | 2012-02-13 | 2012-02-13 | 2012-02-13 | 77d | start no earlier than 2012-02-13 |
| 976 | 1.11.2.1.871 | Time log 871 | 1d | 2012-02-14 | 2012-02-14 | 2012-02-14 | 2012-02-14 | 76d | start no earlier than 2012-02-14 |
| 977 | 1.11.2.1.872 | Time log 872 | 1d | 2012-02-15 | 2012-02-15 | 2012-02-15 | 2012-02-15 | 75d | start no earlier than 2012-02-15 |
| 978 | 1.11.2.1.873 | Time log 873 | 1d | 2012-02-16 | 2012-02-16 | 2012-02-16 | 2012-02-16 | 74d | start no earlier than 2012-02-16 |
| 979 | 1.11.2.1.874 | Time log 874 | 1d | 2012-02-17 | 2012-02-17 | 2012-02-17 | 2012-02-17 | 73d | start no earlier than 2012-02-17 |
| 980 | 1.11.2.1.875 | Time log 875 | 1d | 2012-02-18 | 2012-02-18 | 2012-02-18 | 2012-02-18 | 72d | start no earlier than 2012-02-18 |
| 981 | 1.11.2.1.876 | Time log 876 | 1d | 2012-02-19 | 2012-02-19 | 2012-02-19 | 2012-02-19 | 71d | start no earlier than 2012-02-19 |
| 982 | 1.11.2.1.877 | Time log 877 | 1d | 2012-02-20 | 2012-02-20 | 2012-02-20 | 2012-02-20 | 70d | start no earlier than 2012-02-20 |
| 983 | 1.11.2.1.878 | Time log 878 | 1d | 2012-02-21 | 2012-02-21 | 2012-02-21 | 2012-02-21 | 69d | start no earlier than 2012-02-21 |
| 984 | 1.11.2.1.879 | Time log 879 | 1d | 2012-02-22 | 2012-02-22 | 2012-02-22 | 2012-02-22 | 68d | start no earlier than 2012-02-22 |
| 985 | 1.11.2.1.880 | Time log 880 | 1d | 2012-02-23 | 2012-02-23 | 2012-02-23 | 2012-02-23 | 67d | start no earlier than 2012-02-23 |
| 986 | 1.11.2.1.881 | Time log 881 | 1d | 2012-02-24 | 2012-02-24 | 2012-02-24 | 2012-02-24 | 66d | start no earlier than 2012-02-24 |
| 987 | 1.11.2.1.882 | Time log 882 | 1d | 2012-02-25 | 2012-02-25 | 2012-02-25 | 2012-02-25 | 65d | start no earlier than 2012-02-25 |
| 988 | 1.11.2.1.883 | Time log 883 | 1d | 2012-02-26 | 2012-02-26 | 2012-02-26 | 2012-02-26 | 64d | start no earlier than 2012-02-26 |
| 989 | 1.11.2.1.884 | Time log 884 | 1d | 2012-02-27 | 2012-02-27 | 2012-02-27 | 2012-02-27 | 63d | start no earlier than 2012-02-27 |
| 990 | 1.11.2.1.885 | Time log 885 | 1d | 2012-02-28 | 2012-02-28 | 2012-02-28 | 2012-02-28 | 62d | start no earlier than 2012-02-28 |
| 991 | 1.11.2.1.886 | Time log 886 | 1d | 2012-02-29 | 2012-02-29 | 2012-02-29 | 2012-02-29 | 61d | start no earlier than 2012-02-29 |
| 992 | 1.11.2.1.887 | Time log 887 | 1d | 2012-03-01 | 2012-03-01 | 2012-03-01 | 2012-03-01 | 60d | start no earlier than 2012-03-01 |
| 993 | 1.11.2.1.888 | Time log 888 | 1d | 2012-03-02 | 2012-03-02 | 2012-03-02 | 2012-03-02 | 59d | start no earlier than 2012-03-02 |
| 994 | 1.11.2.1.889 | Time log 889 | 1d | 2012-03-03 | 2012-03-03 | 2012-03-03 | 2012-03-03 | 58d | start no earlier than 2012-03-03 |
| 995 | 1.11.2.1.890 | Time log 890 | 1d | 2012-03-04 | 2012-03-04 | 2012-03-04 | 2012-03-04 | 57d | start no earlier than 2012-03-04 |
| 996 | 1.11.2.1.891 | Time log 891 | 1d | 2012-03-05 | 2012-03-05 | 2012-03-05 | 2012-03-05 | 56d | start no earlier than 2012-03-05 |
| 997 | 1.11.2.1.892 | Time log 892 | 1d | 2012-03-06 | 2012-03-06 | 2012-03-06 | 2012-03-06 | 55d | start no earlier than 2012-03-06 |
| 998 | 1.11.2.1.893 | Time log 893 | 1d | 2012-03-07 | 2012-03-07 | 2012-03-07 | 2012-03-07 | 54d | start no earlier than 2012-03-07 |
| 999 | 1.11.2.1.894 | Time log 894 | 1d | 2012-03-08 | 2012-03-08 | 2012-03-08 | 2012-03-08 | 53d | start no earlier than 2012-03-08 |
| 1000 | 1.11.2.1.895 | Time log 895 | 1d | 2012-03-09 | 2012-03-09 | 2012-03-09 | 2012-03-09 | 52d | start no earlier than 2012-03-09 |
| 1001 | 1.11.2.1.896 | Time log 896 | 1d | 2012-03-10 | 2012-03-10 | 2012-03-10 | 2012-03-10 | 51d | start no earlier than 2012-03-10 |
| 1002 | 1.11.2.1.897 | Time log 897 | 1d | 2012-03-11 | 2012-03-11 | 2012-03-11 | 2012-03-11 | 50d | start no earlier than 2012-03-11 |
| 1003 | 1.11.2.1.898 | Time log 898 | 1d | 2012-03-12 | 2012-03-12 | 2012-03-12 | 2012-03-12 | 49d | start no earlier than 2012-03-12 |
| 1004 | 1.11.2.1.899 | Time log 899 | 1d | 2012-03-13 | 2012-03-13 | 2012-03-13 | 2012-03-13 | 48d | start no earlier than 2012-03-13 |

| ID | WBS | Task | Duration | Start | Finish | Baseline 1 start | Baseline 1 finish | Total slack | Constraint |
| --- | --- | --- | --- | --- | --- | --- | --- | --- | --- |
| 1005 | 1.11.2.1.900 | Time log 900 | 1d | 2012-03-14 | 2012-03-14 | 2012-03-14 | 2012-03-14 | 47d | start no earlier than 2012-03-14 |
| 1006 | 1.11.2.1.901 | Time log 901 | 1d | 2012-03-15 | 2012-03-15 | 2012-03-15 | 2012-03-15 | 46d | start no earlier than 2012-03-15 |
| 1007 | 1.11.2.1.902 | Time log 902 | 1d | 2012-03-16 | 2012-03-16 | 2012-03-16 | 2012-03-16 | 45d | start no earlier than 2012-03-16 |
| 1008 | 1.11.2.1.903 | Time log 903 | 1d | 2012-03-17 | 2012-03-17 | 2012-03-17 | 2012-03-17 | 44d | start no earlier than 2012-03-17 |
| 1009 | 1.11.2.1.904 | Time log 904 | 1d | 2012-03-18 | 2012-03-18 | 2012-03-18 | 2012-03-18 | 43d | start no earlier than 2012-03-18 |
| 1010 | 1.11.2.1.905 | Time log 905 | 1d | 2012-03-19 | 2012-03-19 | 2012-03-19 | 2012-03-19 | 42d | start no earlier than 2012-03-19 |
| 1011 | 1.11.2.1.906 | Time log 906 | 1d | 2012-03-20 | 2012-03-20 | 2012-03-20 | 2012-03-20 | 41d | start no earlier than 2012-03-20 |
| 1012 | 1.11.2.1.907 | Time log 907 | 1d | 2012-03-21 | 2012-03-21 | 2012-03-21 | 2012-03-21 | 40d | start no earlier than 2012-03-21 |
| 1013 | 1.11.2.1.908 | Time log 908 | 1d | 2012-03-22 | 2012-03-22 | 2012-03-22 | 2012-03-22 | 39d | start no earlier than 2012-03-22 |
| 1014 | 1.11.2.1.909 | Time log 909 | 1d | 2012-03-23 | 2012-03-23 | 2012-03-23 | 2012-03-23 | 38d | start no earlier than 2012-03-23 |
| 1015 | 1.11.2.1.910 | Time log 910 | 1d | 2012-03-24 | 2012-03-24 | 2012-03-24 | 2012-03-24 | 37d | start no earlier than 2012-03-24 |
| 1016 | 1.11.2.1.911 | Time log 911 | 1d | 2012-03-25 | 2012-03-25 | 2012-03-25 | 2012-03-25 | 36d | start no earlier than 2012-03-25 |
| 1017 | 1.11.2.1.912 | Time log 912 | 1d | 2012-03-26 | 2012-03-26 | 2012-03-26 | 2012-03-26 | 35d | start no earlier than 2012-03-26 |
| 1018 | 1.11.2.1.913 | Time log 913 | 1d | 2012-03-27 | 2012-03-27 | 2012-03-27 | 2012-03-27 | 34d | start no earlier than 2012-03-27 |
| 1019 | 1.11.2.1.914 | Time log 914 | 1d | 2012-03-28 | 2012-03-28 | 2012-03-28 | 2012-03-28 | 33d | start no earlier than 2012-03-28 |
| 1020 | 1.11.2.1.915 | Time log 915 | 1d | 2012-03-29 | 2012-03-29 | 2012-03-29 | 2012-03-29 | 32d | start no earlier than 2012-03-29 |
| 1021 | 1.11.2.1.916 | Time log 916 | 1d | 2012-03-30 | 2012-03-30 | 2012-03-30 | 2012-03-30 | 31d | start no earlier than 2012-03-30 |
| 1022 | 1.11.2.1.917 | Time log 917 | 1d | 2012-03-31 | 2012-03-31 | 2012-03-31 | 2012-03-31 | 30d | start no earlier than 2012-03-31 |
| 1023 | 1.11.2.1.918 | Time log 918 | 1d | 2012-04-01 | 2012-04-01 | 2012-04-01 | 2012-04-01 | 29d | start no earlier than 2012-04-01 |
| 1024 | 1.11.2.1.919 | Time log 919 | 1d | 2012-04-02 | 2012-04-02 | 2012-04-02 | 2012-04-02 | 28d | start no earlier than 2012-04-02 |
| 1025 | 1.11.2.1.920 | Time log 920 | 1d | 2012-04-03 | 2012-04-03 | 2012-04-03 | 2012-04-03 | 27d | start no earlier than 2012-04-03 |
| 1026 | 1.11.2.1.921 | Time log 921 | 1d | 2012-04-04 | 2012-04-04 | 2012-04-04 | 2012-04-04 | 26d | start no earlier than 2012-04-04 |
| 1027 | 1.11.2.1.922 | Time log 922 | 1d | 2012-04-05 | 2012-04-05 | 2012-04-05 | 2012-04-05 | 25d | start no earlier than 2012-04-05 |
| 1028 | 1.11.2.1.923 | Time log 923 | 1d | 2012-04-06 | 2012-04-06 | 2012-04-06 | 2012-04-06 | 24d | start no earlier than 2012-04-06 |
| 1029 | 1.11.2.1.924 | Time log 924 | 1d | 2012-04-07 | 2012-04-07 | 2012-04-07 | 2012-04-07 | 23d | start no earlier than 2012-04-07 |
| 1030 | 1.11.2.1.925 | Time log 925 | 1d | 2012-04-08 | 2012-04-08 | 2012-04-08 | 2012-04-08 | 22d | start no earlier than 2012-04-08 |
| 1031 | 1.11.2.1.926 | Time log 926 | 1d | 2012-04-09 | 2012-04-09 | 2012-04-09 | 2012-04-09 | 21d | start no earlier than 2012-04-09 |
| 1032 | 1.11.2.1.927 | Time log 927 | 1d | 2012-04-10 | 2012-04-10 | 2012-04-10 | 2012-04-10 | 20d | start no earlier than 2012-04-10 |
| 1033 | 1.11.2.1.928 | Time log 928 | 1d | 2012-04-11 | 2012-04-11 | 2012-04-11 | 2012-04-11 | 19d | start no earlier than 2012-04-11 |
| 1034 | 1.11.2.1.929 | Time log 929 | 1d | 2012-04-12 | 2012-04-12 | 2012-04-12 | 2012-04-12 | 18d | start no earlier than 2012-04-12 |
| 1035 | 1.11.2.1.930 | Time log 930 | 1d | 2012-04-13 | 2012-04-13 | 2012-04-13 | 2012-04-13 | 17d | start no earlier than 2012-04-13 |
| 1036 | 1.11.2.1.931 | Time log 931 | 1d | 2012-04-14 | 2012-04-14 | 2012-04-14 | 2012-04-14 | 16d | start no earlier than 2012-04-14 |
| 1037 | 1.11.2.1.932 | Time log 932 | 1d | 2012-04-15 | 2012-04-15 | 2012-04-15 | 2012-04-15 | 15d | start no earlier than 2012-04-15 |
| 1038 | 1.11.2.1.933 | Time log 933 | 1d | 2012-04-16 | 2012-04-16 | 2012-04-16 | 2012-04-16 | 14d | start no earlier than 2012-04-16 |
| 1039 | 1.11.2.1.934 | Time log 934 | 1d | 2012-04-17 | 2012-04-17 | 2012-04-17 | 2012-04-17 | 13d | start no earlier than 2012-04-17 |
| 1040 | 1.11.2.1.935 | Time log 935 | 1d | 2012-04-18 | 2012-04-18 | 2012-04-18 | 2012-04-18 | 12d | start no earlier than 2012-04-18 |
| 1041 | 1.11.2.1.936 | Time log 936 | 1d | 2012-04-19 | 2012-04-19 | 2012-04-19 | 2012-04-19 | 11d | start no earlier than 2012-04-19 |
| 1042 | 1.11.2.1.937 | Time log 937 | 1d | 2012-04-20 | 2012-04-20 | 2012-04-20 | 2012-04-20 | 10d | start no earlier than 2012-04-20 |
| 1043 | 1.11.2.1.938 | Time log 938 | 1d | 2012-04-21 | 2012-04-21 | 2012-04-21 | 2012-04-21 | 9d | start no earlier than 2012-04-21 |
| 1044 | 1.11.2.1.939 | Time log 939 | 1d | 2012-04-22 | 2012-04-22 | 2012-04-22 | 2012-04-22 | 8d | start no earlier than 2012-04-22 |
| 1045 | 1.11.2.1.940 | Time log 940 | 1d | 2012-04-23 | 2012-04-23 | 2012-04-23 | 2012-04-23 | 7d | start no earlier than 2012-04-23 |
| 1046 | 1.11.2.1.941 | Time log 941 | 1d | 2012-04-24 | 2012-04-24 | 2012-04-24 | 2012-04-24 | 6d | start no earlier than 2012-04-24 |
| 1047 | 1.11.2.1.942 | Time log 942 | 1d | 2012-04-25 | 2012-04-25 | 2012-04-25 | 2012-04-25 | 5d | start no earlier than 2012-04-25 |
| 1048 | 1.11.2.1.943 | Time log 943 | 1d | 2012-04-26 | 2012-04-26 | 2012-04-26 | 2012-04-26 | 4d | start no earlier than 2012-04-26 |
| 1049 | 1.11.2.1.944 | Time log 944 | 1d | 2012-04-27 | 2012-04-27 | 2012-04-27 | 2012-04-27 | 3d | start no earlier than 2012-04-27 |
| 1050 | 1.11.2.1.945 | Time log 945 | 1d | 2012-04-28 | 2012-04-28 | 2012-04-28 | 2012-04-28 | 2d | start no earlier than 2012-04-28 |
| 1051 | 1.11.2.1.946 | Time log 946 | 1d | 2012-04-29 | 2012-04-29 | 2012-04-29 | 2012-04-29 | 1d | start no earlier than 2012-04-29 |
| 1052 | 1.11.2.1.947 | Time log 947 | 1d | 2012-04-30 | 2012-04-30 | 2012-04-30 | 2012-04-30 | 0d | start no earlier than 2012-04-30 |

| ID | WBS | Task | Duration | Start | Finish | Baseline 1 start | Baseline 1 finish | Total slack | Constraint | Resources | Work |
| --- | --- | --- | --- | --- | --- | --- | --- | --- | --- | --- | --- |
| 1053 | 1.11.2.2 | **Weekly Report** | 210.12d | 2011-10-01 | 2012-04-28 | 2011-10-01 | 2012-04-28 | 2.88d |  | Nhung | 1681h |
| 1054 | 1.11.2.2.1 | Weekly Report 1 | 1h | 2011-10-01 | 2011-10-01 | 2011-10-01 | 2011-10-01 | 212.88d | start no earlier than 2011-10-01 |  |  |
| 1055 | 1.11.2.2.2 | Weekly Report 2 | 1h | 2011-10-08 | 2011-10-08 | 2011-10-08 | 2011-10-08 | 205.88d | start no earlier than 2011-10-08 |  |  |
| 1056 | 1.11.2.2.3 | Weekly Report 3 | 1h | 2011-10-15 | 2011-10-15 | 2011-10-15 | 2011-10-15 | 198.88d | start no earlier than 2011-10-15 |  |  |
| 1057 | 1.11.2.2.4 | Weekly Report 4 | 1h | 2011-10-22 | 2011-10-22 | 2011-10-22 | 2011-10-22 | 191.88d | start no earlier than 2011-10-22 |  |  |
| 1058 | 1.11.2.2.5 | Weekly Report 5 | 1h | 2011-10-29 | 2011-10-29 | 2011-10-29 | 2011-10-29 | 184.88d | start no earlier than 2011-10-29 |  |  |
| 1059 | 1.11.2.2.6 | Weekly Report 6 | 1h | 2011-11-05 | 2011-11-05 | 2011-11-05 | 2011-11-05 | 177.88d | start no earlier than 2011-11-05 |  |  |
| 1060 | 1.11.2.2.7 | Weekly Report 7 | 1h | 2011-11-12 | 2011-11-12 | 2011-11-12 | 2011-11-12 | 170.88d | start no earlier than 2011-11-12 |  |  |
| 1061 | 1.11.2.2.8 | Weekly Report 8 | 1h | 2011-11-19 | 2011-11-19 | 2011-11-19 | 2011-11-19 | 163.88d | start no earlier than 2011-11-19 |  |  |
| 1062 | 1.11.2.2.9 | Weekly Report 9 | 1h | 2011-11-26 | 2011-11-26 | 2011-11-26 | 2011-11-26 | 156.88d | start no earlier than 2011-11-26 |  |  |
| 1063 | 1.11.2.2.10 | Weekly Report 10 | 1h | 2011-12-03 | 2011-12-03 | 2011-12-03 | 2011-12-03 | 149.88d | start no earlier than 2011-12-03 |  |  |
| 1064 | 1.11.2.2.11 | Weekly Report 11 | 1h | 2011-12-10 | 2011-12-10 | 2011-12-10 | 2011-12-10 | 142.88d | start no earlier than 2011-12-10 |  |  |
| 1065 | 1.11.2.2.12 | Weekly Report 12 | 1h | 2011-12-17 | 2011-12-17 | 2011-12-17 | 2011-12-17 | 135.88d | start no earlier than 2011-12-17 |  |  |
| 1066 | 1.11.2.2.13 | Weekly Report 13 | 1h | 2011-12-24 | 2011-12-24 | 2011-12-24 | 2011-12-24 | 128.88d | start no earlier than 2011-12-24 |  |  |
| 1067 | 1.11.2.2.14 | Weekly Report 14 | 1h | 2011-12-31 | 2011-12-31 | 2011-12-31 | 2011-12-31 | 121.88d | start no earlier than 2011-12-31 |  |  |
| 1068 | 1.11.2.2.15 | Weekly Report 15 | 1h | 2012-01-07 | 2012-01-07 | 2012-01-07 | 2012-01-07 | 114.88d | start no earlier than 2012-01-07 |  |  |
| 1069 | 1.11.2.2.16 | Weekly Report 16 | 1h | 2012-01-14 | 2012-01-14 | 2012-01-14 | 2012-01-14 | 107.88d | start no earlier than 2012-01-14 |  |  |
| 1070 | 1.11.2.2.17 | Weekly Report 17 | 1h | 2012-01-21 | 2012-01-21 | 2012-01-21 | 2012-01-21 | 100.88d | start no earlier than 2012-01-21 |  |  |
| 1071 | 1.11.2.2.18 | Weekly Report 18 | 1h | 2012-01-28 | 2012-01-28 | 2012-01-28 | 2012-01-28 | 93.88d | start no earlier than 2012-01-28 |  |  |
| 1072 | 1.11.2.2.19 | Weekly Report 19 | 1h | 2012-02-04 | 2012-02-04 | 2012-02-04 | 2012-02-04 | 86.88d | start no earlier than 2012-02-04 |  |  |
| 1073 | 1.11.2.2.20 | Weekly Report 20 | 1h | 2012-02-11 | 2012-02-11 | 2012-02-11 | 2012-02-11 | 79.88d | start no earlier than 2012-02-11 |  |  |
| 1074 | 1.11.2.2.21 | Weekly Report 21 | 1h | 2012-02-18 | 2012-02-18 | 2012-02-18 | 2012-02-18 | 72.88d | start no earlier than 2012-02-18 |  |  |
| 1075 | 1.11.2.2.22 | Weekly Report 22 | 1h | 2012-02-25 | 2012-02-25 | 2012-02-25 | 2012-02-25 | 65.88d | start no earlier than 2012-02-25 |  |  |
| 1076 | 1.11.2.2.23 | Weekly Report 23 | 1h | 2012-03-03 | 2012-03-03 | 2012-03-03 | 2012-03-03 | 58.88d | start no earlier than 2012-03-03 |  |  |
| 1077 | 1.11.2.2.24 | Weekly Report 24 | 1h | 2012-03-10 | 2012-03-10 | 2012-03-10 | 2012-03-10 | 51.88d | start no earlier than 2012-03-10 |  |  |
| 1078 | 1.11.2.2.25 | Weekly Report 25 | 1h | 2012-03-17 | 2012-03-17 | 2012-03-17 | 2012-03-17 | 44.88d | start no earlier than 2012-03-17 |  |  |
| 1079 | 1.11.2.2.26 | Weekly Report 26 | 1h | 2012-03-24 | 2012-03-24 | 2012-03-24 | 2012-03-24 | 37.88d | start no earlier than 2012-03-24 |  |  |
| 1080 | 1.11.2.2.27 | Weekly Report 27 | 1h | 2012-03-31 | 2012-03-31 | 2012-03-31 | 2012-03-31 | 30.88d | start no earlier than 2012-03-31 |  |  |
| 1081 | 1.11.2.2.28 | Weekly Report 28 | 1h | 2012-04-07 | 2012-04-07 | 2012-04-07 | 2012-04-07 | 23.88d | start no earlier than 2012-04-07 |  |  |
| 1082 | 1.11.2.2.29 | Weekly Report 29 | 1h | 2012-04-14 | 2012-04-14 | 2012-04-14 | 2012-04-14 | 16.88d | start no earlier than 2012-04-14 |  |  |
| 1083 | 1.11.2.2.30 | Weekly Report 30 | 1h | 2012-04-21 | 2012-04-21 | 2012-04-21 | 2012-04-21 | 9.88d | start no earlier than 2012-04-21 |  |  |
| 1084 | 1.11.2.2.31 | Weekly Report 31 | 1h | 2012-04-28 | 2012-04-28 | 2012-04-28 | 2012-04-28 | 2.88d | start no earlier than 2012-04-28 |  |  |

| ID | WBS | Task | Duration | Start | Finish | Baseline 1 start | Baseline 1 finish | Total slack | Constraint | Resources | Work |
| --- | --- | --- | --- | --- | --- | --- | --- | --- | --- | --- | --- |
| 1085 | 1.11.2.3 | **Weekly evaluate** | 70.12d | 2012-02-20 | 2012-04-30 | 2012-02-20 | 2012-04-30 | 0.88d |  | Đặng; Lộc; Nguyên; Nhung; Quyết; Tân; Tùng; Tường | 4488h |
| 1086 | 1.11.2.3.1 | Weekly evaluate 1 | 1h | 2012-02-20 | 2012-02-20 | 2012-02-20 | 2012-02-20 | 70.88d | start no earlier than 2012-02-20 |  |  |
| 1087 | 1.11.2.3.2 | Weekly evaluate 2 | 1h | 2012-02-27 | 2012-02-27 | 2012-02-27 | 2012-02-27 | 63.88d | start no earlier than 2012-02-27 |  |  |
| 1088 | 1.11.2.3.3 | Weekly evaluate 3 | 1h | 2012-03-05 | 2012-03-05 | 2012-03-05 | 2012-03-05 | 56.88d | start no earlier than 2012-03-05 |  |  |
| 1089 | 1.11.2.3.4 | Weekly evaluate 4 | 1h | 2012-03-12 | 2012-03-12 | 2012-03-12 | 2012-03-12 | 49.88d | start no earlier than 2012-03-12 |  |  |
| 1090 | 1.11.2.3.5 | Weekly evaluate 5 | 1h | 2012-03-19 | 2012-03-19 | 2012-03-19 | 2012-03-19 | 42.88d | start no earlier than 2012-03-19 |  |  |
| 1091 | 1.11.2.3.6 | Weekly evaluate 6 | 1h | 2012-03-26 | 2012-03-26 | 2012-03-26 | 2012-03-26 | 35.88d | start no earlier than 2012-03-26 |  |  |
| 1092 | 1.11.2.3.7 | Weekly evaluate 7 | 1h | 2012-04-02 | 2012-04-02 | 2012-04-02 | 2012-04-02 | 28.88d | start no earlier than 2012-04-02 |  |  |
| 1093 | 1.11.2.3.8 | Weekly evaluate 8 | 1h | 2012-04-09 | 2012-04-09 | 2012-04-09 | 2012-04-09 | 21.88d | start no earlier than 2012-04-09 |  |  |
| 1094 | 1.11.2.3.9 | Weekly evaluate 9 | 1h | 2012-04-16 | 2012-04-16 | 2012-04-16 | 2012-04-16 | 14.88d | start no earlier than 2012-04-16 |  |  |
| 1095 | 1.11.2.3.10 | Weekly evaluate 10 | 1h | 2012-04-23 | 2012-04-23 | 2012-04-23 | 2012-04-23 | 7.88d | start no earlier than 2012-04-23 |  |  |
| 1096 | 1.11.2.3.11 | Weekly evaluate 11 | 1h | 2012-04-30 | 2012-04-30 | 2012-04-30 | 2012-04-30 | 0.88d | start no earlier than 2012-04-30 |  |  |
